# L3 Schedule - PoC 01 - Baseline nov-22

Schedule from Primavera P6, 2022-05-02 to 2025-10-03, data date 2022-11-03, costs in USD, A marks actual dates.
Em 08/06/22 foram realizados os ajustes abaixo listados: / - Diminuição do lag entre a atividade A1850 - HP Scrubber - Scope/Vendor e a / atividade A2020 - Phase 2 Inspection de 46 para 30 dias; / - Ajuste na descrição premissa da atividade adotada para início da atividade / A1850 - HP Scrubber - Scope/Vendor para 30% de avanço da atividade A2020 - Phase / 2 Inspection; / - Aumento da duração da Atividade A2060 - TA Scope Freeze de 60 para 70 / dias; / - Aumento da duração da atividade A2010 - HP Scrubber - Principal Decision de / 10 para 45 dias; / - Alteração do tipo de relacionamento entre as atividades de A2010 - HP / Scrubber - Principal Decision e A2060 - TA Scope Freeze de FS para / FF.

## Calendars

- Yara Calendar DG3-DG4: Mon-Fri 08:00-16:00; Sat-Sun off. Exceptions (off unless hours are given): 2022-12-26 to 2022-12-30, 2023-01-02 to 2023-01-06, 2023-02-20 to 2023-02-24.
- 7 Dias Corridos: Mon-Sun 08:00-16:00.

## Resources

| Resource | Group | Rate |
| --- | --- | --- |
| Recurso Ponderador | equipment | 1 |
| Recurso Homem Hora | labor |  |

## Schedule

| ID | Activity | Type | Duration | Start | Finish | Predecessors | Complete | Remaining | Planned start | Planned finish | Total float | Free float | Constraint | Expected finish | Resources | Cost | Actual cost | Yara ANSA - Project Phase | Yara ANSA - Workstream | Yara ANSA - Disciplines | Yara ANSA - CWA | Yara ANSA - Workface | Yara ANSA - Subisciplines | Yara ANSA - Sequencial | Yara ANSA - Ajustes | Yara ANSA - Transformation | Yara ANSA - OKR 2T2022 | Yara ANSA - Contracts | Yara ANSA - Responsável |
| --- | --- | --- | --- | --- | --- | --- | --- | --- | --- | --- | --- | --- | --- | --- | --- | --- | --- | --- | --- | --- | --- | --- | --- | --- | --- | --- | --- | --- | --- |
| A5890 | ANSA.001 - F2 - NGC - Natural Gas Compressor |  | 195d | 2022-05-02 A | 2023-02-10 |  |  | 62d |  |  | 111d | 0d |  | 2023-02-10 | Recurso Ponderador [532906 h] | 532,906 | 19,129.96 | ENG | TR | G | ANSA.001 | 03 | G-F2 | 001 |  |  |  |  |  |
| A6430 | FEED | level of effort | 312d | 2022-05-02 A | 2023-04-04 | A5810 FF, A5820 FF, A5830 FF, A5840 FF, A5850 FF, A5870 FF, A5880 FF, A5890 FF, A5900 FF, A5910 FF, A5920 FF, A5930 FF, A5940 FF, A5950 FF, A5960 FF, A5810 SS, A5820 SS, A5830 SS, A5840 SS, A5850 SS, A5870 SS, A5880 SS, A5890 SS, A5900 SS, A5910 SS, A5920 SS, A5930 SS, A5940 SS, A5950 SS, A5960 SS |  | 94d | 2023-02-16 | 2024-05-03 | 332d | 0d |  |  |  |  |  | GEN | TR | G | ANSA.000 | 00 | G-ML | 001 |  |  |  |  |  |
| A1620 | NGC Tec Spec - Promom |  | 2d | 2022-05-09 A | 2022-05-10 A |  | 100% |  | 2022-05-02 | 2022-05-03 |  |  |  |  |  |  |  | DG3 | TR | G | ANSA.000 | 00 | G-F2 | 001 | OK | NGC | OKR |  |  |
| A1810 | LNW Tec Spec - Promom |  | 2d | 2022-05-09 A | 2022-05-10 A |  | 100% |  | 2022-05-03 | 2022-05-04 |  |  |  |  |  |  |  | DG3 | TR | G | ANSA.000 | 00 | G-F2 | 001 | OK | LNW | OKR |  |  |
| A1990 | Tank reparation strategy (draft) |  | 2d | 2022-05-09 A | 2022-05-10 A |  | 100% |  | 2022-05-02 | 2022-05-03 |  |  |  |  |  |  |  | DG3 | TA | G | ANSA.000 | 00 | G-F2 | 001 |  |  | OKR |  |  |
| A2390 | Plant systemization |  | 2d | 2022-05-09 A | 2022-05-10 A |  | 100% |  | 2022-05-02 | 2022-05-03 |  |  |  |  |  |  |  | DG3 | CO | G | ANSA.000 | 00 | G-F2 | 001 |  |  |  |  |  |
| A2400 | Software spec |  | 2d | 2022-05-09 A | 2022-05-10 A |  | 100% |  | 2022-05-02 | 2022-05-03 |  |  |  |  |  |  |  | DG3 | CO | G | ANSA.000 | 00 | G-F2 | 001 |  |  |  |  |  |
| A5940 | ANSA.007 - F2 - LNW - Liquid Nitrogen Wash |  | 195d | 2022-05-09 A | 2023-04-04 |  |  | 94d | 2022-05-09 | 2023-02-17 | 190d | 0d |  | 2023-04-04 | Recurso Ponderador [532906 h] | 532,906 |  | ENG | TR | G | ANSA.007 | 03 | G-F2 | 001 |  |  |  |  |  |
| A1010 | Promon Laser Scan Spec |  | 10d | 2022-05-11 A | 2022-05-23 A |  | 100% |  | 2022-05-02 | 2022-05-13 |  |  |  |  |  |  |  | DG3 | TR | G | ANSA.000 | 00 | G-F2 | 001 |  | LaserScan | OKR |  |  |
| A1220 | Yara Survey (Tavares) |  | 18d | 2022-05-11 A | 2022-06-15 A |  | 100% |  | 2022-05-02 | 2022-05-25 |  |  |  |  |  |  |  | DG3 | TR | G | ANSA.000 | 00 | G-F2 | 001 | OK | Engenharia |  |  |  |
| A1730 | Lurgi Tec Spec |  | 5d | 2022-05-11 A | 2022-05-18 A |  | 100% |  | 2022-05-02 | 2022-05-06 |  |  |  |  |  |  |  | DG3 | TR | G | ANSA.000 | 00 | G-F2 | 001 | OK | Lurgi | OKR |  |  |
| A1980 | Trade-off Report by Nalco |  | 15d | 2022-05-11 A | 2022-05-26 A |  | 100% |  | 2022-05-02 | 2022-05-20 |  |  |  |  |  |  |  | DG3 | TR | G | ANSA.000 | 00 | G-F2 | 001 |  | DemiWater | OKR |  |  |
| A2410 | Check Records Templates |  | 15d | 2022-05-11 A | 2022-05-31 A |  | 100% |  | 2022-05-02 | 2022-05-20 |  |  |  |  |  |  |  | DG3 | CO | G | ANSA.000 | 00 | G-F2 | 001 |  |  |  |  |  |
| A2420 | Hiring Personel |  | 70d | 2022-05-11 A | 2022-09-07 A |  | 100% |  | 2022-05-02 | 2022-08-05 |  |  |  |  |  |  |  | DG3 | CO | G | ANSA.000 | 00 | G-F2 | 001 |  |  |  |  |  |
| A1000 | PO Laser Scan |  | 25d | 2022-05-11 A | 2022-07-29 A | A1010 | 100% |  | 2022-05-11 | 2022-06-14 |  |  |  |  |  |  |  | DG3 | TR | G | ANSA.000 | 00 | G-F2 | 001 |  | LaserScan | OKR | Procurement Plan |  |
| A1140 | Project Agreement |  | 15d | 2022-05-11 A | 2022-06-02 A |  | 100% |  | 2022-05-11 | 2022-05-31 |  |  |  |  |  |  |  | DG3 | GE | G | ANSA.000 | 00 | G-F2 | 001 |  |  |  |  |  |
| A1300 | PO Engineering (Promon) |  | 15d | 2022-05-11 A | 2022-07-01 A |  | 100% |  | 2022-05-11 | 2022-05-31 |  |  |  |  |  |  |  | DG3 | TR | G | ANSA.000 | 00 | G-F2 | 001 |  | Engenharia | OKR | Procurement Plan |  |
| A1600 | Operation Description - preliminary |  | 35d | 2022-05-11 A | 2022-08-31 A |  | 100% |  | 2022-05-11 | 2022-06-28 |  |  |  |  |  |  |  | DG3 | TR | G | ANSA.000 | 00 | G-F2 | 001 |  | Engenharia |  |  | Andreia |
| A1630 | NGC Budgetary Quote |  | 15d | 2022-05-11 A | 2022-06-03 A | A1620 | 100% |  | 2022-05-11 | 2022-05-31 |  |  |  |  |  |  |  | DG3 | TR | G | ANSA.000 | 00 | G-F2 | 001 | OK | NGC | OKR | Procurement Plan |  |
| A1740 | Lurgi Final Proposal |  | 10d | 2022-05-11 A | 2022-05-25 A | A1730 | 100% |  | 2022-05-11 | 2022-05-24 |  |  |  |  |  |  |  | DG3 | TR | G | ANSA.000 | 00 | G-F2 | 001 | OK | Lurgi | OKR | Procurement Plan |  |
| A1820 | LNW Firm Proposal |  | 15d | 2022-05-11 A | 2022-06-24 A | A1810 | 100% |  | 2022-05-11 | 2022-05-31 |  |  |  |  |  |  |  | DG3 | TR | G | ANSA.000 | 00 | G-F2 | 001 | OK | LNW | OKR | Procurement Plan |  |
| A2090 | PO Phase 2 Inspection |  | 20d | 2022-05-11 A | 2022-07-01 A | A2360 FF | 100% |  | 2022-05-11 | 2022-06-07 |  |  |  |  |  |  |  | DG3 | TA | G | ANSA.000 | 00 | G-F2 | 001 |  |  | OKR | Procurement Plan |  |
| A2180 | PO TimeNow |  | 15d | 2022-05-11 A | 2022-07-29 A |  | 100% |  | 2022-05-11 | 2022-05-31 |  |  |  |  |  |  |  | DG3 | TA | G | ANSA.000 | 00 | G-F2 | 001 |  |  | OKR | Procurement Plan |  |
| A2200 | Boiler reparation strategy (draft) |  | 90d | 2022-05-11 A | 2022-11-30 |  |  | 20d | 2022-05-11 | 2022-09-13 | 726d | 0d |  | 2022-11-30 |  |  |  | DG3 | TR | G | ANSA.000 | 00 | G-F2 | 001 |  | Mitsubishi |  |  |  |
| A2310 | HR plan (train/hire) 1st issue |  | 20d | 2022-05-11 A | 2022-08-24 A |  | 100% |  | 2022-05-11 | 2022-06-07 |  |  |  |  |  |  |  | DG3 | PC | G | ANSA.000 | 00 | G-F2 | 001 |  |  |  |  |  |
| A5820 | ANSA.012 - F2 - Demin Water |  | 29d | 2022-05-18 A | 2022-12-06 |  |  | 24d | 2022-10-27 | 2022-12-06 | 172d | 0d |  | 2022-12-06 | Recurso Ponderador [396263 h] | 396,263 |  | ENG | TR | G | ANSA.012 | 03 | G-F2 | 001 |  | DemiWater |  |  |  |
| A2380 | Demin Water Plant Spec for RFI |  | 10d | 2022-05-18 A | 2022-06-03 A | A1980 FF | 100% |  | 2022-05-18 | 2022-05-31 |  |  |  |  |  |  |  | DG3 | TR | G | ANSA.000 | 00 | G-F2 | 001 |  | DemiWater |  |  |  |
| A5960 | ANSA.000 - F2 - General Items |  | 212d | 2022-05-23 A | 2023-04-04 |  |  | 94d | 2022-10-27 | 2023-09-08 | 103d | 0d |  | 2023-04-04 | Recurso Ponderador [620357 h] | 620,357 |  | ENG | TR | G | ANSA.000 | 00 | G-F2 | 001 |  |  |  |  |  |
| A2110 | PO Stamicarbon |  | 15d | 2022-05-24 A | 2022-06-10 A | A2360 FF+5d | 100% |  | 2022-05-24 | 2022-06-13 |  |  |  |  |  |  |  | DG3 | TA | G | ANSA.000 | 00 | G-F2 | 001 |  |  | OKR | Procurement Plan |  |
| A1750 | LOI - Lurgi for Basic Enginerring |  | 5d | 2022-05-25 A | 2022-06-03 A | A1740 | 100% |  | 2022-05-25 | 2022-05-31 |  |  |  |  |  |  |  | DG3 | TR | G | ANSA.000 | 00 | G-F2 | 001 | OK | Lurgi | OKR | Procurement Plan |  |
| A2000 | Instalation and Reparation Method NH3 Tank |  | 5d | 2022-05-30 A | 2022-09-26 A | A1990, A2180 | 100% |  | 2022-06-01 | 2022-06-07 |  |  |  |  |  |  |  | DG3 | TA | G | ANSA.000 | 00 | G-F2 | 001 |  |  | OKR |  |  |
| A1030 | C&A matrix |  | 10d | 2022-06-01 A | 2022-09-15 A | A1140 | 100% |  | 2022-06-01 | 2022-06-14 |  |  |  |  |  |  |  | DG3 | PC | G | ANSA.000 | 00 | G-F2 | 001 |  |  |  |  |  |
| A1070 | Org Chart |  | 10d | 2022-06-01 A | 2022-06-14 A | A1140 | 100% |  |  |  |  |  |  |  |  |  |  | DG3 | PC | G | ANSA.000 | 00 | G-F2 | 001 |  |  |  |  |  |
| A1150 | WBS |  | 10d | 2022-06-01 A | 2022-06-21 A | A1140 | 100% |  | 2022-06-01 | 2022-06-14 |  |  |  |  |  |  |  | DG3 | PC | G | ANSA.000 | 00 | G-F2 | 001 |  |  |  |  |  |
| A1370 | MTO Map |  | 15d | 2022-06-01 A | 2022-06-21 A | A1300 | 100% |  |  |  |  |  |  |  |  |  |  | DG3 | TR | G | ANSA.000 | 00 | G-F2 | 001 |  | Engenharia | OKR |  |  |
| A1490 | Design Criteria |  | 15d | 2022-06-01 A | 2022-06-30 A | A1300 | 100% |  | 2022-06-01 | 2022-06-21 |  |  |  |  |  |  |  | DG3 | TR | G | ANSA.000 | 00 | G-F2 | 001 |  | Engenharia | OKR |  |  |
| A1530 | Block Diagram |  | 10d | 2022-06-01 A | 2022-06-22 A | A1300 | 100% |  | 2022-06-01 | 2022-06-14 |  |  |  |  |  |  |  | DG3 | TR | G | ANSA.000 | 00 | G-F2 | 001 |  | Engenharia | OKR |  |  |
| A2070 | Lurgi Preliminary PFDs, Tie-ins and Equipment List |  | 50d | 2022-06-01 A | 2022-09-13 A | A1750 | 100% |  | 2022-06-01 | 2022-08-09 |  |  |  |  |  |  |  | DG3 | TR | G | ANSA.000 | 00 | G-F2 | 001 | OK | Lurgi |  |  |  |
| A2100 | Lessons Learned Turnaround |  | 5d | 2022-06-01 A | 2022-06-07 A | A2180 | 100% |  |  |  |  |  |  |  |  |  |  | DG3 | TA | G | ANSA.000 | 00 | G-F2 | 001 |  |  |  |  |  |
| A2340 | Commissioning Software services (HMSWeb/Forship) |  | 20d | 2022-06-01 A | 2022-11-03 | A2390, A2400, A2410 |  | 1d | 2022-06-01 | 2022-06-28 | 584d | 0d |  | 2022-11-03 |  |  |  | DG3 | CO | G | ANSA.000 | 00 | G-F2 | 001 |  |  |  | Procurement Plan |  |
| A1950 | New Suppliers Evaluation - Demi Water Solution |  | 20d | 2022-06-06 A | 2022-07-13 A | A2380 | 100% |  | 2022-06-01 | 2022-06-28 |  |  |  |  |  |  |  | DG3 | TR | G | ANSA.000 | 00 | G-F2 | 001 |  | DemiWater | OKR | Procurement Plan | Promon |
| A1230 | I/O list for migration signals (qty) |  | 5d | 2022-06-06 A | 2022-06-30 A | A1220 | 100% |  | 2022-06-06 | 2022-06-10 |  |  |  |  |  |  |  | DG3 | TR | G | ANSA.000 | 00 | G-F2 | 001 | OK | Engenharia | OKR |  |  |
| A2030 | Inspection Phase 2 Authorization | milestone | 0d | 2022-06-07 A | 2022-06-07 A | A2360 | 100% |  |  |  |  |  |  |  |  |  |  | OUT | TA | G | ANSA.000 | 00 | G-F2 | 001 |  |  | OKR |  |  |
| A2330 | MPP to align with the Hiring Plan |  | 20d | 2022-06-08 A | 2022-08-24 A | A2310 | 100% |  | 2022-06-08 | 2022-07-05 |  |  |  |  |  |  |  | DG3 | GE | G | ANSA.000 | 00 | G-F2 | 001 |  |  |  |  |  |
| A1640 | NGC Final Proposal |  | 40d | 2022-06-15 A | 2022-10-14 A | A1630 | 100% |  | 2022-06-01 | 2022-07-26 |  |  |  |  |  |  |  | DG3 | TR | G | ANSA.000 | 00 | G-F2 | 001 | OK | NGC |  | Procurement Plan |  |
| A1760 | P&IDs Lurgi |  | 80d | 2022-06-15 A | 2022-09-26 A | A1750 | 100% |  | 2022-06-01 | 2022-09-20 |  |  |  |  |  |  |  | DG3 | TR | G | ANSA.000 | 00 | G-F2 | 001 | OK | Lurgi |  |  |  |
| A1770 | PDP Lurgi (draft) |  | 110d | 2022-06-15 A | 2022-11-15 | A1750 |  | 9d | 2022-06-01 | 2022-11-01 | 669d | 0d |  | 2022-11-15 |  |  |  | DG4 | TR | G | ANSA.000 | 00 | G-F3 | 001 | OK | Lurgi |  |  |  |
| A1540 | New P&IDs - NGC |  | 20d | 2022-06-15 A | 2022-07-12 A | A1530 | 100% |  |  |  |  |  |  |  |  |  |  | DG3 | TR | G | ANSA.000 | 00 | G-F2 | 001 |  | Engenharia |  |  |  |
| A1860 | Preliminary data sheet for Like for Like to be replaced |  | 25d | 2022-06-15 A | 2022-08-31 A | A1610 FF+5d | 100% |  | 2022-06-15 | 2022-07-19 |  |  |  |  |  |  |  | DG3 | TR | G | ANSA.000 | 00 | G-F2 | 001 |  | Engenharia |  |  |  |
| A1500 | PO Mitsubishi Boiler Study |  | 5d | 2022-06-16 A | 2022-09-02 A | A2090 | 100% |  | 2022-06-16 | 2022-06-22 |  |  |  |  |  |  |  | DG3 | TR | G | ANSA.000 | 00 | G-F2 | 001 |  | Mitsubishi |  | Procurement Plan |  |
| A1180 | Plot plan new installations |  | 15d | 2022-06-22 A | 2022-07-13 A | A1490 | 100% |  | 2022-06-22 | 2022-07-12 |  |  |  |  |  |  |  | DG3 | TR | G | ANSA.000 | 00 | G-F2 | 001 |  | Engenharia |  |  |  |
| A1610 | Equipment List with Technical Information, preliminary, final for LL. |  | 15d | 2022-06-22 A | 2022-07-12 A | A1490 | 100% |  |  |  |  |  |  |  |  |  |  | DG3 | TR | G | ANSA.000 | 00 | G-F2 | 001 |  | Engenharia |  |  |  |
| A2430 | LNW Proposal Analysis |  | 25d | 2022-06-28 A | 2022-09-06 A | A1820 | 100% |  | 2022-07-28 | 2022-08-31 |  |  |  |  |  |  |  | DG3 | TR | G | ANSA.000 | 00 | G-F2 | 001 | OK | LNW |  | Procurement Plan |  |
| A1870 | Top 5 Like for Like Priority Equip - Quotes |  | 20d | 2022-06-29 A | 2022-11-03 | A1860 SS+10d |  | 1d | 2022-06-29 | 2022-07-26 | 627d | 0d |  | 2022-11-03 |  |  |  | DG3 | TR | G | ANSA.000 | 00 | G-F2 | 001 |  | Engenharia |  |  |  |
| A1290 | Opex |  | 10d | 2022-07-06 A | 2022-07-19 A | A2330 | 100% |  |  |  |  |  |  |  |  |  |  | DG3 | PC | G | ANSA.000 | 00 | G-F2 | 001 |  |  |  |  |  |
| A2490 | Unit rates of the new hiring people | milestone | 0d | 2022-07-07 A | 2022-07-07 A |  | 100% |  | 2022-07-29 | 2022-07-29 |  |  | finish on or after 2022-07-29 |  |  |  |  | DG3 | PC | G | ANSA.000 | 00 | G-F2 | 001 |  |  |  |  |  |
| A2290 | Logistic Plan (inbound / outbound) |  | 65d | 2022-07-11 A | 2022-11-30 |  |  | 20d | 2022-07-11 | 2022-10-07 | 693d | 0d | start on or after 2022-07-11 | 2022-11-30 |  |  |  | DG4 | CO | G | ANSA.000 | 00 | G-F3 | 001 |  |  |  |  |  |
| A1130 | PEP (including TA premises, contracting plan, YPS, training, hiring plan,etc.) |  | 15d | 2022-07-13 A | 2022-10-26 A | A2260 SS, A1450 SS | 100% |  | 2022-07-13 | 2022-08-02 |  |  |  |  |  |  |  | DG3 | PC | G | ANSA.000 | 00 | G-F2 | 001 |  |  |  |  |  |
| A1190 | Layouts and Arrangements |  | 20d | 2022-07-13 A | 2022-08-04 A | A1180 | 100% |  | 2022-07-13 | 2022-08-09 |  |  |  |  |  |  |  | DG3 | TR | G | ANSA.000 | 00 | G-F2 | 001 |  | Engenharia |  |  |  |
| A1240 | SOW - Scope of Work |  | 20d | 2022-07-13 A | 2022-11-03 A | A1540, A1490, A1150 | 100% |  | 2022-07-13 | 2022-08-09 |  |  |  |  |  |  |  | DG3 | PC | G | ANSA.000 | 00 | G-F2 | 001 |  |  |  |  |  |
| A1430 | Piping Basic Engineering |  | 40d | 2022-07-13 A | 2022-08-09 A | A1540 | 100% |  | 2022-07-13 | 2022-09-06 |  |  |  |  |  |  |  | DG4 | TR | G | ANSA.000 | 00 | G-F3 | 001 |  | Engenharia |  |  |  |
| A1450 | Construct. Method. (Draft) / POC |  | 5d | 2022-07-13 A | 2022-07-20 A | A1180 | 100% |  | 2022-07-13 | 2022-07-19 |  |  |  |  |  |  |  | DG3 | PC | G | ANSA.000 | 00 | G-F2 | 001 |  |  |  |  |  |
| A1550 | P&IDs marked up (transformation + like for like replacement) |  | 15d | 2022-07-13 A | 2022-08-19 A | A1540 | 100% |  | 2022-07-13 | 2022-08-02 |  |  |  |  |  |  |  | DG4 | TR | G | ANSA.000 | 00 | G-F3 | 001 |  | Engenharia |  |  |  |
| A1250 | Contracting Strategy and Procurement (draft) |  | 20d | 2022-07-14 A | 2022-10-10 A | A1300 | 100% |  | 2022-06-01 | 2022-06-28 |  |  |  |  |  |  |  | DG3 | TR | G | ANSA.000 | 00 | G-F2 | 001 |  | Engenharia |  |  |  |
| A1560 | Consumer List updated / SLD |  | 15d | 2022-07-14 A | 2022-10-11 A | A1530 | 100% |  | 2022-06-15 | 2022-07-05 |  |  |  |  |  |  |  | DG3 | TR | G | ANSA.000 | 00 | G-F2 | 001 |  | Engenharia |  |  |  |
| A1970 | Demi Water Definition |  | 20d | 2022-07-14 A | 2022-08-19 A | A1980, A1950 | 100% |  | 2022-06-29 | 2022-07-26 |  |  |  |  |  |  |  | DG3 | TR | G | ANSA.000 | 00 | G-F2 | 001 |  | DemiWater |  | Procurement Plan |  |
| A2260 | TA Method. (Draft) / POC |  | 5d | 2022-07-14 A | 2022-07-20 A | A2000 | 100% |  | 2022-06-08 | 2022-06-14 |  |  |  |  |  |  |  | DG3 | PC | G | ANSA.000 | 00 | G-F2 | 001 |  |  |  |  |  |
| A1260 | MD Automation (Criteria / Specs) |  | 15d | 2022-07-14 A | 2022-07-29 A | A1230, A1300 | 100% |  | 2022-07-14 | 2022-08-03 |  |  |  |  |  |  |  | DG3 | TR | G | ANSA.000 | 00 | G-F2 | 001 | OK | Automatation |  | Procurement Plan |  |
| A2470 | PO Lurgi | milestone | 0d | 2022-07-15 A | 2022-07-15 A | A1740 | 100% |  | 2022-06-15 | 2022-06-15 |  |  | finish on or after 2022-06-15 |  |  |  |  | DG3 | TR | G | ANSA.000 | 00 | G-F2 | 001 | OK | Lurgi | OKR | Procurement Plan |  |
| A2360 | DG4 Acquisition | milestone | 0d | 2022-07-15 A | 2022-07-15 A |  | 100% |  |  |  |  |  | finish on or after 2022-06-07 |  |  |  |  | DG3 | GE | G | ANSA.000 | 00 | G-F2 | 001 |  |  | OKR |  |  |

Notes:
- A2030: Notes: Cancelada devido a impossibilidade de acesso ao site
- A1290: Notes: Cancelada
- A2290: Assumptions: Necessário apoio do time Yara de Logísitica, PCP e Faturamento, tanto para / questão de movimentação de caminhões quanto para questão de insfraestrutura / (dedicação parcial).
- A1130: Notes: Atividade cancelada. / Mantido apenas para DG4. Previsão de emissão para 05/12/22

| ID | Activity | Type | Duration | Start | Finish | Predecessors | Complete | Remaining | Planned start | Planned finish | Total float | Free float | Constraint | Expected finish | Resources | Cost | Actual cost | Yara ANSA - Project Phase | Yara ANSA - Workstream | Yara ANSA - Disciplines | Yara ANSA - CWA | Yara ANSA - Workface | Yara ANSA - Subisciplines | Yara ANSA - Sequencial | Yara ANSA - Transformation | Yara ANSA - Ajustes | Yara ANSA - Contracts | Yara ANSA - OKR 2T2022 |
| --- | --- | --- | --- | --- | --- | --- | --- | --- | --- | --- | --- | --- | --- | --- | --- | --- | --- | --- | --- | --- | --- | --- | --- | --- | --- | --- | --- | --- |
| A5950 | ANSA.005 - F2 - U13, U14, U15 and U20 |  | 145d | 2022-07-18 A | 2023-02-17 |  |  | 67d | 2022-10-27 | 2023-06-07 | 170d | 0d |  | 2023-02-17 | Recurso Ponderador [396263 h] | 396,263 |  | ENG | TR | G | ANSA.005 | 04 | G-F2 | 001 |  |  |  |  |
| A1380 | Preliminary MTO (without Lurgi) |  | 15d | 2022-07-20 A | 2022-09-13 A | A1370, A2430, A1870 FF+5d, A2070 FF, A1540 | 100% |  | 2022-07-20 | 2022-08-09 |  |  |  |  |  |  |  | DG3 | TR | G | ANSA.000 | 00 | G-F2 | 001 | Engenharia |  |  |  |
| A1050 | Infra TI |  | 60d | 2022-08-04 A | 2022-10-27 A | A2360 | 100% |  | 2022-06-07 | 2022-08-29 |  |  |  |  |  |  |  | DG4 | PC | G | ANSA.000 | 00 | G-F3 | 001 |  |  |  |  |
| A1200 | Adm Building Layout (desing + estimate) |  | 60d | 2022-08-04 A | 2022-11-07 | A2360 |  | 3d | 2022-06-07 | 2022-08-29 | 655d | 0d |  | 2022-11-07 |  |  |  | DG4 | PC | G | ANSA.000 | 00 | G-F3 | 001 |  |  |  |  |
| A2460 | Automation Firm Proposal |  | 30d | 2022-08-04 A | 2022-10-03 A | A1260 | 100% |  | 2022-07-04 | 2022-08-12 |  |  |  |  |  |  |  | DG3 | TR | G | ANSA.000 | 00 | G-F2 | 001 | Automatation | OK | Procurement Plan |  |
| A1310 | CSA Basic Engineering |  | 40d | 2022-08-04 A | 2022-09-01 A | A1190 | 100% |  | 2022-08-04 | 2022-09-28 |  |  |  |  |  |  |  | DG4 | TR | G | ANSA.000 | 00 | G-F3 | 001 | Engenharia |  |  |  |
| A2220 | TA Audit Plan |  | 10d | 2022-08-04 A | 2022-10-25 A | A2180 | 100% |  | 2022-08-04 | 2022-08-17 |  |  |  |  |  |  |  | DG3 | TA | G | ANSA.000 | 00 | G-F2 | 001 |  |  |  |  |
| A1910 | Plot plan new installations |  | 40d | 2022-08-22 A | 2022-12-22 | A1550 FF+10d, A1760 FF+10d, A1930 FF+10d, A1540 FF+10d |  | 36d | 2022-09-07 | 2022-11-01 | 640d | 0d |  | 2022-12-22 |  |  |  | DG4 | TR | G | ANSA.000 | 00 | G-F3 | 001 | Engenharia |  |  |  |
| A5930 | ANSA.003 - F2 - Gasification |  | 115d | 2022-08-22 A | 2023-02-17 |  |  | 67d | 2022-10-27 | 2023-04-26 | 206d | 0d |  | 2023-02-17 | Recurso Ponderador [314278 h] | 314,278 | 76,519.86 | ENG | TR | G | ANSA.003 | 03 | G-F2 | 001 |  |  |  |  |
| A5850 | ANSA.016 - F2 - U10-B, U33-B, U18-B e U19-B |  | 93d | 2022-08-29 A | 2023-01-18 |  |  | 45d | 2022-08-22 | 2023-01-11 | 158d | 0d |  | 2023-01-18 | Recurso Ponderador [254155 h] | 254,155 |  | ENG | TR | G | ANSA.016 | 04 | G-F2 | 001 |  |  |  |  |
| A5900 | ANSA.013 - F2 - Boiler |  | 110d | 2022-08-29 A | 2023-02-10 |  |  | 62d | 2022-10-27 | 2023-04-19 | 70d | 0d |  | 2023-02-10 | Recurso Ponderador [300613 h] | 300,613 |  | ENG | TR | G | ANSA.013 | 03 | G-F2 | 001 |  |  |  |  |
| A6410 | ANSA.004 - F2 - U12-Carbon Recovery |  | 120d | 2022-08-29 A | 2023-03-03 |  |  | 72d | 2022-10-27 | 2023-05-03 | 131d | 0d |  | 2023-03-03 | Recurso Ponderador [178877 h] | 178,877 |  | ENG | TR | G | ANSA.004 | 02 | G-F2 | 001 |  |  |  |  |
| A1850 | HP Scrubber - Scope / Vendor |  | 20d | 2022-09-05 A | 2022-11-03 A | A2020 SS+30d | 100% |  | 2022-09-05 | 2022-09-30 |  |  |  |  |  |  |  | DG4 | TA | G | ANSA.000 | 00 | G-F3 | 001 |  |  |  |  |
| A2240 | Mitsubishi Boiler Study |  | 120d | 2022-09-05 A | 2023-03-10 | A1500 |  | 77d |  |  | 55d | 0d | finish on or after 2023-03-10 | 2023-03-10 |  |  |  | DG4 | TR | G | ANSA.000 | 00 | G-F3 | 001 | Mitsubishi |  |  |  |
| A2250 | Preservation Plan Review |  | 30d | 2022-09-08 A | 2022-11-30 | A1960 FF+10d |  | 20d | 2022-09-07 | 2022-10-18 | 653d | 0d |  | 2022-11-30 |  |  |  | DG4 | CO | G | ANSA.000 | 00 | G-F3 | 001 |  |  |  |  |
| A1360 | Schedule (L3) SOW by work package and disciplines / to the Basis of Estimate |  | 10d | 2022-09-12 A | 2022-09-30 A | A1150, A1450, A2260 | 100% |  | 2022-09-12 | 2022-09-23 |  |  |  |  |  |  |  | DG3 | PC | G | ANSA.000 | 00 | G-F2 | 001 |  |  |  |  |
| A2170 | TA Scope Gathering Start |  | 35d | 2022-09-19 A | 2022-10-07 A | A2180 | 100% |  | 2022-10-27 | 2022-12-14 |  |  | start on or after 2022-08-22 |  |  |  |  | CON | TA | G | ANSA.000 | 00 | G-ML | 001 |  |  |  | OKR |
| A5810 | ANSA.010 - F2 - Sulfur Recovery and Flare |  | 49d | 2022-09-21 A | 2022-11-28 |  |  | 18d | 2022-10-24 | 2023-01-12 | 360d | 0d |  | 2022-11-28 | Recurso Ponderador [133910 h] | 133,910 |  | ENG | TR | G | ANSA.010 | 02 | G-F2 | 001 |  |  |  |  |
| A5910 | ANSA.015 - F2 - Compressor House |  | 93d | 2022-09-21 A | 2023-02-10 |  |  | 62d | 2022-10-27 | 2023-03-27 | 185d | 0d |  | 2023-02-10 | Recurso Ponderador [254155 h] | 254,155 |  | ENG | TR | G | ANSA.015 | 04 | G-F2 | 001 |  |  |  |  |
| A1100 | 3D model develop |  | 33d | 2022-09-30 A | 2023-02-13 | A1090 SS+20d, A1910 FF+10d |  | 0d | 2022-09-30 | 2022-11-15 | 624d | 0d |  | 2023-02-10 |  |  |  | DG4 | TR | G | ANSA.000 | 00 | G-F3 | 001 | LaserScan |  |  |  |
| A1160 | PO Automation |  | 10d | 2022-10-03 A | 2022-12-01 | A2460 |  | 21d | 2022-10-03 | 2022-10-14 | 692d | 0d | finish on or after 2022-12-01 | 2022-12-01 |  |  |  | DG3 | TR | G | ANSA.000 | 00 | G-F2 | 001 | Automatation | OK | Procurement Plan |  |
| A2130 | TA Updated Estimate |  | 20d | 2022-10-03 A | 2022-10-28 A |  | 100% |  |  |  |  |  | start on or after 2022-10-03 |  |  |  |  | DG3 | TA | G | ANSA.000 | 00 | G-F2 | 001 |  |  |  |  |
| A5880 | ANSA.024 - F2 - Substations |  | 80d | 2022-10-10 A | 2023-02-10 |  |  | 62d | 2022-10-27 | 2023-03-08 | 125d | 0d |  | 2023-02-10 | Recurso Ponderador [218628 h] | 218,628 |  | ENG | TR | G | ANSA.024 | 04 | G-F2 | 001 |  |  |  |  |
| A1270 | Outsourced Services - Estimation |  | 20d | 2022-10-10 A | 2022-10-27 A | A2290 | 100% |  | 2022-10-10 | 2022-11-04 |  |  |  |  |  |  |  | DG4 | PC | G | ANSA.000 | 00 | G-F3 | 001 |  |  |  |  |
| A5920 | ANSA.014 - F2 - Cooling Tower |  | 58d | 2022-10-14 A | 2023-02-14 |  |  | 64d | 2022-12-12 | 2023-03-22 | 218d | 0d |  | 2023-02-14 | Recurso Ponderador [213162 h] | 213,162 |  | ENG | TR | G | ANSA.014 | 04 | G-F2 | 001 |  |  |  |  |
| A5830 | ANSA.002 - F2 - LOE Basic Engineering |  | 75d | 2022-10-17 A | 2022-12-13 |  |  | 29d | 2022-11-17 | 2023-03-22 | 369d | 0d |  | 2022-12-13 | Recurso Ponderador [114780 h] | 114,780 |  | ENG | TR | G | ANSA.002 | 02 | G-F2 | 001 |  |  |  |  |
| A2210 | NGC Technical Analysis |  | 20d | 2022-10-17 A | 2022-11-14 | A1640 |  | 8d | 2022-10-17 | 2022-11-11 | 45d | 0d |  | 2022-11-14 |  |  |  | DG3 | TR | G | ANSA.000 | 00 | G-F2 | 001 | NGC | OK | Procurement Plan |  |
| A5840 | ANSA.009 - F2 - Pipe Rack |  | 60d | 2022-10-24 A | 2023-01-11 |  |  | 40d | 2022-12-15 | 2023-03-29 | 386d | 0d |  | 2023-01-11 | Recurso Ponderador [131177 h] | 131,177 |  | ENG | TR | G | ANSA.009 | 04 | G-F2 | 001 |  |  |  |  |
| A5870 | ANSA.022 - F2 - ETDI |  | 68d | 2022-10-24 A | 2023-01-25 |  |  | 50d | 2022-12-02 | 2023-03-28 | 127d | 0d |  | 2023-01-25 | Recurso Ponderador [158505 h] | 158,505 |  | ENG | TR | G | ANSA.022 | 04 | G-F2 | 001 |  |  |  |  |
| A1790 | Equipment List with Technical Information, preliminary, final for LL. |  | 20d | 2022-10-24 A | 2022-11-03 A | A1660, A1880, A1940 | 100% |  | 2022-10-24 | 2022-11-18 |  |  |  |  |  |  |  | DG4 | TR | G | ANSA.000 | 00 | G-F3 | 001 | Engenharia |  |  |  |
| A2040 | Phase 2 Findings Preliminary | milestone | 0d | 2022-10-26 A | 2022-10-26 A | A2020 SS+30d | 100% |  | 2022-08-16 | 2022-08-16 |  |  |  |  |  |  |  | OUT | TA | G | ANSA.000 | 00 | G-F2 | 001 |  |  |  |  |
| A2120 | TA Scope Revision (meeting nº1) |  | 3d | 2022-10-26 A | 2022-10-28 A | A2020 SS+15d, A2100, A2170, A2220, A5450 FS+1d | 100% |  | 2023-02-06 | 2023-02-08 |  |  |  |  |  |  |  | CON | TA | G | ANSA.000 | 00 | G-ML | 001 |  |  |  |  |
| A1660 | NG Vendor Enginerring | milestone | 0d | 2022-10-26 A | 2022-10-26 A | A1650 | 100% |  |  |  |  |  |  |  |  |  |  | DG4 | TR | G | ANSA.000 | 00 | G-F3 | 001 | NGC | OK |  |  |
| A1840 | Last Data Sheet for DG4 | milestone | 0d | 2022-10-26 A | 2022-10-26 A | A1800 FF, A1870 FF | 100% |  |  |  |  |  |  |  |  |  |  | DG4 | TR | G | ANSA.000 | 00 | G-F3 | 001 | Engenharia |  |  |  |
| A1880 | LNW Vendor Enginerring | milestone | 0d | 2022-10-26 A | 2022-10-26 A | A1830 | 100% |  |  |  |  |  |  |  |  |  |  | DG4 | TR | G | ANSA.000 | 00 | G-F3 | 001 | LNW | OK |  |  |
| A1930 | P&ID Field Survey | milestone | 0d | 2022-10-26 A | 2022-10-26 A | A1960 FF+10d | 100% |  |  |  |  |  |  |  |  |  |  | OUT | CO | G | ANSA.000 | 00 | G-F3 | 001 |  |  |  |  |
| A1960 | Field Survey | milestone | 0d | 2022-10-26 A | 2022-10-26 A | A2340 SS+10d, A2030 | 100% |  |  |  |  |  |  |  |  |  |  | OUT | CO | G | ANSA.000 | 00 | G-F3 | 001 |  |  |  |  |
| A2020 | Phase 2 Inspection | milestone | 0d | 2022-10-26 A | 2022-10-26 A | A2030 FS+20d, A2090, A2110 | 100% |  |  |  |  |  |  |  |  |  |  | OUT | TA | G | ANSA.000 | 00 | G-F2 | 001 |  |  |  |  |
| A2050 | Phase 2 - Final Report | milestone | 0d | 2022-10-26 A | 2022-10-26 A | A2040 | 100% |  |  |  |  |  |  |  |  |  |  | OUT | TA | G | ANSA.000 | 00 | G-F3 | 001 |  |  |  |  |
| A2150 | Final MTO for DG4 (1st issue) | milestone | 0d | 2022-10-26 A | 2022-10-26 A | A1110 | 100% |  |  |  |  |  |  |  |  |  |  | DG4 | TR | G | ANSA.000 | 00 | G-F3 | 001 | Engenharia |  |  |  |
| A2440 | Automation Vendor Engineering | milestone | 0d | 2022-10-26 A | 2022-10-26 A | A1160 | 100% |  |  |  |  |  |  |  |  |  |  | DG4 | TR | G | ANSA.000 | 00 | G-F3 | 001 | Automatation |  |  |  |
| A2160 | TA Execution Method. / POC |  | 20d | 2022-10-27 A | 2022-10-27 A | A2190, A2040 | 100% |  | 2023-06-08 | 2023-07-05 |  |  |  |  |  |  |  | DG4 | TA | G | ANSA.000 | 00 | G-F3 | 001 |  |  |  |  |
| A2450 | WBS |  | 5d | 2022-10-27 A | 2022-11-03 A | A1240 | 100% |  | 2022-12-01 | 2022-12-07 |  |  |  |  |  |  |  | DG4 | PC | G | ANSA.000 | 00 | G-F3 | 001 |  |  |  |  |
| A1440 | Tax Recovery Plan |  | 15d | 2022-11-03 A | 2022-11-28 | A1390 |  | 12d | 2022-11-25 | 2022-12-15 | 695d | 0d |  | 2022-11-28 |  |  |  | DG4 | PC | G | ANSA.000 | 00 | G-F3 | 001 |  |  |  |  |
| A1900 | SOW - Scope of Work |  | 15d | 2022-11-03 | 2022-11-23 | A1310, A1430, A1960, A2450 |  |  |  |  | 723d | 99d |  |  |  |  |  | DG4 | PC | G | ANSA.000 | 00 | G-F3 | 001 |  |  |  |  |
| A2010 | HP Scrubber - Principal Decision |  | 45d | 2022-11-03 | 2023-01-18 | A2040, A1850 |  |  |  |  | 609d | 156d |  |  |  |  |  | DG4 | TA | G | ANSA.000 | 00 | G-F3 | 001 |  |  |  |  |
| A2540 | PPI-006 - Water agreement |  | 100d | 2022-11-03 | 2023-04-12 | A1040 FF |  |  |  |  | 646d |  |  |  | Recurso Ponderador [52101 h] | 52,101 |  | PRO | PR | P | ANSA.000 | 00 | P-PI | 006 |  |  |  |  |
| A2550 | PPI-007 - Power agreement |  | 100d | 2022-11-03 | 2023-04-12 | A1040 FF |  |  |  |  | 646d |  |  |  | Recurso Ponderador [52101 h] | 52,101 |  | PRO | PR | P | ANSA.000 | 00 | P-PI | 007 |  |  |  |  |
| A5390 | Define and Issue TA Premise document | milestone | 0d | 2022-11-03 | 2022-11-03 | A2170 |  |  |  |  | 453d | 0d |  |  |  |  |  | CON | TA | G | ANSA.000 | 00 | G-ML | 001 |  |  |  |  |
| A1390 | CAPEX (+/- 30%) |  | 10d | 2022-11-07 A | 2022-11-07 A | A1740, A1870, A1450, A1560, A2260, A1380, A1360, A2130 FF+5d, A2470, A2490 | 100% |  | 2022-11-11 | 2022-11-24 |  |  |  |  |  |  |  | DG3 | PC | G | ANSA.000 | 00 | G-F2 | 001 |  |  |  |  |
| A1400 | Business Case |  | 5d | 2022-11-07 A | 2022-11-07 A | A1390, A1290, A2420 | 100% |  | 2022-11-25 | 2022-12-01 |  |  |  |  |  |  |  | DG3 | PC | G | ANSA.000 | 00 | G-F2 | 001 |  |  |  |  |
| A1410 | DG Memo |  | 5d | 2022-11-07 A | 2022-11-07 A | A1030, A1070, A1250, A1400, A1600, A1130 | 100% |  | 2022-12-02 | 2022-12-08 |  |  |  |  |  |  |  | DG3 | GE | G | ANSA.000 | 00 | G-F2 | 001 |  |  |  |  |
| A1420 | DG3 | milestone | 0d | 2022-11-07 A | 2022-11-07 A | A1410, A1190 | 100% |  | 2022-12-08 | 2022-12-08 |  |  |  |  |  |  |  | DG3 | GE | G | ANSA.000 | 00 | G-F2 | 001 |  |  |  |  |
| A6650 | Budgetary Forecast of the Service and Support Contracts Operational | milestone | 0d | 2022-11-07 | 2022-11-07 |  |  |  |  |  | 743d |  | finish on or after 2022-11-07 |  |  |  |  | DG4 | CO | G | ANSA.000 | 00 | G-F3 | 001 |  |  |  |  |
| A6660 | Budgetary forecast of inputs for commissioning | milestone | 0d | 2022-11-07 | 2022-11-07 |  |  |  |  |  | 743d |  | finish on or after 2022-11-07 |  |  |  |  | DG4 | CO | G | ANSA.000 | 00 | G-F3 | 001 |  |  |  |  |
| A6670 | Preparation of Descriptive Memorandum for contracting commissioning activities | milestone | 0d | 2022-11-07 | 2022-11-07 |  |  |  |  |  | 743d |  | finish on or after 2022-11-07 |  |  |  |  | DG4 | CO | G | ANSA.000 | 00 | G-F3 | 001 |  |  |  |  |
| A6680 | Hiring of Commissioning Support Services | milestone | 0d | 2022-11-07 | 2022-11-07 |  |  |  |  |  | 743d |  | finish on or after 2022-11-07 |  |  |  |  | DG4 | CO | G | ANSA.000 | 00 | G-F3 | 001 |  |  |  |  |
| A6690 | Open Purchase Orders for the inputs to be used in commissioning | milestone | 0d | 2022-11-07 | 2022-11-07 |  |  |  |  |  | 743d |  | finish on or after 2022-11-07 |  |  |  |  | DG4 | CO | G | ANSA.000 | 00 | G-F3 | 001 |  |  |  |  |
| A6880 | NGC Trade Off Study | milestone | 0d | 2022-11-07 | 2022-11-07 |  |  |  |  |  | 743d |  | finish on or after 2022-11-07 |  |  |  |  | DG4 | TR | G | ANSA.000 | 00 | G-F2 | 001 | Lurgi | OK |  |  |
| A1210 | Final Facility Plan |  | 60d | 2022-11-08 | 2023-02-13 | A1200 |  |  |  |  | 655d | 0d |  |  |  |  |  | DG4 | PC | G | ANSA.000 | 00 | G-F3 | 001 |  |  |  |  |
| A6780 | Automation - Test MD | milestone | 0d | 2022-11-08 | 2022-11-08 |  |  |  |  |  | 742d |  | finish on or after 2022-11-08 |  |  |  |  | DG4 | TR | G | ANSA.000 | 00 | G-F2 | 001 | Lurgi | OK |  |  |
| A1780 | PDP Lurgi (Final) |  | 20d | 2022-11-16 | 2022-12-13 | A1770 |  |  |  |  | 669d | 0d |  |  |  |  |  | DG4 | TR | G | ANSA.000 | 00 | G-F3 | 001 | Lurgi | OK |  |  |
| A6800 | Technical-Commercial Proposal for Contracting the Execution of Simulators | milestone | 0d | 2022-11-16 | 2022-11-16 |  |  |  |  |  | 736d |  | finish on or after 2022-11-16 |  |  |  |  | DG4 | CO | G | ANSA.000 | 00 | G-F3 | 001 |  |  |  |  |
| A1720 | I/O list for new signals |  | 15d | 2022-11-23 | 2022-12-13 | A1780 FF, A1550, A1930 |  |  |  |  | 669d | 45d |  |  |  |  |  | DG4 | TR | G | ANSA.000 | 00 | G-F3 | 001 | Engenharia |  |  |  |
| A5400 | Define TA and Project KPI | milestone | 0d | 2022-11-24 | 2022-11-24 | A5390 FS+15d |  |  |  |  | 453d | 0d |  |  |  |  |  | CON | TA | G | ANSA.000 | 00 | G-ML | 001 |  |  |  |  |
| A6450 | Maintenace Engineering - Phase 1 |  | 40d | 2022-11-24 | 2023-02-02 | A2980 SF, A2970 SF |  |  |  |  | 189d | 0d |  |  |  |  |  | GEN | TA | G | ANSA.000 | 00 | G-ML | 001 |  |  |  |  |
| A2480 | Sign | milestone | 0d | 2022-11-24 | 2022-11-24 | A2360 FS+10d |  |  |  |  | 210d | 0d | finish on or after 2022-11-24 |  |  |  |  | DG3 | GE | G | ANSA.000 | 00 | G-F2 | 001 |  |  |  |  |
| A7000 | Staff Hiring & Training |  | 520d | 2022-11-25 | 2024-12-12 | A2480 |  |  |  |  | 210d | 0d |  |  |  |  |  | GEN | CO | G | ANSA.000 | 00 | G-ML | 001 |  |  |  |  |
| A7010 | Staff Hiring & Training | milestone | 0d | 2022-11-25 | 2022-11-25 | A7000 SS |  |  |  |  | 730d |  |  |  |  |  |  | GEN | CO | G | ANSA.000 | 00 | G-ML | 001 |  |  |  |  |
| A6940 | Process - P&IDs Gas System - Drawing in Aveva | milestone | 0d | 2022-11-29 | 2022-11-29 |  |  |  |  |  | 727d |  | finish on or after 2022-11-29 |  |  |  |  | DG4 | TR | G | ANSA.000 | 00 | G-F2 | 001 | Lurgi | OK |  |  |

Notes:
- A1050: Notes: Atividade cancelada. / Atividade sendo acompanhada pelo Time de Transição
- A1850: Assumptions: Necessário ter 30% de avanço da Fase 2 de Inspeção para iniciar o estudo / do Scrubber
- A2250: Assumptions: Avaliar alocação do time de Turnaround para apoio na realização da / atividade de revisão do Plano de Preservação
- A1270: Assumptions: Validar com Andreia/Lucas / - Dimensionamento de volumes / - Memorial Descritivo / - BID / - Estimate
- A2040: Notes: Cancelada devido a impossibilidade de acesso ao site
- A1660: Notes: Cancelada devido detalhamento do crongorama L3
- A1840: Notes: Cancelada devido a adequação da estratégia de Engenharia.
- A1880: Notes: Cancelada devido detalhamento do crongorama L3
- A1930: Notes: Cancelada devido a impossibilidade de acesso ao site
- A1960: Notes: Cancelada devido a impossibilidade de acesso ao site
- A2020: Notes: Cancelada devido a impossibilidade de acesso ao site
- A2050: Notes: Cancelada devido a impossibilidade de acesso ao site
- A2150: Notes: Cancelada devido a adequação da estratégia de Engenharia.
- A2440: Notes: Cancelada devido detalhamento do crongorama L3
- A1390: Notes: Atividade cancelada. Mantido apenas para DG4.
- A1400: Notes: Atividade cancelada. Mantido apenas para DG4.
- A1410: Notes: Atividade cancelada. Mantido apenas para DG4.
- A1420: Notes: Atividade cancelada. Mantido apenas para DG4.

| ID | Activity | Type | Duration | Start | Finish | Predecessors | Total float | Free float | Constraint | Resources | Cost | Yara ANSA - Project Phase | Yara ANSA - Workstream | Yara ANSA - Ajustes | Yara ANSA - Transformation | Yara ANSA - Disciplines | Yara ANSA - CWA | Yara ANSA - Workface | Yara ANSA - Subisciplines | Yara ANSA - Sequencial | Yara ANSA - Contracts |
| --- | --- | --- | --- | --- | --- | --- | --- | --- | --- | --- | --- | --- | --- | --- | --- | --- | --- | --- | --- | --- | --- |
| A6740 | NG Compressor Definition | milestone | 0d | 2022-11-30 | 2022-11-30 |  | 726d |  | finish on or after 2022-11-30 |  |  | DG4 | TR | OK | Lurgi | G | ANSA.000 | 00 | G-F2 | 001 |  |
| A1040 | Closing |  | 60d | 2022-12-01 | 2023-03-15 | A2360 | 102d | 0d | start on or after 2022-12-01 |  |  | DG4 | GE |  |  | G | ANSA.000 | 00 | G-F3 | 001 |  |
| A2350 | Celiga contract update |  | 40d | 2022-12-01 | 2023-02-08 | A2250 | 653d | 29d |  |  |  | DG4 | PR |  |  | G | ANSA.000 | 00 | G-F3 | 001 |  |
| A6760 | Sites access - Field Survey - Electrical + Instrumentation | milestone | 0d | 2022-12-01 | 2022-12-01 |  | 725d |  | finish on or after 2022-12-01 |  |  | DG4 | TR | OK | Lurgi | G | ANSA.000 | 00 | G-F2 | 001 |  |
| A1020 | Laser Scan Survey |  | 60d | 2022-12-05 | 2023-03-17 | A1000 | 624d | 0d | start on or after 2022-12-05 |  |  | DG3 | TR |  | LaserScan | G | ANSA.000 | 00 | G-F2 | 001 |  |
| A2750 | PPI-027 - Gas Supply / Instrastructure |  | 100d | 2022-12-05 | 2023-05-12 | A1480 FF | 624d |  |  | Recurso Ponderador [52101 h] | 52,101 | PRO | PR |  |  | P | ANSA.000 | 00 | P-PI | 027 |  |
| A1120 | HES plan (Final) |  | 60d | 2022-12-09 | 2023-03-23 | A1420 FS+20d | 627d | 2d |  |  |  | DG4 | PC |  |  | G | ANSA.000 | 00 | G-F3 | 001 |  |
| A1170 | Quality plan (Final) |  | 60d | 2022-12-09 | 2023-03-23 | A1420 FS+20d | 627d | 2d |  |  |  | DG4 | PC |  |  | G | ANSA.000 | 00 | G-F3 | 001 |  |
| A1280 | Permits Plan |  | 80d | 2022-12-09 | 2023-04-20 | A1420 FS+20d | 632d | 8d | start on or after 2022-12-02 |  |  | DG4 | PC |  |  | G | ANSA.000 | 00 | G-F3 | 001 |  |
| A1320 | HR plan (Final) |  | 20d | 2022-12-09 | 2023-01-19 | A2330, A1420 FS+20d | 652d | 0d |  |  |  | DG4 | PC |  |  | G | ANSA.000 | 00 | G-F3 | 001 |  |
| A1350 | Insurance Plan |  | 10d | 2022-12-09 | 2022-12-22 | A1420 FS+20d | 702d | 78d |  |  |  | DG4 | PC |  |  | G | ANSA.000 | 00 | G-F3 | 001 |  |
| A1580 | Risk Register updated |  | 10d | 2022-12-09 | 2022-12-22 | A1420 FS+20d | 687d | 53d |  |  |  | DG4 | PC |  |  | G | ANSA.000 | 00 | G-F3 | 001 |  |
| A5410 | Define contract strategy | milestone | 0d | 2022-12-09 | 2022-12-09 | A5400 FS+11d | 453d | 0d |  |  |  | CON | TA |  |  | G | ANSA.000 | 00 | G-ML | 001 |  |
| A5420 | Define procurement strategy | milestone | 0d | 2022-12-09 | 2022-12-09 | A5410 | 453d | 0d |  |  |  | CON | TA |  |  | G | ANSA.000 | 00 | G-ML | 001 |  |
| A5430 | Define start up systems | milestone | 0d | 2022-12-09 | 2022-12-09 | A5420 SS | 453d | 0d |  |  |  | CON | TA |  |  | G | ANSA.000 | 00 | G-ML | 001 |  |
| A5440 | Issue execution and start up schedule | milestone | 0d | 2022-12-09 | 2022-12-09 | A5430 SS | 453d | 0d |  |  |  | CON | TA |  |  | G | ANSA.000 | 00 | G-ML | 001 |  |
| A5450 | Define materials management procedure | milestone | 0d | 2022-12-09 | 2022-12-09 | A5440 SS | 453d | 0d |  |  |  | CON | TA |  |  | G | ANSA.000 | 00 | G-ML | 001 |  |
| A6750 | Process - P&Ids U-11 - Drawing in Aveva | milestone | 0d | 2022-12-09 | 2022-12-09 |  | 719d |  | finish on or after 2022-12-09 |  |  | DG4 | TR | OK | Lurgi | G | ANSA.000 | 00 | G-F2 | 001 |  |
| A6790 | Automation - Trade Off Tests x Replacement | milestone | 0d | 2022-12-09 | 2022-12-09 |  | 719d |  | finish on or after 2022-12-09 |  |  | DG4 | TR | OK | Lurgi | G | ANSA.000 | 00 | G-F2 | 001 |  |
| A5460 | Issue resource matrix | milestone | 0d | 2022-12-12 | 2022-12-12 | A2120 | 453d | 0d |  |  |  | CON | TA |  |  | G | ANSA.000 | 00 | G-ML | 001 |  |
| A1570 | Hazop (If applicable) |  | 15d | 2022-12-14 | 2023-01-17 | A1550, A1930, A1780 | 669d | 45d |  |  |  | DG4 | TR |  | Engenharia | G | ANSA.000 | 00 | G-F3 | 001 |  |
| A3180 | PSE-011 - Warehouse wooden structure |  | 70d | 2022-12-15 | 2023-04-13 | A4090 SF | 646d |  |  | Recurso Ponderador [52101 h] | 52,101 | PRO | PR |  |  | P | ANSA.000 | 00 | P-SE | 011 |  |
| A3530 | PSE-077 - Warehouse tiles |  | 70d | 2022-12-15 | 2023-04-13 | A4090 SF | 646d |  |  | Recurso Ponderador [52101 h] | 52,101 | PRO | PR |  |  | P | ANSA.000 | 00 | P-SE | 077 |  |
| A6710 | Definition of the Preservation Scope considering Routine Maintenance | milestone | 0d | 2022-12-15 | 2022-12-15 |  | 715d |  | finish on or after 2022-12-15 |  |  | DG4 | CO |  |  | G | ANSA.000 | 00 | G-F3 | 001 |  |
| A6720 | Preparation of the early commissioning procedures of the 5 priority systems | milestone | 0d | 2022-12-15 | 2022-12-15 |  | 715d |  | finish on or after 2022-12-15 |  |  | DG4 | CO |  |  | G | ANSA.000 | 00 | G-F3 | 001 |  |
| A6920 | Preparation of the commissioning protocols of the 5 priority systems | milestone | 0d | 2022-12-15 | 2022-12-15 |  | 715d |  | finish on or after 2022-12-15 |  |  | DG4 | CO |  |  | G | ANSA.000 | 00 | G-F3 | 001 |  |
| A1800 | Data sheet - Equipment |  | 25d | 2022-12-20 | 2023-02-06 | A1790 FF+5d | 640d | 0d |  |  |  | DG4 | TR |  | Engenharia | G | ANSA.000 | 00 | G-F3 | 001 |  |
| A5470 | Define planning proces follow up | milestone | 0d | 2023-01-09 | 2023-01-09 | A5460 FS+10d | 453d | 0d |  |  |  | CON | TA |  |  | G | ANSA.000 | 00 | G-ML | 001 |  |
| A6730 | Definition of the inspection and maintenance needs for the execution of the early commissioning | milestone | 0d | 2023-01-09 | 2023-01-09 |  | 709d |  | finish on or after 2022-12-30 |  |  | DG4 | CO |  |  | G | ANSA.000 | 00 | G-F3 | 001 |  |
| A6810 | Support in prioritizing Annex II | milestone | 0d | 2023-01-09 | 2023-01-09 |  | 709d |  | finish on or after 2022-12-30 |  |  | DG4 | CO |  |  | G | ANSA.000 | 00 | G-F3 | 001 |  |
| A6820 | Support in Transformation projects | milestone | 0d | 2023-01-09 | 2023-01-09 |  | 709d |  | finish on or after 2022-12-30 |  |  | DG4 | CO |  |  | G | ANSA.000 | 00 | G-F3 | 001 |  |
| A6830 | Support in other plant projects | milestone | 0d | 2023-01-09 | 2023-01-09 |  | 709d |  | finish on or after 2022-12-30 |  |  | DG4 | CO |  |  | G | ANSA.000 | 00 | G-F3 | 001 |  |
| A6890 | Laser Scan - Area 01 | milestone | 0d | 2023-01-09 | 2023-01-09 |  | 709d |  | finish on or after 2023-01-05 |  |  | DG4 | TR | OK | Lurgi | G | ANSA.000 | 00 | G-F2 | 001 |  |
| A1940 | PO Demi Water (if Nalco) |  | 15d | 2023-01-10 | 2023-01-30 | A1970 | 103d | 0d | finish on or after 2023-01-30 |  |  | DG4 | TR |  | DemiWater | G | ANSA.000 | 00 | G-F3 | 001 | Procurement Plan |
| A3590 | PPW-014 - Flash Column - Engineering / Manufacturing / Delivery |  | 70d | 2023-01-11 | 2023-04-26 | A4320 SF | 637d |  |  | Recurso Ponderador [52101 h] | 52,101 | PRO | PR |  |  | P | ANSA.000 | 00 | P-PW | 014 |  |
| A3600 | PPW-015 - Blower - Engineering / Manufacturing / Delivery |  | 70d | 2023-01-11 | 2023-04-26 | A4320 SF | 637d |  |  | Recurso Ponderador [52101 h] | 52,101 | PRO | PR |  |  | P | ANSA.000 | 00 | P-PW | 015 |  |
| A6950 | Electrical - Electrical Equipment Data Sheets | milestone | 0d | 2023-01-11 | 2023-01-11 |  | 706d |  | finish on or after 2023-01-11 |  |  | DG4 | TR | OK | Lurgi | G | ANSA.000 | 00 | G-F2 | 001 |  |
| A2500 | PPI-002 - Adequacy of facilities (infrastructure) |  | 80d | 2023-01-12 | 2023-05-11 | A4130 SF | 626d |  |  | Recurso Ponderador [52101 h] | 52,101 | PRO | PR |  |  | P | ANSA.000 | 00 | P-PI | 002 |  |
| A2510 | PPI-003 - Facilities (Furniture and Equipment) |  | 80d | 2023-01-12 | 2023-05-11 | A4130 SF | 626d |  |  | Recurso Ponderador [52101 h] | 52,101 | PRO | PR |  |  | P | ANSA.000 | 00 | P-PI | 003 |  |
| A2520 | PPI-004 - IT / Systems Implementation |  | 80d | 2023-01-12 | 2023-05-11 | A4130 SF | 626d |  |  | Recurso Ponderador [52101 h] | 52,101 | PRO | PR |  |  | P | ANSA.000 | 00 | P-PI | 004 |  |
| A6150 | ANSA.019 - EN - Urea Storage |  | 60d | 2023-01-12 | 2023-04-12 | A1040 FF+20d | 236d | 0d |  | Recurso Ponderador [362696 h] | 362,696 | ENG | TR |  |  | G | ANSA.019 | 01 | G-EN | 001 |  |
| A6440 | Detailed Engineering | level of effort | 227d | 2023-01-12 | 2023-12-01 | A5970 FF, A5980 FF, A5990 FF, A6000 FF, A6010 FF, A6020 FF, A6030 FF, A6040 FF, A6050 FF, A6060 FF, A6070 FF, A6080 FF, A6090 FF, A6100 FF, A6110 FF, A6120 FF, A6130 FF, A6140 FF, A6150 FF, A6160 FF, A6170 FF, A6180 FF, A6190 FF, A6200 FF, A6210 FF, A6220 FF, A6230 FF, A5970 SS, A5980 SS, A5990 SS, A6000 SS, A6010 SS, A6020 SS, A6030 SS, A6040 SS, A6050 SS, A6060 SS, A6070 SS, A6080 SS, A6090 SS, A6100 SS, A6110 SS, A6120 SS, A6130 SS, A6140 SS, A6150 SS, A6160 SS, A6170 SS, A6180 SS, A6190 SS, A6200 SS, A6210 SS, A6220 SS, A6230 SS | 339d | 0d |  |  |  | GEN | TR |  |  | G | ANSA.000 | 00 | G-ML | 001 |  |
| A6470 | Detailed Engineering start date | milestone | 0d | 2023-01-12 | 2023-01-12 |  | 27d | 0d | start on or after 2023-01-12 |  |  | GEN | TR |  |  | G | ANSA.000 | 00 | G-ML | 001 |  |
| A1090 | Laser Scan Processing Data |  | 60d | 2023-01-16 | 2023-04-14 | A1020 SS+20d | 624d | 0d |  |  |  | DG4 | TR |  | LaserScan | G | ANSA.000 | 00 | G-F3 | 001 |  |
| A2530 | PPI-005 - Facilities ( services, running costs) |  | 80d | 2023-01-16 | 2023-05-12 | A1480 FF | 624d |  |  | Recurso Ponderador [52101 h] | 52,101 | PRO | PR |  |  | P | ANSA.000 | 00 | P-PI | 005 |  |
| A2560 | PPI-008 - Catering |  | 80d | 2023-01-16 | 2023-05-12 | A1480 FF | 624d |  |  | Recurso Ponderador [52101 h] | 52,101 | PRO | PR |  |  | P | ANSA.000 | 00 | P-PI | 008 |  |
| A2610 | PPI-013 - Communication |  | 80d | 2023-01-16 | 2023-05-12 | A1480 FF | 624d |  |  | Recurso Ponderador [52101 h] | 52,101 | PRO | PR |  |  | P | ANSA.000 | 00 | P-PI | 013 |  |
| A3210 | PSE-021 - External medical assistance (ambulance) |  | 80d | 2023-01-16 | 2023-05-15 | A5730 SF | 624d |  |  | Recurso Ponderador [52101 h] | 52,101 | PRO | PR |  |  | P | ANSA.000 | 00 | P-SE | 021 |  |
| A3220 | PSE-022 - Technical Support Safety |  | 80d | 2023-01-16 | 2023-05-15 | A5730 SF | 624d |  |  | Recurso Ponderador [52101 h] | 52,101 | PRO | PR |  |  | P | ANSA.000 | 00 | P-SE | 022 |  |
| A3580 | PPW-013 - Electrical Equipments (Transformer/Switchgear / MCCs) |  | 80d | 2023-01-16 | 2023-05-15 | A5730 SF | 624d |  |  | Recurso Ponderador [52101 h] | 52,101 | PRO | PR |  |  | P | ANSA.000 | 00 | P-PW | 013 |  |
| A3710 | PSE-016 - ElectroMechanical Assembly - Contractor I |  | 80d | 2023-01-16 | 2023-05-15 | A5730 SF | 624d |  |  | Recurso Ponderador [52101 h] | 52,101 | PRO | PR |  |  | P | ANSA.000 | 00 | P-SE | 016 |  |
| A3720 | PSE-017 - Civil Works - Contractor I |  | 80d | 2023-01-16 | 2023-05-15 | A5730 SF | 624d |  |  | Recurso Ponderador [52101 h] | 52,101 | PRO | PR |  |  | P | ANSA.000 | 00 | P-SE | 017 |  |
| A2270 | Specialists Specific Recomendation for Commissioning Activities |  | 20d | 2023-01-17 | 2023-02-13 | A1940 FF+10d, A1880 FF+5d, A1850, A1770 FF+5d, A1660 FF+10d, A2050 | 625d | 0d |  |  |  | DG4 | CO |  |  | G | ANSA.000 | 00 | G-F3 | 001 |  |
| A6120 | ANSA.016 - EN - U10-B, U33-B, U18-B and U19-B |  | 60d | 2023-01-19 | 2023-04-19 | A5850 | 158d | 0d |  | Recurso Ponderador [290157 h] | 290,157 | ENG | TR |  |  | G | ANSA.016 | 04 | G-EN | 001 |  |
| A1330 | MPP to align with the Hiring Plan |  | 15d | 2023-01-20 | 2023-02-09 | A1320 | 652d | 2d |  |  |  | DG4 | PC |  |  | G | ANSA.000 | 00 | G-F3 | 001 |  |
| A5480 | Conduct TAP(*) 1 review | milestone | 0d | 2023-01-24 | 2023-01-24 | A5470 FS+11d | 453d | 0d |  |  |  | CON | TA |  |  | G | ANSA.000 | 00 | G-ML | 001 |  |
| A2890 | PPI-040 - Plant Automation |  | 80d | 2023-01-25 | 2023-05-24 | A4520 SF | 617d |  |  | Recurso Ponderador [52101 h] | 52,101 | PRO | PR |  |  | P | ANSA.000 | 00 | P-PI | 040 |  |
| A3700 | PSE-015 - Automation |  | 80d | 2023-01-25 | 2023-05-24 | A4520 SF | 617d |  |  | Recurso Ponderador [52101 h] | 52,101 | PRO | PR |  |  | P | ANSA.000 | 00 | P-SE | 015 |  |
| A6180 | ANSA.022 - EN - ETDI |  | 60d | 2023-01-26 | 2023-04-26 | A5870 | 127d | 0d |  | Recurso Ponderador [435235 h] | 435,235 | ENG | TR |  |  | G | ANSA.022 | 04 | G-EN | 001 |  |
| A2800 | PPI-032 - Logistic Services (Freight) |  | 50d | 2023-01-30 | 2023-04-14 |  | 644d |  | start on or after 2023-01-30 | Recurso Ponderador [52101 h] | 52,101 | PRO | PR |  |  | P | ANSA.000 | 00 | P-PI | 032 |  |
| A3310 | PSE-032 - Spools Fabrication |  | 70d | 2023-01-30 | 2023-05-15 | A5730 SF | 624d |  |  | Recurso Ponderador [52101 h] | 52,101 | PRO | PR |  |  | P | ANSA.000 | 00 | P-SE | 032 |  |
| A3440 | PSE-045 - External Workshop Machining |  | 70d | 2023-01-30 | 2023-05-15 | A5730 SF | 624d |  |  | Recurso Ponderador [52101 h] | 52,101 | PRO | PR |  |  | P | ANSA.000 | 00 | P-SE | 045 |  |
| A3450 | PSE-046 - Metal joint and flat joint manufacturing |  | 70d | 2023-01-30 | 2023-05-15 | A5730 SF | 624d |  |  | Recurso Ponderador [52101 h] | 52,101 | PRO | PR |  |  | P | ANSA.000 | 00 | P-SE | 046 |  |
| A3470 | PSE-048 - Rental of Cranes and Equipment |  | 70d | 2023-01-30 | 2023-05-15 | A5730 SF | 624d |  |  | Recurso Ponderador [52101 h] | 52,101 | PRO | PR |  |  | P | ANSA.000 | 00 | P-SE | 048 |  |
| A3500 | PSE-051 - Site Machining |  | 70d | 2023-01-30 | 2023-05-15 | A5730 SF | 624d |  |  | Recurso Ponderador [52101 h] | 52,101 | PRO | PR |  |  | P | ANSA.000 | 00 | P-SE | 051 |  |
| A3510 | PSE-052 - Electric |  | 70d | 2023-01-30 | 2023-05-15 | A5730 SF | 624d |  |  | Recurso Ponderador [52101 h] | 52,101 | PRO | PR |  |  | P | ANSA.000 | 00 | P-SE | 052 |  |
| A3650 | PPW-020 - Area 11 - Gasifier - Supply / Delivery | milestone | 0d | 2023-01-30 | 2023-01-30 |  | 1d | 0d | finish on or after 2023-01-30 |  |  | PRO | PR |  |  | P | ANSA.000 | 00 | P-PW | 020 |  |
| A3770 | PSE-019 - Preservation - Industrial cleaning |  | 70d | 2023-01-30 | 2023-05-15 | A5730 SF | 624d |  |  | Recurso Ponderador [52101 h] | 52,101 | PRO | PR |  |  | P | ANSA.000 | 00 | P-SE | 019 |  |
| A3790 | PSE-054 - Truck with Nitrogen pump for testing |  | 70d | 2023-01-30 | 2023-05-15 | A5730 SF | 624d |  |  | Recurso Ponderador [52101 h] | 52,101 | PRO | PR |  |  | P | ANSA.000 | 00 | P-SE | 054 |  |
| A3870 | PSE-062 - Preventive Maintenance And Calibration Services for Balances (Lab) |  | 70d | 2023-01-30 | 2023-05-15 | A5730 SF | 624d |  |  | Recurso Ponderador [52101 h] | 52,101 | PRO | PR |  |  | P | ANSA.000 | 00 | P-SE | 062 |  |

Notes:
- A1120: Assumptions: A partir do Green Light, 40 dias para mobilização do recurso + 60 dias / para a execução do plano.
- A1170: Assumptions: A partir do Green Light, 40 dias para mobilização do recurso + 60 dias / para a execução do plano.
- A6150: Assumptions: Civil: Considerado apenas a recuperação do telhado. Não foram / considerados estudos de engenharia focados em cálculo estrutural. / Eletromecânica: Considerado 2 meses no início para realização de inspeção de / campo.
- A2270: Assumptions: Necessário recomendãção dos TPOs da Yara.

| ID | Activity | Type | Duration | Start | Finish | Predecessors | Total float | Free float | Constraint | Resources | Cost | Yara ANSA - Project Phase | Yara ANSA - Workstream | Yara ANSA - Disciplines | Yara ANSA - CWA | Yara ANSA - Workface | Yara ANSA - Subisciplines | Yara ANSA - Sequencial | Yara ANSA - Ajustes | Yara ANSA - Transformation | Yara ANSA - Contracts |
| --- | --- | --- | --- | --- | --- | --- | --- | --- | --- | --- | --- | --- | --- | --- | --- | --- | --- | --- | --- | --- | --- |
| A3880 | PSE-063 - Preventive Maintenance And Calibration Services Chromate (Lab) |  | 70d | 2023-01-30 | 2023-05-15 | A5730 SF | 624d |  |  | Recurso Ponderador [52101 h] | 52,101 | PRO | PR | P | ANSA.000 | 00 | P-SE | 063 |  |  |  |
| A3890 | PSE-064 - Preventive Maintenance And Calibration Services In Spectrophotometers, Refraction Index, Conduitmeter, Ion Spe |  | 70d | 2023-01-30 | 2023-05-15 | A5730 SF | 624d |  |  | Recurso Ponderador [52101 h] | 52,101 | PRO | PR | P | ANSA.000 | 00 | P-SE | 064 |  |  |  |
| A3900 | PSE-065 - Maintenance and Calibration Services In Icp-Oes (Lab) |  | 70d | 2023-01-30 | 2023-05-15 | A5730 SF | 624d |  |  | Recurso Ponderador [52101 h] | 52,101 | PRO | PR | P | ANSA.000 | 00 | P-SE | 065 |  |  |  |
| A3910 | PSE-066 - Maintenance and Calibration Services Viscometer (Lab) |  | 70d | 2023-01-30 | 2023-05-15 | A5730 SF | 624d |  |  | Recurso Ponderador [52101 h] | 52,101 | PRO | PR | P | ANSA.000 | 00 | P-SE | 066 |  |  |  |
| A3920 | PSE-067 - Maintenance And Calibration Services In Automatic Titrators, Phmetros, Automatic Burters and Ionico Chromatogr |  | 70d | 2023-01-30 | 2023-05-15 | A5730 SF | 624d |  |  | Recurso Ponderador [52101 h] | 52,101 | PRO | PR | P | ANSA.000 | 00 | P-SE | 067 |  |  |  |
| A3930 | PSE-068 - Maintenance And Calibration Services In Flash Point (Lab) |  | 70d | 2023-01-30 | 2023-05-15 | A5730 SF | 624d |  |  | Recurso Ponderador [52101 h] | 52,101 | PRO | PR | P | ANSA.000 | 00 | P-SE | 068 |  |  |  |
| A3940 | PSE-069 - Maintenance And Calibration Services In Densimeter (Lab) |  | 70d | 2023-01-30 | 2023-05-15 | A5730 SF | 624d |  |  | Recurso Ponderador [52101 h] | 52,101 | PRO | PR | P | ANSA.000 | 00 | P-SE | 069 |  |  |  |
| A3950 | PSE-070 - Analyzer Calibration |  | 70d | 2023-01-30 | 2023-05-15 | A5730 SF | 624d |  |  | Recurso Ponderador [52101 h] | 52,101 | PRO | PR | P | ANSA.000 | 00 | P-SE | 070 |  |  |  |
| A3970 | PSE-073 - Environmental Analyses |  | 70d | 2023-01-30 | 2023-05-15 | A5730 SF | 624d |  |  | Recurso Ponderador [52101 h] | 52,101 | PRO | PR | P | ANSA.000 | 00 | P-SE | 073 |  |  |  |
| A3980 | PSE-074 - Contaminated Areas Analyses |  | 70d | 2023-01-30 | 2023-05-15 | A5730 SF | 624d |  |  | Recurso Ponderador [52101 h] | 52,101 | PRO | PR | P | ANSA.000 | 00 | P-SE | 074 |  |  |  |
| A3990 | PSE-075 - Internal Management of Environment and Waste Area |  | 70d | 2023-01-30 | 2023-05-15 | A5730 SF | 624d |  |  | Recurso Ponderador [52101 h] | 52,101 | PRO | PR | P | ANSA.000 | 00 | P-SE | 075 |  |  |  |
| A4290 | ANSA.003 - Supply - Vendor |  | 420d | 2023-01-30 | 2024-09-13 | A3650 | 1d | 0d |  | Recurso Ponderador [33200000 h] | 33,200,000 | SUP | PR | G | ANSA.003 | 03 | G-SF | 001 |  |  |  |
| A6630 | ANSA.008 - First Supply - Vendor (Hardware) |  | 280d | 2023-01-30 | 2024-03-01 |  | 414d |  | start on or after 2023-01-30 | Recurso Ponderador [11087458 h] | 11,087,458 | SUP | PR | G | ANSA.008 | 04 | G-SF | 001 |  |  |  |
| A1650 | PO NG Compressor | milestone | 0d | 2023-01-30 | 2023-01-30 | A2210 | 0d |  | finish on or after 2023-01-30 |  |  | DG3 | TR | G | ANSA.000 | 00 | G-F2 | 001 | OK | NGC | Procurement Plan |
| A1830 | PO LNW | milestone | 0d | 2023-01-30 | 2023-01-30 | A2430, A2070 | 81d | 0d | finish on or after 2023-01-30 |  |  | DG3 | TR | G | ANSA.000 | 00 | G-F2 | 001 | OK | LNW | Procurement Plan |
| A3630 | PPW-018 - Demi Water - Engineering / Manufacturing / Operation (BOT) | milestone | 0d | 2023-01-30 | 2023-01-30 | A1940 FF | 693d |  |  |  |  | PRO | PR | P | ANSA.000 | 00 | P-PW | 018 |  |  |  |
| A1680 | Contracting Strategy (Final) |  | 30d | 2023-01-31 | 2023-03-20 | A1890 FF+10d | 655d | 31d |  |  |  | DG4 | TR | G | ANSA.000 | 00 | G-F3 | 001 |  | Engenharia |  |
| A1690 | Consumer List updated |  | 15d | 2023-01-31 | 2023-02-27 | A1660, A1940, A1880, A1780 FF | 630d | 0d |  |  |  | DG4 | TR | G | ANSA.000 | 00 | G-F3 | 001 |  | Engenharia |  |
| A1700 | SLD - Single Line Diagram |  | 15d | 2023-01-31 | 2023-02-27 | A1690 FF | 630d | 6d |  |  |  | DG4 | TR | G | ANSA.000 | 00 | G-F3 | 001 |  | Engenharia |  |
| A1890 | Construction Method./ POC |  | 20d | 2023-01-31 | 2023-03-06 | A1920 SS | 630d | 0d |  |  |  | DG4 | PC | G | ANSA.000 | 00 | G-F3 | 001 |  |  |  |
| A1920 | Layouts and Arrangements |  | 20d | 2023-01-31 | 2023-03-06 | A1910 FF+10d, A1310, A1880, A1940, A1660, A1430 | 625d | 0d |  |  |  | DG4 | TR | G | ANSA.000 | 00 | G-F3 | 001 |  | Engenharia |  |
| A2230 | Training Plan |  | 15d | 2023-01-31 | 2023-02-27 | A1940, A1880, A1850, A1770, A1660, A2050 | 645d | 21d |  |  |  | DG4 | CO | G | ANSA.000 | 00 | G-F3 | 001 |  |  |  |
| A4250 | ANSA.001 - Supply - Vendor |  | 380d | 2023-01-31 | 2024-07-22 | A1650 | 0d |  |  | Recurso Ponderador [16800000 h] | 16,800,000 | SUP | PR | G | ANSA.001 | 03 | G-SF | 001 |  |  |  |
| A4370 | ANSA.007 - Supply - Vendor |  | 360d | 2023-01-31 | 2024-06-24 | A1830 | 81d | 0d |  | Recurso Ponderador [26500000 h] | 26,500,000 | SUP | PR | G | ANSA.007 | 03 | G-SF | 001 |  |  |  |
| A4410 | ANSA.012 - Supply - Vendor |  | 240d | 2023-01-31 | 2024-01-08 | A1940 | 103d | 0d |  | Recurso Ponderador [36673898 h] | 36,673,898 | SUP | PR | G | ANSA.012 | 03 | G-SF | 001 |  | DemiWater |  |
| A6640 | Hiring a Training Institution to Train Operators | milestone | 0d | 2023-01-31 | 2023-01-31 |  | 692d |  | finish on or after 2023-01-31 |  |  | DG4 | CO | G | ANSA.000 | 00 | G-F3 | 001 |  |  |  |
| A6700 | Logistic Plan (inbound / outbound) - Preparation of the Preliminary Plan by the Stationary team | milestone | 0d | 2023-01-31 | 2023-01-31 |  | 692d |  | finish on or after 2023-01-31 |  |  | DG4 | CO | G | ANSA.000 | 00 | G-F3 | 001 |  |  |  |
| A2970 | PPM-005 - Turnaround - Piping Material |  | 45d | 2023-02-02 | 2023-04-13 | A6320 SF | 189d | 0d |  | Recurso Ponderador [52101 h] | 52,101 | PRO | PR | P | ANSA.000 | 00 | P-PM | 005 |  |  |  |
| A2980 | PPM-006 - Locks and Gaskets |  | 45d | 2023-02-02 | 2023-04-13 | A6320 SF | 189d | 0d |  | Recurso Ponderador [52101 h] | 52,101 | PRO | PR | P | ANSA.000 | 00 | P-PM | 006 |  |  |  |
| A2990 | PPM-007 - In-house screw store |  | 45d | 2023-02-02 | 2023-04-13 | A6320 SF | 646d |  |  | Recurso Ponderador [52101 h] | 52,101 | PRO | PR | P | ANSA.000 | 00 | P-PM | 007 |  |  |  |
| A3030 | PPW-004 - HP Scrubber |  | 70d | 2023-02-02 | 2023-05-17 | A6450 | 189d | 0d |  | Recurso Ponderador [52101 h] | 52,101 | PRO | PR | P | ANSA.000 | 00 | P-PW | 004 |  |  |  |
| A3040 | PPW-005 - Urea Stripper Ferrules |  | 70d | 2023-02-02 | 2023-05-17 | A6450 | 189d | 0d |  | Recurso Ponderador [52101 h] | 52,101 | PRO | PR | P | ANSA.000 | 00 | P-PW | 005 |  |  |  |
| A3170 | PSE-010 - Relining Urea Reactor |  | 70d | 2023-02-02 | 2023-05-17 | A6450 | 189d | 0d |  | Recurso Ponderador [52101 h] | 52,101 | PRO | PR | P | ANSA.000 | 00 | P-SE | 010 |  |  |  |
| A3520 | PSE-071 - Urea Elevator Maintenance |  | 70d | 2023-02-02 | 2023-05-17 | A6450 | 189d | 0d |  | Recurso Ponderador [52101 h] | 52,101 | PRO | PR | P | ANSA.000 | 00 | P-SE | 071 |  |  |  |
| A6770 | Process - P&IDs U-16 - Demi Water - Drawing in Aveva | milestone | 0d | 2023-02-02 | 2023-02-02 |  | 690d |  | finish on or after 2023-02-02 |  |  | DG4 | TR | G | ANSA.000 | 00 | G-F2 | 001 | OK | Lurgi |  |
| A5490 | Define project risk register | milestone | 0d | 2023-02-06 | 2023-02-06 | A5480 FS+9d | 453d | 0d |  |  |  | CON | TA | G | ANSA.000 | 00 | G-ML | 001 |  |  |  |
| A5500 | Define integration plan for MNT and Capital projects | milestone | 0d | 2023-02-06 | 2023-02-06 | A5490 SS | 453d | 0d |  |  |  | CON | TA | G | ANSA.000 | 00 | G-ML | 001 |  |  |  |
| A1670 | Last Firm Quotes |  | 15d | 2023-02-07 | 2023-03-06 | A1840 | 640d | 16d |  |  |  | DG4 | TR | G | ANSA.000 | 00 | G-F3 | 001 |  | Engenharia |  |
| A2370 | Commissioning Schedule |  | 20d | 2023-02-07 | 2023-03-13 | A1960, A2270 FF+15d | 625d | 0d |  |  |  | DG4 | CO | G | ANSA.000 | 00 | G-F3 | 001 |  |  |  |
| A6900 | Laser Scan - Green Area | milestone | 0d | 2023-02-09 | 2023-02-09 |  | 685d |  | finish on or after 2023-02-09 |  |  | DG4 | TR | G | ANSA.000 | 00 | G-F2 | 001 | OK | Lurgi |  |
| A5970 | ANSA.001 - EN - NGC - Natural Gas Compressor |  | 200d | 2023-02-13 | 2023-11-24 | A5890 | 111d | 0d |  | Recurso Ponderador [725392 h] | 725,392 | ENG | TR | G | ANSA.001 | 03 | G-EN | 001 |  |  |  |
| A6110 | ANSA.015 - EN - U-33A-Compressor Room |  | 60d | 2023-02-13 | 2023-05-12 | A5910 | 185d | 0d |  | Recurso Ponderador [435235 h] | 435,235 | ENG | TR | G | ANSA.015 | 04 | G-EN | 001 |  |  |  |
| A6200 | ANSA.024 - EN - Substations |  | 120d | 2023-02-13 | 2023-08-04 | A5880 | 125d | 0d |  | Recurso Ponderador [435235 h] | 435,235 | ENG | TR | G | ANSA.024 | 04 | G-EN | 001 |  |  |  |
| A6980 | Piping - Piping Plants - Gas System | milestone | 0d | 2023-02-13 | 2023-02-13 |  | 683d |  | finish on or after 2023-02-13 |  |  | DG4 | TR | G | ANSA.000 | 00 | G-F2 | 001 | OK | Lurgi |  |
| A1340 | Opex |  | 10d | 2023-02-14 | 2023-03-06 | A1270, A1210, A1330 | 655d | 31d |  |  |  | DG4 | PC | G | ANSA.000 | 00 | G-F3 | 001 |  |  |  |
| A6960 | Electrical - Electrical Plants - Gas System | milestone | 0d | 2023-02-14 | 2023-02-14 |  | 682d |  | finish on or after 2023-02-14 |  |  | DG4 | TR | G | ANSA.000 | 00 | G-F2 | 001 | OK | Lurgi |  |
| A6100 | ANSA.014 - EN - U27- Cooling Tower |  | 40d | 2023-02-15 | 2023-04-18 | A5920 | 218d | 0d |  | Recurso Ponderador [290157 h] | 290,157 | ENG | TR | G | ANSA.014 | 04 | G-EN | 001 |  |  |  |
| A5990 | ANSA.003 - EN - U11-Gasification |  | 200d | 2023-02-27 | 2023-12-01 | A5930 | 206d | 0d |  | Recurso Ponderador [725392 h] | 725,392 | ENG | TR | G | ANSA.003 | 03 | G-EN | 001 |  |  |  |
| A6010 | ANSA.005 - EN - U13, U14, U15 and U20 |  | 150d | 2023-02-27 | 2023-09-22 | A5950 | 170d | 0d |  | Recurso Ponderador [544044 h] | 544,044 | ENG | TR | G | ANSA.005 | 04 | G-EN | 001 |  |  |  |
| A6910 | Laser Scan - Magenta Area | milestone | 0d | 2023-02-27 | 2023-02-27 |  | 679d |  | finish on or after 2023-02-23 |  |  | DG4 | TR | G | ANSA.000 | 00 | G-F2 | 001 | OK | Lurgi |  |
| A2280 | Commissioning Conceptual Plan |  | 20d | 2023-02-28 | 2023-03-27 | A2270 FF+10d, A2340, A2370 FF+10d | 625d | 0d |  |  |  | DG4 | CO | G | ANSA.000 | 00 | G-F3 | 001 |  |  |  |
| A6840 | Celiga contract update - technical visit | milestone | 0d | 2023-02-28 | 2023-02-28 |  | 589d | 0d | finish on or after 2023-02-28 |  |  | DG4 | CO | G | ANSA.000 | 00 | G-F3 | 001 |  |  |  |
| A6870 | Preparation of procedures and check-lists for operational activities to be performed after closing | milestone | 0d | 2023-02-28 | 2023-02-28 |  | 677d |  | finish on or after 2023-02-28 |  |  | DG4 | CO | G | ANSA.000 | 00 | G-F3 | 001 |  |  |  |
| A1110 | 30% 3D Model Review |  | 5d | 2023-03-01 | 2023-03-07 | A1100 FF+12d, A1920 FF | 624d | 0d |  |  |  | DG4 | TR | G | ANSA.000 | 00 | G-F3 | 001 |  | LaserScan |  |
| A2140 | TA Scope Revision (meeting nº 2) |  | 3d | 2023-03-01 | 2023-03-03 | A2130, A5500 FS+12d | 453d | 0d |  |  |  | CON | TA | G | ANSA.000 | 00 | G-ML | 001 |  |  |  |
| A6020 | ANSA.006 - EN - Flash Column + Blower |  | 160d | 2023-03-01 | 2023-10-10 | A5960 FS-25d | 277d | 0d |  | Recurso Ponderador [580313 h] | 580,313 | ENG | TR | G | ANSA.006 | 03 | G-EN | 001 |  |  |  |
| A6230 | ANSA.027 - EN - Fire Fighting |  | 40d | 2023-03-01 | 2023-04-25 | A5960 FF+15d | 103d | 0d |  | Recurso Ponderador [217618 h] | 217,618 | ENG | TR | G | ANSA.027 | 04 | G-EN | 001 |  |  |  |
| A6000 | ANSA.004 - EN - U12-Carbon Recovery |  | 100d | 2023-03-06 | 2023-07-21 | A6410 | 131d | 0d |  | Recurso Ponderador [149065 h] | 149,065 | ENG | TR | G | ANSA.004 | 02 | G-EN | 001 |  |  |  |
| A5510 | Inspection scope final issue | milestone | 0d | 2023-03-07 | 2023-03-07 | A2140 FS+1d | 453d | 0d |  |  |  | CON | TA | G | ANSA.000 | 00 | G-ML | 001 |  |  |  |
| A6930 | Process - P&IDs U-28 - Demi Water - Drawing in Aveva | milestone | 0d | 2023-03-07 | 2023-03-07 |  | 672d |  | finish on or after 2023-03-07 |  |  | DG4 | TR | G | ANSA.000 | 00 | G-F2 | 001 | OK | Lurgi |  |
| A1710 | Final MTO for DG4 |  | 10d | 2023-03-08 | 2023-03-21 | A1700, A1110, A1720, A2150 | 624d | 0d |  |  |  | DG4 | TR | G | ANSA.000 | 00 | G-F3 | 001 |  | Engenharia |  |
| A3810 | PSE-056 - Internal Boiler and Cooling Tower Water Treatment |  | 70d | 2023-03-09 | 2023-06-15 | A4460 SF | 601d |  |  | Recurso Ponderador [52101 h] | 52,101 | PRO | PR | P | ANSA.000 | 00 | P-SE | 056 |  |  |  |
| A2570 | PPI-009 - Vehicle rent |  | 45d | 2023-03-13 | 2023-05-12 | A1480 FF | 624d |  |  | Recurso Ponderador [52101 h] | 52,101 | PRO | PR | P | ANSA.000 | 00 | P-PI | 009 |  |  |  |
| A2580 | PPI-010 - Transportation (fuel, tickets, transport of employees) |  | 45d | 2023-03-13 | 2023-05-15 | A5730 SF | 624d |  |  | Recurso Ponderador [52101 h] | 52,101 | PRO | PR | P | ANSA.000 | 00 | P-PI | 010 |  |  |  |
| A2590 | PPI-011 - Accommodation (Rentals and Hotels) |  | 45d | 2023-03-13 | 2023-05-12 | A1480 FF | 624d |  |  | Recurso Ponderador [52101 h] | 52,101 | PRO | PR | P | ANSA.000 | 00 | P-PI | 011 |  |  |  |
| A2600 | PPI-012 - Property security |  | 45d | 2023-03-13 | 2023-05-12 | A1480 FF | 624d |  |  | Recurso Ponderador [52101 h] | 52,101 | PRO | PR | P | ANSA.000 | 00 | P-PI | 012 |  |  |  |
| A2740 | PPI-026 - Warehouse Equipment - Rent |  | 45d | 2023-03-13 | 2023-05-15 | A5730 SF | 624d |  |  | Recurso Ponderador [52101 h] | 52,101 | PRO | PR | P | ANSA.000 | 00 | P-PI | 026 |  |  |  |
| A2780 | PPI-030 - Hiring Consultant |  | 45d | 2023-03-13 | 2023-05-12 | A1480 FF | 624d |  |  | Recurso Ponderador [52101 h] | 52,101 | PRO | PR | P | ANSA.000 | 00 | P-PI | 030 |  |  |  |
| A2820 | PPI-034 - Waste Disposal Services |  | 45d | 2023-03-13 | 2023-05-15 | A5730 SF | 624d |  |  | Recurso Ponderador [52101 h] | 52,101 | PRO | PR | P | ANSA.000 | 00 | P-PI | 034 |  |  |  |
| A2830 | PPI-056 - Waste Transportation Services |  | 45d | 2023-03-13 | 2023-05-15 | A5730 SF | 624d |  |  | Recurso Ponderador [52101 h] | 52,101 | PRO | PR | P | ANSA.000 | 00 | P-PI | 056 |  |  |  |

Notes:
- A4290: Notes: EP Package Decision / Assumptions: Necenssário recebimento dos equipamentos até 1ª quinzena de / abril de 2024 (Surpimentos trabalhando nesta negociação).
- A6630: Assumptions: Necessário colocar a PO em 1º de dezembro conforme demais LLIs. / Não existe restrição por parte da engenharia e suprimentos. / O pedido será emitido antes da finalização do estudo da Air Liquid (Vaccum / Compressor) e da Luigi. / Grandes chances de alteração de escopo no futuro em função do processo não / estar completo.
- A4410: Assumptions: Vendor precisa entregar as informações para o projeto civil 3 meses / após as PO. / Ajustado do prazo de fornecimento para 18 meses conforme proposta da / Veolia. / Considerado início do fornecimento da água desmineralizada após os 18 meses / (completação mecânica). / Ajustado data de emissão da PO conforme necessidade de Engenharia e / Suprimentos. / Notes: Verificar a duração do desenvolvimento da engenharia do Vendor. / Adotado 18 meses conforme proposta da Veolia.

| ID | Activity | Type | Duration | Start | Finish | Predecessors | Total float | Free float | Constraint | Resources | Cost | Yara ANSA - Project Phase | Yara ANSA - Workstream | Yara ANSA - Disciplines | Yara ANSA - CWA | Yara ANSA - Workface | Yara ANSA - Subisciplines | Yara ANSA - Sequencial | Yara ANSA - Transformation | Yara ANSA - Ajustes |
| --- | --- | --- | --- | --- | --- | --- | --- | --- | --- | --- | --- | --- | --- | --- | --- | --- | --- | --- | --- | --- |
| A2840 | PPI-035 - Legal Services |  | 45d | 2023-03-13 | 2023-05-12 | A1480 FF | 624d |  |  | Recurso Ponderador [52101 h] | 52,101 | PRO | PR | P | ANSA.000 | 00 | P-PI | 035 |  |  |
| A2900 | PPI-047 - Drinkers |  | 45d | 2023-03-13 | 2023-05-15 | A5730 SF | 624d |  |  | Recurso Ponderador [52101 h] | 52,101 | PRO | PR | P | ANSA.000 | 00 | P-PI | 047 |  |  |
| A2910 | PPI-048 - Convoy Truck (diesel) |  | 45d | 2023-03-13 | 2023-05-15 | A5730 SF | 624d |  |  | Recurso Ponderador [52101 h] | 52,101 | PRO | PR | P | ANSA.000 | 00 | P-PI | 048 |  |  |
| A2920 | PPI-049 - Lubrification Supply |  | 45d | 2023-03-13 | 2023-05-15 | A5730 SF | 624d |  |  | Recurso Ponderador [52101 h] | 52,101 | PRO | PR | P | ANSA.000 | 00 | P-PI | 049 |  |  |
| A2930 | PPI-051 - Container Rental |  | 45d | 2023-03-13 | 2023-05-15 | A5730 SF | 624d |  |  | Recurso Ponderador [52101 h] | 52,101 | PRO | PR | P | ANSA.000 | 00 | P-PI | 051 |  |  |
| A2940 | PPI-052 - Radio rental |  | 45d | 2023-03-13 | 2023-05-15 | A5730 SF | 624d |  |  | Recurso Ponderador [52101 h] | 52,101 | PRO | PR | P | ANSA.000 | 00 | P-PI | 052 |  |  |
| A2950 | PPI-053 - Cesspool cleaning truck |  | 45d | 2023-03-13 | 2023-05-15 | A5730 SF | 624d |  |  | Recurso Ponderador [52101 h] | 52,101 | PRO | PR | P | ANSA.000 | 00 | P-PI | 053 |  |  |
| A2960 | PPI-054 - Sale of recycled waste |  | 45d | 2023-03-13 | 2023-05-15 | A5730 SF | 624d |  |  | Recurso Ponderador [52101 h] | 52,101 | PRO | PR | P | ANSA.000 | 00 | P-PI | 054 |  |  |
| A3200 | PSE-020 - Transformers Rental |  | 45d | 2023-03-13 | 2023-05-15 | A5730 SF | 624d |  |  | Recurso Ponderador [52101 h] | 52,101 | PRO | PR | P | ANSA.000 | 00 | P-SE | 020 |  |  |
| A3290 | PSE-030 - Painting |  | 45d | 2023-03-13 | 2023-05-15 | A5730 SF | 624d |  |  | Recurso Ponderador [52101 h] | 52,101 | PRO | PR | P | ANSA.000 | 00 | P-SE | 030 |  |  |
| A3330 | PSE-034 - Operational Cleaning Service |  | 45d | 2023-03-13 | 2023-05-15 | A5730 SF | 624d |  |  | Recurso Ponderador [52101 h] | 52,101 | PRO | PR | P | ANSA.000 | 00 | P-SE | 034 |  |  |
| A3340 | PSE-035 - Rental of generators |  | 45d | 2023-03-13 | 2023-05-15 | A5730 SF | 624d |  |  | Recurso Ponderador [52101 h] | 52,101 | PRO | PR | P | ANSA.000 | 00 | P-SE | 035 |  |  |
| A3350 | PSE-036 - Compressor and Light Tower Rental |  | 45d | 2023-03-13 | 2023-05-15 | A5730 SF | 624d |  |  | Recurso Ponderador [52101 h] | 52,101 | PRO | PR | P | ANSA.000 | 00 | P-SE | 036 |  |  |
| A3360 | PSE-037 - Tent Rental |  | 45d | 2023-03-13 | 2023-05-15 | A5730 SF | 624d |  |  | Recurso Ponderador [52101 h] | 52,101 | PRO | PR | P | ANSA.000 | 00 | P-SE | 037 |  |  |
| A3780 | PSE-053 - Rental of Air Compressor with Drying System Instrument |  | 45d | 2023-03-13 | 2023-05-15 | A5730 SF | 624d |  |  | Recurso Ponderador [52101 h] | 52,101 | PRO | PR | P | ANSA.000 | 00 | P-SE | 053 |  |  |
| A3800 | PSE-055 - Lifting Platforms |  | 45d | 2023-03-13 | 2023-05-15 | A5730 SF | 624d |  |  | Recurso Ponderador [52101 h] | 52,101 | PRO | PR | P | ANSA.000 | 00 | P-SE | 055 |  |  |
| A3840 | PSE-059 - Line blowing |  | 45d | 2023-03-13 | 2023-05-15 | A5730 SF | 624d |  |  | Recurso Ponderador [52101 h] | 52,101 | PRO | PR | P | ANSA.000 | 00 | P-SE | 059 |  |  |
| A4000 | PSE-076 - Sanitization of EPIs |  | 45d | 2023-03-13 | 2023-05-15 | A5730 SF | 624d |  |  | Recurso Ponderador [52101 h] | 52,101 | PRO | PR | P | ANSA.000 | 00 | P-SE | 076 |  |  |
| A6090 | ANSA.013 - EN - U23- Boiler |  | 160d | 2023-03-13 | 2023-10-20 | A5900, A2240 | 55d | 28d |  | Recurso Ponderador [580313 h] | 580,313 | ENG | TR | G | ANSA.013 | 03 | G-EN | 001 |  |  |
| A1510 | Schedule (L4) - Detailed |  | 10d | 2023-03-15 | 2023-03-28 | A1890, A2450, A2370, A1710 FF+5d, A2150 | 624d | 0d |  |  |  | DG4 | PC | G | ANSA.000 | 00 | G-F3 | 001 |  |  |
| A2320 | PB contract cession | milestone | 0d | 2023-03-15 | 2023-03-15 | A1040 | 633d | 9d |  |  |  | DG4 | PC | G | ANSA.000 | 00 | G-F3 | 001 |  |  |
| A2190 | Boiler reparation Method. |  | 60d | 2023-03-16 | 2023-06-07 | A2240 FF+5d, A1040 | 102d | 0d |  |  |  | DG4 | TR | G | ANSA.000 | 00 | G-F3 | 001 | Mitsubishi |  |
| A5980 | ANSA.002 - EN - 05-Storage |  | 60d | 2023-03-16 | 2023-06-07 | A5830, A1040 | 318d | 0d |  | Recurso Ponderador [98051 h] | 98,051 | ENG | TR | G | ANSA.002 | 02 | G-EN | 001 |  |  |
| A6050 | ANSA.009 - EN - Pipe Rack |  | 80d | 2023-03-16 | 2023-07-05 | A5840, A1040 | 346d | 0d |  | Recurso Ponderador [290157 h] | 290,157 | ENG | TR | G | ANSA.009 | 04 | G-EN | 001 |  |  |
| A6060 | ANSA.010 - EN - U21-Sulfur Recovery and U-26-Flare |  | 80d | 2023-03-16 | 2023-07-05 | A5810, A1040 | 298d | 0d |  | Recurso Ponderador [362696 h] | 362,696 | ENG | TR | G | ANSA.010 | 02 | G-EN | 001 |  |  |
| A6140 | ANSA.018 - EN - Belt Conveyors |  | 40d | 2023-03-16 | 2023-05-10 | A1040 | 296d | 0d |  | Recurso Ponderador [217618 h] | 217,618 | ENG | TR | G | ANSA.018 | 01 | G-EN | 001 |  |  |
| A6160 | ANSA.020 - EN - U24B - Ammonia Loading + Piping |  | 40d | 2023-03-16 | 2023-05-10 | A1040 | 341d | 0d |  | Recurso Ponderador [435235 h] | 435,235 | ENG | TR | G | ANSA.020 | 04 | G-EN | 001 |  |  |
| A6170 | ANSA.021 - EN - U-69-Arla |  | 40d | 2023-03-16 | 2023-05-10 | A1040 | 281d | 0d |  | Recurso Ponderador [435235 h] | 435,235 | ENG | TR | G | ANSA.021 | 04 | G-EN | 001 |  |  |
| A6190 | ANSA.023 - EN - Buildings |  | 40d | 2023-03-16 | 2023-05-10 | A1040 | 276d | 0d |  | Recurso Ponderador [362696 h] | 362,696 | ENG | TR | G | ANSA.023 | 01 | G-EN | 001 |  |  |
| A6370 | First Execution Mobilization |  | 40d | 2023-03-16 | 2023-05-10 | A1040 | 177d | 2d |  |  |  | GEN | TA | G | ANSA.000 | 00 | G-ML | 001 |  |  |
| A6540 | ANSA.002 - DNAPL Study |  | 120d | 2023-03-16 | 2023-08-30 | A1040 | 546d |  |  | Recurso Ponderador [196102 h] | 196,102 | ENG | TA | G | ANSA.002 | 02 | G-EN | 001 |  |  |
| A6990 | Civil - Descriptive Memorial | milestone | 0d | 2023-03-16 | 2023-03-16 |  | 665d |  | finish on or after 2023-03-16 |  |  | DG4 | TR | G | ANSA.000 | 00 | G-F2 | 001 | Lurgi | OK |
| A6970 | Piping - Piping Plants - Area 01 | milestone | 0d | 2023-03-20 | 2023-03-20 |  | 663d |  | finish on or after 2023-03-20 |  |  | DG4 | TR | G | ANSA.000 | 00 | G-F2 | 001 | Lurgi | OK |
| A3020 | PPW-003 - NH3 Steam Turbine, colector |  | 80d | 2023-03-27 | 2023-07-17 | A4680 SF | 579d |  |  | Recurso Ponderador [52101 h] | 52,101 | PRO | PR | P | ANSA.000 | 00 | P-PW | 003 |  |  |
| A3640 | PPW-019 - Area 11 - Gasifier - Retractory Supply + Installation |  | 80d | 2023-03-27 | 2023-07-14 | A5990 SS+20d | 206d | 0d |  |  |  | PRO | PR | P | ANSA.000 | 00 | P-PW | 019 |  |  |
| A2300 | PEP (including TA premises, contracting plan, YPS, training, hiring plan,etc.) |  | 15d | 2023-03-28 | 2023-04-17 | A1170, A1120, A2280 | 625d | 1d |  |  |  | DG4 | PC | G | ANSA.000 | 00 | G-F3 | 001 |  |  |
| A1520 | CAPEX (+/- 20%) - Class 3 |  | 15d | 2023-03-29 | 2023-04-18 | A1510, A1670, A1440, A1330, A2290, A1710 FF+5d, A1590 FF, A2230, A2150, A2320, A2350, A2440, A1050, A1570 | 624d | 0d |  |  |  | DG4 | PC | G | ANSA.000 | 00 | G-F3 | 001 |  |  |
| A1590 | Risk assessment (CRA/SRA) |  | 5d | 2023-03-29 | 2023-04-04 | A1580, A1510 | 634d | 10d |  |  |  | DG4 | PC | G | ANSA.000 | 00 | G-F3 | 001 |  |  |
| A5520 | Scope review meeting no 3 | milestone | 0d | 2023-03-31 | 2023-03-31 | A5510 FS+18d | 453d | 0d |  |  |  | CON | TA | G | ANSA.000 | 00 | G-ML | 001 |  |  |
| A6080 | ANSA.012 - EN - U28-Demin Water |  | 150d | 2023-04-04 | 2023-10-30 | A5820, A4410 SS+40d | 103d | 0d |  | Recurso Ponderador [652853 h] | 652,853 | ENG | TR | G | ANSA.012 | 03 | G-EN | 001 | DemiWater |  |
| A6030 | ANSA.007 - EN - U16-LNW |  | 140d | 2023-04-05 | 2023-10-17 | A5940 | 190d | 0d |  | Recurso Ponderador [725392 h] | 725,392 | ENG | TR | G | ANSA.007 | 03 | G-EN | 001 |  |  |
| A3850 | PSE-060 - Arla certification |  | 70d | 2023-04-06 | 2023-07-13 | A4840 SF | 581d |  |  | Recurso Ponderador [52101 h] | 52,101 | PRO | PR | P | ANSA.000 | 00 | P-SE | 060 |  |  |
| A5530 | Develop cost estimate | milestone | 0d | 2023-04-10 | 2023-04-10 | A5520 FS+6d | 453d | 0d |  |  |  | CON | TA | G | ANSA.000 | 00 | G-ML | 001 |  |  |
| A3540 | PPM-001 - Transformation - Piping Material |  | 45d | 2023-04-13 | 2023-06-14 | A6470 SS+60d | 27d | 0d |  | Recurso Ponderador [52101 h] | 52,101 | PRO | PR | P | ANSA.000 | 00 | P-PM | 001 |  |  |
| A3660 | PPW-021 - Transformation - Electrical / Instrumentation Material |  | 45d | 2023-04-13 | 2023-06-14 | A6470 SS+60d | 27d | 0d |  | Recurso Ponderador [52101 h] | 52,101 | PRO | PR | P | ANSA.000 | 00 | P-PW | 021 |  |  |
| A3670 | PPW-022 - Transformation - Steel Structure |  | 45d | 2023-04-13 | 2023-06-14 | A6470 SS+60d | 27d | 0d |  | Recurso Ponderador [52101 h] | 52,101 | PRO | PR | P | ANSA.000 | 00 | P-PW | 022 |  |  |
| A4090 | ANSA.019 - Civil Contractor |  | 70d | 2023-04-13 | 2023-07-19 | A6150 | 236d | 0d |  | Recurso Ponderador [21322034 h] | 21,322,034 | SUP | PR | G | ANSA.019 | 01 | G-SF | 001 |  |  |
| A6320 | Material Supply start date | milestone | 0d | 2023-04-13 | 2023-04-13 |  | 189d | 0d | start on or after 2023-04-13 |  |  | GEN | PR | G | ANSA.000 | 00 | G-ML | 001 |  |  |
| A6340 | Material Supply | level of effort | 285d | 2023-04-13 | 2024-05-15 | A4090 SS, A4800 SS, A6270 SS, A4160 SS, A6280 SS, A4190 SS, A4490 SS, A6290 SS, A6300 SS, A4520 SS, A4560 SS, A4220 SS, A4600 SS, A6310 SS, A4460 SS, A4640 SS, A4680 SS, A4720 SS, A4760 SS, A4050 SS, A4840 SS, A4880 SS, A4130 SS, A4920 SS, A4960 SS, A4990 SS, A4090 FF, A4800 FF, A6270 FF, A4160 FF, A6280 FF, A4190 FF, A4490 FF, A6290 FF, A6300 FF, A4520 FF, A4560 FF, A4220 FF, A4600 FF, A6310 FF, A4460 FF, A4640 FF, A4680 FF, A4720 FF, A4760 FF, A4050 FF, A4840 FF, A4880 FF, A4130 FF, A4920 FF, A4960 FF, A4990 FF | 361d | 0d |  |  |  | GEN | PR | G | ANSA.000 | 00 | G-ML | 001 |  |  |
| A4920 | ANSA.024 - First Supply |  | 80d | 2023-04-17 | 2023-08-07 | A4940 SF | 564d |  |  | Recurso Ponderador [8528814 h] | 8,528,814 | SUP | PR | G | ANSA.024 | 04 | G-SF | 001 |  |  |
| A1460 | Business Case |  | 10d | 2023-04-19 | 2023-05-02 | A1520, A1340, A2300 | 624d | 0d |  |  |  | DG4 | PC | G | ANSA.000 | 00 | G-F3 | 001 |  |  |
| A3050 | PPW-006 - Cooling Tower |  | 70d | 2023-04-19 | 2023-07-25 | A6100 | 218d | 0d |  | Recurso Ponderador [52101 h] | 52,101 | PRO | PR | P | ANSA.000 | 00 | P-PW | 006 |  |  |
| A3060 | PPM-007 - Cooling Tower Piping |  | 45d | 2023-04-19 | 2023-06-20 | A6100 | 243d | 25d |  | Recurso Ponderador [52101 h] | 52,101 | PRO | PR | P | ANSA.000 | 00 | P-PM | 007 |  |  |
| A4720 | ANSA.016 - First Supply |  | 240d | 2023-04-20 | 2024-03-20 | A6120 | 158d | 0d |  | Recurso Ponderador [51172881 h] | 51,172,881 | SUP | PR | G | ANSA.016 | 04 | G-SF | 001 |  |  |
| A4320 | ANSA.006 - Supply - Vendor |  | 200d | 2023-04-26 | 2024-01-30 | A6020 SS+40d | 277d | 0d |  | Recurso Ponderador [4500000 h] | 4,500,000 | SUP | PR | G | ANSA.006 | 03 | G-SF | 001 |  |  |
| A6040 | ANSA.008 - EN - U93-Control Room |  | 100d | 2023-04-26 | 2023-09-12 | A5960 FS+15d | 257d | 0d |  | Recurso Ponderador [362696 h] | 362,696 | ENG | TR | G | ANSA.008 | 04 | G-EN | 001 |  |  |
| A6070 | ANSA.011 - EN - U24A-Ammonia Tank |  | 60d | 2023-04-26 | 2023-07-18 | A5960 FS+15d | 177d | 0d |  | Recurso Ponderador [435235 h] | 435,235 | ENG | TR | G | ANSA.011 | 04 | G-EN | 001 |  |  |
| A6130 | ANSA.017 - EN - U33C-Urea Tower |  | 60d | 2023-04-26 | 2023-07-18 | A5960 FS+15d | 285d | 0d |  | Recurso Ponderador [435235 h] | 435,235 | ENG | TR | G | ANSA.017 | 04 | G-EN | 001 |  |  |
| A6210 | ANSA.025 - EN - Environmental |  | 120d | 2023-04-26 | 2023-10-10 | A5960 FS+15d | 247d | 0d |  | Recurso Ponderador [435235 h] | 435,235 | ENG | TR | G | ANSA.025 | 04 | G-EN | 001 |  |  |
| A6220 | ANSA.026 - EN - Logistics |  | 60d | 2023-04-26 | 2023-07-18 | A5960 FS+15d | 437d | 216d |  | Recurso Ponderador [217618 h] | 217,618 | ENG | TR | G | ANSA.026 | 04 | G-EN | 001 |  |  |
| A6850 | Celiga contract update - technical proposal | milestone | 0d | 2023-04-28 | 2023-04-28 | A6840 FS+43d | 589d | 0d |  |  |  | DG4 | CO | G | ANSA.000 | 00 | G-F3 | 001 |  |  |
| A1470 | DG4 Memo |  | 8d | 2023-05-03 | 2023-05-12 | A1460, A1350, A1280, A1680, A1900 | 624d | 0d |  |  |  | DG4 | GE | G | ANSA.000 | 00 | G-F3 | 001 |  |  |
| A4050 | ANSA.018 - First Supply |  | 80d | 2023-05-11 | 2023-08-30 | A6140 | 546d |  |  | Recurso Ponderador [15351864 h] | 15,351,864 | SUP | PR | G | ANSA.018 | 01 | G-SF | 001 |  |  |
| A4130 | ANSA.023 - First Supply |  | 40d | 2023-05-11 | 2023-07-05 | A6190 | 586d | 0d |  | Recurso Ponderador [35821017 h] | 35,821,017 | SUP | PR | G | ANSA.023 | 01 | G-SF | 001 |  |  |
| A1480 | DG4 | milestone | 0d | 2023-05-12 | 2023-05-12 | A1470 | 624d | 0d |  |  |  | DG4 | GE | G | ANSA.000 | 00 | G-F3 | 001 |  |  |
| A4690 | ANSA.015 - Civil |  | 60d | 2023-05-15 | 2023-08-04 | A6110, A6370 | 195d | 10d |  | Recurso Ponderador [4314557 h]; Recurso Homem Hora [10080 h] | 4,314,557 | CON | TA | A | ANSA.015 | 04 | A-CB | 001 |  |  |
| A5730 | TA Maintenance start date | milestone | 0d | 2023-05-15 | 2023-05-15 |  | 484d | 0d | start on or after 2023-05-15 |  |  | GEN | TA | G | ANSA.000 | 00 | G-ML | 001 |  |  |
| A6330 | TA Maintenance | level of effort | 327d | 2023-05-15 | 2024-08-13 | A4170 SS, A4200 SS, A4500 SS, A4540 SS, A4530 SS, A4570 SS, A4580 SS, A4230 SS, A4610 SS, A4620 SS, A4660 SS, A4650 SS, A4690 SS, A4700 SS, A4730 SS, A4740 SS, A4770 SS, A4780 SS, A4060 SS, A4070 SS, A4100 SS, A4110 SS, A4810 SS, A4820 SS, A4850 SS, A4860 SS, A4890 SS, A4900 SS, A4140 SS, A4930 SS, A4940 SS, A5000 SS, A4170 FF, A4200 FF, A4500 FF, A4540 FF, A4530 FF, A4570 FF, A4580 FF, A4230 FF, A4610 FF, A4620 FF, A4660 FF, A4650 FF, A4690 FF, A4700 FF, A4730 FF, A4740 FF, A4770 FF, A4780 FF, A4060 FF, A4070 FF, A4100 FF, A4110 FF, A4810 FF, A4820 FF, A4850 FF, A4860 FF, A4890 FF, A4900 FF, A4140 FF, A4930 FF, A4940 FF, A5000 FF, A6580 SS, A6580 FF, A6590 SS, A6590 FF, A6600 SS, A6600 FF, A6610 SS, A6610 FF | 177d | 0d |  |  |  | GEN | TA | G | ANSA.000 | 00 | G-ML | 001 |  |  |
| A6480 | Field Engineering | level of effort | 430d | 2023-05-15 | 2025-01-03 | A5720 SS, A5730 SS, A6240 FF | 74d | 0d |  |  |  | GEN | TR | G | ANSA.000 | 00 | G-ML | 001 |  |  |
| A4760 | ANSA.017 - First Supply |  | 200d | 2023-05-18 | 2024-02-21 | A3030, A3040, A3170, A3520 | 189d | 0d |  | Recurso Ponderador [33262373 h] | 33,262,373 | SUP | PR | G | ANSA.017 | 04 | G-SF | 001 |  |  |

Notes:
- A3640: Assumptions: Especificação técnica para compra dos refratários será emitida após 20 / dias de início da engenharia detalhada desta CWA.
- A4720: Assumptions: A duração de referência de mercado para a aquisição das bombas de amônia é de / 240 dias úteis. / Necessário iniciar o processo de confirmação para aquisição das / bombas.
- A6040: Assumptions: A lista de materiais deve ser emitida até 10/08/23 para viabilizar a etapa / de suprimentos e fornecimento de forma a atender a construção.
- A1470: Assumptions: Duração considera o período de validações com todos os / aprovadores.

| ID | Activity | Type | Duration | Start | Finish | Predecessors | Total float | Free float | Constraint | Resources | Cost | Yara ANSA - Project Phase | Yara ANSA - Workstream | Yara ANSA - Disciplines | Yara ANSA - CWA | Yara ANSA - Workface | Yara ANSA - Subisciplines | Yara ANSA - Sequencial | Yara ANSA - Transformation |
| --- | --- | --- | --- | --- | --- | --- | --- | --- | --- | --- | --- | --- | --- | --- | --- | --- | --- | --- | --- |
| A4520 | ANSA.008 - First Supply - Others |  | 80d | 2023-05-24 | 2023-09-13 | A4540 SF | 537d | 0d |  | Recurso Ponderador [11087458 h] | 11,087,458 | SUP | PR | G | ANSA.008 | 04 | G-SF | 001 |  |
| A2060 | TA Scope Freeze |  | 70d | 2023-05-26 | 2023-08-31 | A2050, A2140, A1960, A2010 FF, A5530 FS+34d | 453d | 0d |  |  |  | CON | TA | G | ANSA.000 | 00 | G-ML | 001 |  |
| A5540 | Integrated Planning completed 75% | milestone | 0d | 2023-05-26 | 2023-05-26 | A2060 SS | 453d | 0d |  |  |  | CON | TA | G | ANSA.000 | 00 | G-ML | 001 |  |
| A5550 | Engineering packages issued for Construction (100%) | milestone | 0d | 2023-05-26 | 2023-05-26 | A5540 SS | 453d | 0d |  |  |  | CON | TA | G | ANSA.000 | 00 | G-ML | 001 |  |
| A4490 | ANSA.005 - First Supply |  | 80d | 2023-06-05 | 2023-09-25 | A4500 SF | 529d |  |  | Recurso Ponderador [127932203 h] | 127,932,203 | SUP | PR | G | ANSA.005 | 04 | G-SF | 001 |  |
| A3000 | PPW-001 - Boiler |  | 70d | 2023-06-08 | 2023-09-13 | A2240, A6090 SS+20d, A2190 | 102d | 0d |  | Recurso Ponderador [52101 h] | 52,101 | PRO | PR | P | ANSA.000 | 00 | P-PW | 001 |  |
| A3820 | PSE-057 - Support commissioning activities |  | 70d | 2023-06-12 | 2023-09-18 | A6360 SF | 534d |  |  | Recurso Ponderador [52101 h] | 52,101 | PRO | PR | P | ANSA.000 | 00 | P-SE | 057 |  |
| A4460 | ANSA.013 - First Supply - Building |  | 120d | 2023-06-15 | 2023-11-29 | A3540, A3660, A3670, A6090 SS+40d | 27d | 0d |  | Recurso Ponderador [48500000 h] | 48,500,000 | SUP | PR | G | ANSA.013 | 03 | G-SF | 001 |  |
| A6270 | ANSA.001 - First Supply - Others |  | 80d | 2023-06-15 | 2023-10-04 | A3540, A3660, A3670 | 208d |  |  | Recurso Ponderador |  | SUP | PR | G | ANSA.001 | 03 | G-SF | 001 |  |
| A6300 | ANSA.007 - First Supply - Others |  | 80d | 2023-06-15 | 2023-10-04 | A3540, A3660, A3670 | 269d | 188d |  | Recurso Ponderador |  | SUP | PR | G | ANSA.007 | 03 | G-SF | 001 |  |
| A6310 | ANSA.012 - First Supply - Others |  | 80d | 2023-06-15 | 2023-10-04 | A3540, A3660, A3670 | 131d | 28d |  | Recurso Ponderador |  | SUP | PR | G | ANSA.012 | 03 | G-SF | 001 | DemiWater |
| A6460 | ANSA.003 - First Supply - Others |  | 80d | 2023-06-15 | 2023-10-04 | A3540, A3660, A3670 | 128d | 127d |  | Recurso Ponderador |  | SUP | PR | G | ANSA.003 | 03 | G-SF | 001 |  |
| A5560 | Turnaround Logistics plan first issue | milestone | 0d | 2023-06-26 | 2023-06-26 | A5550 FS+21d | 453d | 0d |  |  |  | CON | TA | G | ANSA.000 | 00 | G-ML | 001 |  |
| A5570 | Critical path analysis | milestone | 0d | 2023-06-26 | 2023-06-26 | A5560 SS | 453d | 0d |  |  |  | CON | TA | G | ANSA.000 | 00 | G-ML | 001 |  |
| A6380 | ANSA.027 - First Supply |  | 60d | 2023-06-28 | 2023-09-19 | A6230 FS+45d | 103d | 0d |  |  |  | SUP | PR | G | ANSA.027 | 04 | G-SF | 001 |  |
| A4880 | ANSA.022 - First Supply |  | 120d | 2023-06-29 | 2023-12-13 | A6180 FS+45d | 127d | 0d |  | Recurso Ponderador [10234576 h] | 10,234,576 | SUP | PR | G | ANSA.022 | 04 | G-SF | 001 |  |
| A6860 | Celiga contract update - commercial closing | milestone | 0d | 2023-06-30 | 2023-06-30 | A6850 FS+45d | 589d |  |  |  |  | DG4 | CO | G | ANSA.000 | 00 | G-F3 | 001 |  |
| A4570 | ANSA.009 - Civil |  | 40d | 2023-07-06 | 2023-08-30 | A6050, A6370 | 426d | 249d |  | Recurso Ponderador [8629114 h]; Recurso Homem Hora [20160 h] | 8,629,114 | CON | TA | C | ANSA.009 | 04 | C-EC | 001 |  |
| A4580 | ANSA.009 - Electromechanical - Routine |  | 120d | 2023-07-06 | 2023-12-20 | A6050, A6370 | 346d | 169d |  | Recurso Ponderador [7016490 h]; Recurso Homem Hora [20160 h] | 7,016,490 | CON | TA | M | ANSA.009 | 04 | M-RF | 001 |  |
| A5580 | Conduct TAP(*) 2 review | milestone | 0d | 2023-07-11 | 2023-07-11 | A5570 FS+11d | 453d | 0d |  |  |  | CON | TA | G | ANSA.000 | 00 | G-ML | 001 |  |
| A4560 | ANSA.009 - First Supply |  | 45d | 2023-07-12 | 2023-09-13 | A6510 SF | 537d |  |  | Recurso Ponderador [28997966 h] | 28,997,966 | SUP | PR | G | ANSA.009 | 04 | G-SF | 001 |  |
| A4800 | ANSA.020 - First Supply |  | 40d | 2023-07-13 | 2023-09-06 | A6160 FS+45d | 341d | 0d |  | Recurso Ponderador [10234576 h] | 10,234,576 | SUP | PR | G | ANSA.020 | 04 | G-SF | 001 |  |
| A4840 | ANSA.021 - First Supply |  | 80d | 2023-07-13 | 2023-11-01 | A6170 FS+45d | 281d | 0d |  | Recurso Ponderador [2132203 h] | 2,132,203 | SUP | PR | G | ANSA.021 | 04 | G-SF | 001 |  |
| A3730 | PPM-002 - Commissioning - Mat Purchase (Detalhar grandes blocos de compras) |  | 45d | 2023-07-17 | 2023-09-18 | A6360 SF | 534d |  |  | Recurso Ponderador [52101 h] | 52,101 | PRO | PR | P | ANSA.000 | 00 | P-PM | 002 |  |
| A3740 | PPM-003 - Logistic - Loading of Liquid product, Bagging, Solid Bulk, Material Handling |  | 45d | 2023-07-17 | 2023-09-18 | A6360 SF | 534d |  |  | Recurso Ponderador [52101 h] | 52,101 | PRO | PR | P | ANSA.000 | 00 | P-PM | 003 |  |
| A3750 | PPM-004 - Chemicals dosing for water (cooling water and boiler feed water) |  | 45d | 2023-07-17 | 2023-09-18 | A6360 SF | 534d |  |  | Recurso Ponderador [52101 h] | 52,101 | PRO | PR | P | ANSA.000 | 00 | P-PM | 004 |  |
| A4010 | PPI-041 - Training (Mgmt / Key Employees) |  | 45d | 2023-07-17 | 2023-09-18 | A6360 SF | 534d |  |  | Recurso Ponderador [52101 h] | 52,101 | PRO | PR | P | ANSA.000 | 00 | P-PI | 041 |  |
| A4020 | PPI-042 - Training (Field / Operators) |  | 45d | 2023-07-17 | 2023-09-18 | A6360 SF | 534d |  |  | Recurso Ponderador [52101 h] | 52,101 | PRO | PR | P | ANSA.000 | 00 | P-PI | 042 |  |
| A4030 | PPI-043 - Training (Others) |  | 45d | 2023-07-17 | 2023-09-18 | A6360 SF | 534d |  |  | Recurso Ponderador [52101 h] | 52,101 | PRO | PR | P | ANSA.000 | 00 | P-PI | 043 |  |
| A4680 | ANSA.015 - First Supply |  | 60d | 2023-07-17 | 2023-10-06 | A6110 FS+45d | 519d | 0d |  | Recurso Ponderador [35821017 h] | 35,821,017 | SUP | PR | G | ANSA.015 | 04 | G-SF | 001 |  |
| A6280 | ANSA.003 - First Supply - Refractory |  | 80d | 2023-07-17 | 2023-11-03 | A3640 | 206d | 205d |  | Recurso Ponderador |  | SUP | PR | G | ANSA.003 | 03 | G-SF | 001 |  |
| A4770 | ANSA.017 - Civil |  | 60d | 2023-07-19 | 2023-10-10 | A6370, A6130 | 285d | 96d |  | Recurso Ponderador [8629114 h]; Recurso Homem Hora [20160 h] | 8,629,114 | CON | TA | C | ANSA.017 | 04 | C-EC | 001 |  |
| A6290 | ANSA.006 - First Supply - Others |  | 80d | 2023-07-19 | 2023-11-07 | A3540, A3660, A3670, A6020 FF+20d | 497d |  |  | Recurso Ponderador |  | SUP | PR | G | ANSA.006 | 03 | G-SF | 001 |  |
| A4100 | ANSA.019 - Civil |  | 160d | 2023-07-20 | 2024-02-28 | A6150, A6370, A4090 | 236d | 0d |  | Recurso Ponderador [15100950 h]; Recurso Homem Hora [35280 h] | 15,100,950 | CON | TA | A | ANSA.019 | 01 | A-CB | 001 |  |
| A4640 | ANSA.014 - First Supply |  | 50d | 2023-07-26 | 2023-10-03 | A3060, A3050 | 522d |  |  | Recurso Ponderador [30703729 h] | 30,703,729 | SUP | PR | G | ANSA.014 | 04 | G-SF | 001 |  |
| A4650 | ANSA.014 - Civil |  | 120d | 2023-07-26 | 2024-01-09 | A6100, A6370, A3050, A3060 | 218d | 0d |  | Recurso Ponderador [8629115 h]; Recurso Homem Hora [30240 h] | 8,629,115 | CON | TA | C | ANSA.014 | 04 | C-EC | 001 |  |
| A4660 | ANSA.014 - Electromechanical - UG Cooling Water Repair |  | 120d | 2023-07-26 | 2024-01-09 | A6100, A6370, A3050, A3060 | 218d | 115d |  | Recurso Ponderador [8629114 h]; Recurso Homem Hora [30240 h] | 8,629,114 | CON | TA | M | ANSA.014 | 04 | M-RF | 001 |  |
| A5590 | Contract award main TA contractors | milestone | 0d | 2023-07-31 | 2023-07-31 | A5580 FS+14d | 453d | 0d |  |  |  | CON | TA | G | ANSA.000 | 00 | G-ML | 001 |  |
| A3070 | PPW-008 - Critical Equip / Spare Parts |  | 70d | 2023-08-07 | 2023-11-10 | A5730 FS+60d | 494d |  |  | Recurso Ponderador [52101 h] | 52,101 | PRO | PR | P | ANSA.000 | 00 | P-PW | 008 |  |
| A3230 | PSE-023 - Rack Elevator |  | 70d | 2023-08-07 | 2023-11-10 | A5730 FS+60d | 494d |  |  | Recurso Ponderador [52101 h] | 52,101 | PRO | PR | P | ANSA.000 | 00 | P-SE | 023 |  |
| A3240 | PSE-024 - Hydroblasting and Autovacuum |  | 70d | 2023-08-07 | 2023-11-10 | A5730 FS+60d | 494d |  |  | Recurso Ponderador [52101 h] | 52,101 | PRO | PR | P | ANSA.000 | 00 | P-SE | 024 |  |
| A3250 | PSE-025 - HSB - High-speed balancing |  | 70d | 2023-08-07 | 2023-11-10 | A5730 FS+60d | 494d |  |  | Recurso Ponderador [52101 h] | 52,101 | PRO | PR | P | ANSA.000 | 00 | P-SE | 025 |  |
| A3260 | PSE-026 - Thermal Insulation |  | 70d | 2023-08-07 | 2023-11-10 | A5730 FS+60d | 494d |  |  | Recurso Ponderador [52101 h] | 52,101 | PRO | PR | P | ANSA.000 | 00 | P-SE | 026 |  |
| A3270 | PSE-027 - Scaffolding Rental and Assembly |  | 70d | 2023-08-07 | 2023-11-10 | A5730 FS+60d | 494d |  |  | Recurso Ponderador [52101 h] | 52,101 | PRO | PR | P | ANSA.000 | 00 | P-SE | 027 |  |
| A3280 | PSE-029 - Vibration Measurement |  | 70d | 2023-08-07 | 2023-11-10 | A5730 FS+60d | 494d |  |  | Recurso Ponderador [52101 h] | 52,101 | PRO | PR | P | ANSA.000 | 00 | P-SE | 029 |  |
| A3300 | PSE-031 - Dynamic - Small Machines |  | 70d | 2023-08-07 | 2023-11-10 | A5730 FS+60d | 494d |  |  | Recurso Ponderador [52101 h] | 52,101 | PRO | PR | P | ANSA.000 | 00 | P-SE | 031 |  |
| A3320 | PSE-033 - Gamagraphy |  | 70d | 2023-08-07 | 2023-11-10 | A5730 FS+60d | 494d |  |  | Recurso Ponderador [52101 h] | 52,101 | PRO | PR | P | ANSA.000 | 00 | P-SE | 033 |  |
| A3370 | PSE-038 - Inspection Support |  | 70d | 2023-08-07 | 2023-11-10 | A5730 FS+60d | 494d |  |  | Recurso Ponderador [52101 h] | 52,101 | PRO | PR | P | ANSA.000 | 00 | P-SE | 038 |  |
| A3380 | PSE-039 - Passivation and Degreasing Service |  | 70d | 2023-08-07 | 2023-11-10 | A5730 FS+60d | 494d |  |  | Recurso Ponderador [52101 h] | 52,101 | PRO | PR | P | ANSA.000 | 00 | P-SE | 039 |  |
| A3390 | PSE-040 - Reducers |  | 70d | 2023-08-07 | 2023-11-10 | A5730 FS+60d | 494d |  |  | Recurso Ponderador [52101 h] | 52,101 | PRO | PR | P | ANSA.000 | 00 | P-SE | 040 |  |
| A3400 | PSE-041 - Refractory replacement |  | 70d | 2023-08-07 | 2023-11-10 | A5730 FS+60d | 494d |  |  | Recurso Ponderador [52101 h] | 52,101 | PRO | PR | P | ANSA.000 | 00 | P-SE | 041 |  |
| A3410 | PSE-042 - Catalyst Replacement |  | 70d | 2023-08-07 | 2023-11-10 | A5730 FS+60d | 494d |  |  | Recurso Ponderador [52101 h] | 52,101 | PRO | PR | P | ANSA.000 | 00 | P-SE | 042 |  |
| A3420 | PSE-043 - Topography |  | 70d | 2023-08-07 | 2023-11-10 | A5730 FS+60d | 494d |  |  | Recurso Ponderador [52101 h] | 52,101 | PRO | PR | P | ANSA.000 | 00 | P-SE | 043 |  |
| A3430 | PSE-044 - Heat Treatment Service |  | 80d | 2023-08-07 | 2023-11-24 | A5730 FS+60d | 484d |  |  | Recurso Ponderador [52101 h] | 52,101 | PRO | PR | P | ANSA.000 | 00 | P-SE | 044 |  |
| A3460 | PSE-047 - Alternative Machines |  | 70d | 2023-08-07 | 2023-11-10 | A5730 FS+60d | 494d |  |  | Recurso Ponderador [52101 h] | 52,101 | PRO | PR | P | ANSA.000 | 00 | P-SE | 047 |  |
| A3480 | PSE-049 - Special Testing |  | 70d | 2023-08-07 | 2023-11-10 | A5730 FS+60d | 494d |  |  | Recurso Ponderador [52101 h] | 52,101 | PRO | PR | P | ANSA.000 | 00 | P-SE | 049 |  |
| A3490 | PSE-050 - Turbomachinery |  | 70d | 2023-08-07 | 2023-11-10 | A5730 FS+60d | 494d |  |  | Recurso Ponderador [52101 h] | 52,101 | PRO | PR | P | ANSA.000 | 00 | P-SE | 050 |  |
| A3860 | PSE-061 - Cleaning Disinfection Service Water Tanks |  | 70d | 2023-08-07 | 2023-11-10 | A5730 FS+60d | 494d |  |  | Recurso Ponderador [52101 h] | 52,101 | PRO | PR | P | ANSA.000 | 00 | P-SE | 061 |  |
| A3960 | PSE-072 - SPDA Study |  | 70d | 2023-08-07 | 2023-11-10 | A5730 FS+60d | 494d |  |  | Recurso Ponderador [52101 h] | 52,101 | PRO | PR | P | ANSA.000 | 00 | P-SE | 072 |  |
| A4930 | ANSA.024 - Civil |  | 100d | 2023-08-07 | 2023-12-22 | A6200, A6370 | 125d | 22d |  | Recurso Ponderador [7190929 h]; Recurso Homem Hora [16800 h] | 7,190,929 | CON | TA | A | ANSA.024 | 04 | A-AA | 001 |  |
| A4940 | ANSA.024 - Electromechanical |  | 100d | 2023-08-07 | 2023-12-22 | A6200, A6370 | 125d | 0d |  | Recurso Ponderador [8082721 h]; Recurso Homem Hora [16800 h] | 8,082,721 | CON | TA | E | ANSA.024 | 04 | E-RF | 001 |  |
| A3010 | PPW-002 - NH3 Storage, Skirt shere |  | 80d | 2023-08-16 | 2023-12-06 | A4600 SF | 477d |  |  | Recurso Ponderador [52101 h] | 52,101 | PRO | PR | P | ANSA.000 | 00 | P-PW | 002 |  |
| A4060 | ANSA.018 - Civil |  | 40d | 2023-08-17 | 2023-10-11 | A6140 FS+70d, A6370 | 296d | 0d |  | Recurso Ponderador [12943672 h]; Recurso Homem Hora [30240 h] | 12,943,672 | CON | TA | A | ANSA.018 | 01 | A-CB | 001 |  |
| A4070 | ANSA.018 - Electromechanical |  | 140d | 2023-08-17 | 2024-02-28 | A6370, A4060 SS | 296d | 119d |  | Recurso Ponderador [14548898 h]; Recurso Homem Hora [30240 h] | 14,548,898 | CON | TA | M | ANSA.018 | 01 | M-RF | 001 |  |
| A4140 | ANSA.023 - Civil |  | 160d | 2023-08-17 | 2024-03-27 | A6190 FS+70d, A6370 | 276d | 99d |  | Recurso Ponderador [30201901 h]; Recurso Homem Hora [70560 h] | 30,201,901 | CON | TA | A | ANSA.023 | 01 | A-AA | 001 |  |
| A4700 | ANSA.015 - Electromechanical |  | 120d | 2023-08-21 | 2024-02-02 | A6110 FS+70d, A4690, A6370 | 185d | 0d |  | Recurso Ponderador [29097797 h]; Recurso Homem Hora [60480 h] | 29,097,797 | CON | TA | M | ANSA.015 | 04 | M-RF | 001 |  |
| A4420 | ANSA.012 - Civil |  | 120d | 2023-08-22 | 2024-02-05 | A6080 SS+100d | 103d | 0d |  | Recurso Ponderador [15100950 h]; Recurso Homem Hora [35280 h] | 15,100,950 | CON | TR | C | ANSA.012 | 03 | C-FU | 001 | DemiWater |
| A5720 | Construction start date | milestone | 0d | 2023-08-22 | 2023-08-22 |  | 553d |  | start on or after 2023-08-22 |  |  | GEN | TR | G | ANSA.000 | 00 | G-ML | 001 |  |
| A6420 | Construction | level of effort | 359d | 2023-08-22 | 2025-01-03 | A4470 FF, A4430 FF, A4420 FF, A4390 FF, A4380 FF, A4350 FF, A4340 FF, A4330 FF, A4300 FF, A4260 FF, A4270 FF, A4470 SS, A4440 FF, A4430 SS, A4420 SS, A4390 SS, A4380 SS, A4350 SS, A4340 SS, A4330 SS, A4300 SS, A4260 SS, A4270 SS, A6490 SS, A6490 FF | 74d | 0d |  |  |  | GEN | TR | G | ANSA.000 | 00 | G-ML | 001 |  |
| A6390 | ANSA.027 - Electromechanical |  | 80d | 2023-08-23 | 2023-12-12 | A6230, A6370, A6380 SS+40d | 103d | 0d |  | Recurso Homem Hora |  | CON | TA | M | ANSA.027 | 04 | M-RF | 001 |  |

Notes:
- A4580: Assumptions: Eletromecânica / - Manutenção / e reparos de tubulação (c/ suportes) e estrutura metálica (avaliar / resultado da inspeção*). / Eletromecânica / - Manutenção das eletrocalhas – infra de elétrica.
- A4420: Assumptions: Contratação da construtora (Civil) precisa fechar antes do término da / engenharia detalhada (contratação com projeto básico). / Notes: Prazos para a execução da civil está bastante arrojado, necessário atuação / de prontidão junto à engenharia e suprimentos a fim de eviatar / desvios.

| ID | Activity | Type | Duration | Start | Finish | Predecessors | Total float | Free float | Constraint | Resources | Cost | Yara ANSA - Project Phase | Yara ANSA - Workstream | Yara ANSA - Disciplines | Yara ANSA - CWA | Yara ANSA - Workface | Yara ANSA - Subisciplines | Yara ANSA - Sequencial | Yara ANSA - Transformation |
| --- | --- | --- | --- | --- | --- | --- | --- | --- | --- | --- | --- | --- | --- | --- | --- | --- | --- | --- | --- |
| A6400 | ANSA.027 - Civil |  | 30d | 2023-08-23 | 2023-10-03 | A6230, A6370, A6390 SS | 522d |  |  | Recurso Homem Hora |  | CON | TA | M | ANSA.027 | 04 | M-RF | 001 |  |
| A3160 | PSE-009 - NH3 - Intern. Repairs and Insulation |  | 70d | 2023-08-30 | 2023-12-06 | A4600 SF | 477d |  |  | Recurso Ponderador [52101 h] | 52,101 | PRO | PR | P | ANSA.000 | 00 | P-SE | 009 |  |
| A4380 | ANSA.007 - Civil |  | 40d | 2023-08-30 | 2023-10-24 | A4370 SS+105d, A6030 SS+105d | 255d | 174d |  | Recurso Ponderador [2876371 h]; Recurso Homem Hora [6720 h] | 2,876,371 | CON | TR | C | ANSA.007 | 03 | C-FU | 001 |  |
| A6620 | Delivery of all necessary engineering information for contracting and procurement | milestone | 0d | 2023-08-30 | 2023-08-30 |  | 0d |  | finish on 2023-08-30 |  |  | GEN | TR | G | ANSA.000 | 00 | G-ML | 001 |  |
| A3120 | PSE-005 - ElectroMechanical Assembly - Contractor II (TA 2024) |  | 100d | 2023-08-31 | 2024-01-17 | A6620 | 446d |  |  | Recurso Ponderador [52101 h] | 52,101 | PRO | PR | P | ANSA.000 | 00 | P-SE | 005 |  |
| A3130 | PSE-006 - Civil Works - Contractor II (TA 2024) |  | 100d | 2023-08-31 | 2024-01-17 | A6620 | 446d |  |  | Recurso Ponderador [52101 h] | 52,101 | PRO | PR | P | ANSA.000 | 00 | P-SE | 006 |  |
| A4810 | ANSA.020 - Civil |  | 20d | 2023-09-07 | 2023-10-04 | A6160, A6370, A4800 | 401d | 224d |  | Recurso Ponderador [1385609 h]; Recurso Homem Hora [3360 h] | 1,385,609 | CON | TA | M | ANSA.020 | 04 | M-RF | 001 |  |
| A4820 | ANSA.020 - Electromechanical |  | 80d | 2023-09-07 | 2023-12-27 | A6160, A6370, A4800 | 341d | 164d |  | Recurso Ponderador [8313657 h]; Recurso Homem Hora [20160 h] | 8,313,657 | CON | TA | M | ANSA.020 | 04 | M-RF | 001 |  |
| A5600 | Turnaround safety plan first issue | milestone | 0d | 2023-09-11 | 2023-09-11 | A5590 FS+30d | 453d | 0d |  |  |  | CON | TA | G | ANSA.000 | 00 | G-ML | 001 |  |
| A4530 | ANSA.008 - Civil |  | 80d | 2023-09-13 | 2024-01-02 | A6040, A6370 | 257d | 0d |  | Recurso Ponderador [9348207 h]; Recurso Homem Hora [21840 h] | 9,348,207 | CON | TA | A | ANSA.008 | 04 | A-AA | 001 |  |
| A4540 | ANSA.008 - Electromechanical |  | 160d | 2023-09-13 | 2024-04-23 | A6040, A6370, A4530 SS | 257d | 0d |  | Recurso Ponderador [10507538 h]; Recurso Homem Hora [21840 h] | 10,507,538 | CON | TA | E | ANSA.008 | 04 | E-RF | 001 |  |
| A4610 | ANSA.011 - Civil |  | 40d | 2023-09-13 | 2023-11-07 | A6070 FS+40d, A6370 | 177d | 0d |  | Recurso Ponderador [7190929 h]; Recurso Homem Hora [16800 h] | 7,190,929 | CON | TA | C | ANSA.011 | 04 | C-FU | 001 |  |
| A6510 | ANSA.009 - Electromechanical - Transformation |  | 140d | 2023-09-13 | 2024-03-26 | A6040 | 397d | 0d |  | Recurso Ponderador [20464762 h]; Recurso Homem Hora [58800 h] | 20,464,762 | CON | TA | M | ANSA.009 | 04 | M-RF | 001 |  |
| A6500 | ANSA.013 - First Supply - Equipment |  | 120d | 2023-09-14 | 2024-02-28 | A3000 | 102d | 75d |  | Recurso Ponderador [48500000 h] | 48,500,000 | SUP | PR | G | ANSA.013 | 03 | G-SF | 001 |  |
| A6570 | ANSA.002 - Electromechanical - Descommissioning |  | 40d | 2023-09-14 | 2023-11-08 | A5980 FS+70d | 496d |  |  | Recurso Ponderador [1616545 h]; Recurso Homem Hora [3360 h] | 1,616,545 | CON | TA | M | ANSA.002 | 02 | M-RF | 001 |  |
| A5020 | Low Pressure Nitrogen System (10 Bar) |  | 10d | 2023-09-18 | 2023-09-29 | A4700 SS+20d | 185d | 82d |  | Recurso Ponderador [1585756 h] | 1,585,756 | COM | CO | N | ANSA.000 | 05 | N-CQ | 001 |  |
| A6350 | Commissioning | level of effort | 432d | 2023-09-18 | 2025-05-13 | A5010 FF, A5020 FF, A5030 FF, A5040 FF, A5050 FF, A5060 FF, A5070 FF, A5080 FF, A5090 FF, A5100 FF, A5110 FF, A5120 FF, A5130 FF, A5140 FF, A5150 FF, A5160 FF, A5170 FF, A5180 FF, A5190 FF, A5200 FF, A5210 FF, A5220 FF, A5230 FF, A5240 FF, A5250 FF, A5260 FF, A5270 FF, A5280 FF, A5290 FF, A5300 FF, A5310 FF, A5320 FF, A5330 FF, A5340 FF, A5350 FF, A5360 FF, A5370 FF, A5380 FF, A5010 SS, A5020 SS, A5030 SS, A5040 SS, A5050 SS, A5060 SS, A5070 SS, A5080 SS, A5090 SS, A5100 SS, A5110 SS, A5120 SS, A5130 SS, A5140 SS, A5150 SS, A5160 SS, A5170 SS, A5180 SS, A5190 SS, A5200 SS, A5210 SS, A5220 SS, A5230 SS, A5240 SS, A5250 SS, A5260 SS, A5270 SS, A5280 SS, A5290 SS, A5300 SS, A5310 SS, A5320 SS, A5330 SS, A5340 SS, A5350 SS, A5360 SS, A5370 SS, A5380 SS | 102d | 0d |  |  |  | COM | CO | G | ANSA.000 | 00 | G-ML | 001 |  |
| A6360 | Commissioning start date | milestone | 0d | 2023-09-18 | 2023-09-18 |  | 534d | 0d | start on or after 2023-09-18 |  |  | COM | CO | G | ANSA.000 | 00 | G-ML | 001 |  |
| A4190 | ANSA.004 - First Supply |  | 30d | 2023-09-25 | 2023-11-03 | A6000 FS+45d | 131d | 0d |  | Recurso Ponderador [5117288 h] | 5,117,288 | SUP | PR | G | ANSA.004 | 02 | G-SF | 001 |  |
| A4500 | ANSA.005 - Electromechanical - Routine |  | 70d | 2023-09-25 | 2023-12-29 | A6010, A6370 | 170d | 0d |  | Recurso Ponderador [36372246 h]; Recurso Homem Hora [252000 h] | 36,372,246 | CON | TA | M | ANSA.005 | 04 | M-MT | 001 |  |
| A5610 | Start scheduling process | milestone | 0d | 2023-10-04 | 2023-10-04 | A5600 FS+17d | 453d | 0d |  |  |  | CON | TA | G | ANSA.000 | 00 | G-ML | 001 |  |
| A4730 | ANSA.016 - Civil |  | 60d | 2023-10-05 | 2023-12-27 | A6120, A4720 SS+120d, A6370 | 158d | 0d |  | Recurso Ponderador [16165443 h]; Recurso Homem Hora [50400 h] | 16,165,443 | CON | TA | M | ANSA.016 | 04 | M-RF | 001 |  |
| A4330 | ANSA.006 - Electromechanical |  | 20d | 2023-10-11 | 2023-11-07 | A6020 | 297d | 0d |  | Recurso Ponderador [323309 h]; Recurso Homem Hora [1680 h] | 323,309 | CON | TR | M | ANSA.006 | 03 | M-RF | 001 |  |
| A6560 | ANSA.010 - Electromechanical - Descommissioning |  | 40d | 2023-10-12 | 2023-12-06 | A6060 FS+70d | 476d |  |  | Recurso Ponderador [1616545 h]; Recurso Homem Hora [3360 h] | 1,616,545 | CON | TA | M | ANSA.010 | 02 | M-RF | 001 |  |
| A4890 | ANSA.022 - Civil |  | 40d | 2023-10-19 | 2023-12-13 | A6180, A4880 FF, A6370 | 147d | 44d |  | Recurso Ponderador [2876371 h]; Recurso Homem Hora [6720 h] | 2,876,371 | CON | TA | C | ANSA.022 | 04 | C-EC | 001 |  |
| A4900 | ANSA.022 - Electromechanical |  | 60d | 2023-10-19 | 2024-01-10 | A6180, A6370, A4880 FF+20d | 127d | 24d |  | Recurso Ponderador [6466177 h]; Recurso Homem Hora [13440 h] | 6,466,177 | CON | TA | M | ANSA.022 | 04 | M-RF | 001 |  |
| A2080 | TA Detailed Complete |  | 18d | 2023-10-30 | 2023-11-22 | A5610 FS+18d | 453d | 0d |  |  |  | CON | TA | G | ANSA.000 | 00 | G-ML | 001 |  |
| A5620 | Integrated Planning completed 100% | milestone | 0d | 2023-10-30 | 2023-10-30 | A2080 SS | 453d | 0d |  |  |  | CON | TA | G | ANSA.000 | 00 | G-ML | 001 |  |
| A4850 | ANSA.021 - Civil |  | 20d | 2023-11-02 | 2023-11-29 | A6170, A6370, A4840 | 361d | 184d |  | Recurso Ponderador [359546 h]; Recurso Homem Hora [840 h] | 359,546 | CON | TA | C | ANSA.021 | 04 | C-PI | 001 |  |
| A4860 | ANSA.021 - Electromechanical - Routine |  | 42d | 2023-11-02 | 2023-12-29 | A6170, A6370, A4840 | 281d | 0d |  | Recurso Ponderador [1131581 h]; Recurso Homem Hora [3360 h] | 1,131,581 | CON | TA | M | ANSA.021 | 04 | M-RF | 001 |  |
| A4200 | ANSA.004 - Electromechanical - Routine |  | 40d | 2023-11-06 | 2023-12-29 | A6000, A6370, A4190 | 131d | 0d |  | Recurso Ponderador [3394743 h]; Recurso Homem Hora [10080 h] | 3,394,743 | CON | TA | M | ANSA.004 | 02 | M-RF | 001 |  |
| A4340 | ANSA.006 - Civil |  | 40d | 2023-11-08 | 2024-01-02 | A4330, A6020 | 297d | 20d |  | Recurso Ponderador [1438186 h]; Recurso Homem Hora [3360 h] | 1,438,186 | CON | TR | C | ANSA.006 | 03 | C-FU | 001 |  |
| A6520 | ANSA.011 - Electromechanical - Tank Repair |  | 100d | 2023-11-08 | 2024-03-26 | A6070 FS+70d, A4610 | 177d | 0d |  | Recurso Ponderador [9699266 h]; Recurso Homem Hora [25200 h] | 9,699,266 | CON | TA | M | ANSA.011 | 04 | M-RF | 001 |  |
| A4430 | ANSA.012 - Electromechanical |  | 60d | 2023-11-14 | 2024-02-05 | A4420 FF, A6080, A6310 | 103d | 0d |  | Recurso Ponderador [3233089 h]; Recurso Homem Hora [6720 h] | 3,233,089 | CON | TR | M | ANSA.012 | 03 | M-RF | 001 | DemiWater |
| A5630 | Turnaround Logistics plan final issue | milestone | 0d | 2023-11-20 | 2023-11-20 | A5620 FS+15d | 453d | 0d |  |  |  | CON | TA | G | ANSA.000 | 00 | G-ML | 001 |  |
| A5640 | Schedule first review | milestone | 0d | 2023-11-20 | 2023-11-20 | A5630 SS | 453d | 0d |  |  |  | CON | TA | G | ANSA.000 | 00 | G-ML | 001 |  |
| A5650 | Define resource plan for execution phase | milestone | 0d | 2023-11-20 | 2023-11-20 | A5640 SS | 453d | 0d |  |  |  | CON | TA | G | ANSA.000 | 00 | G-ML | 001 |  |
| A4260 | ANSA.001 - Civil |  | 60d | 2023-11-27 | 2024-02-16 | A5970 | 111d |  |  | Recurso Ponderador [5752743 h]; Recurso Homem Hora [15120 h] | 5,752,743 | CON | TR | C | ANSA.001 | 03 | A-AA | 001 |  |
| A4470 | ANSA.013 - Electromechanical- Building |  | 160d | 2023-11-30 | 2024-07-10 | A6090 FF+100d, A4460 | 27d | 0d |  | Recurso Ponderador [5657905 h]; Recurso Homem Hora [11760 h] | 5,657,905 | CON | TR | M | ANSA.013 | 03 | M-RF | 001 |  |
| A4740 | ANSA.016 - Electromechanical - Routine |  | 22d | 2023-11-30 | 2023-12-29 | A6120, A6370, A4730 FF+2d | 158d | 0d |  | Recurso Ponderador [9699266 h]; Recurso Homem Hora [100800 h] | 9,699,266 | CON | TA | M | ANSA.016 | 04 | M-RF | 001 |  |
| A5660 | Schedule second review | milestone | 0d | 2023-12-04 | 2023-12-04 | A5650 FS+10d | 453d | 0d |  |  |  | CON | TA | G | ANSA.000 | 00 | G-ML | 001 |  |
| A4600 | ANSA.011 - First Supply |  | 80d | 2023-12-06 | 2024-03-27 | A4620 SF | 397d | 0d |  | Recurso Ponderador [21322034 h] | 21,322,034 | SUP | PR | G | ANSA.011 | 04 | G-SF | 001 |  |
| A5010 | 81 - Fire Fighting System |  | 30d | 2023-12-13 | 2024-01-23 | A5020 FF, A6390 | 103d | 0d |  | Recurso Ponderador [4757267 h] | 4,757,267 | COM | CO | N | ANSA.000 | 05 | N-CQ | 001 |  |
| A5670 | Schedule third review | milestone | 0d | 2023-12-18 | 2023-12-18 | A5660 FS+10d | 453d | 0d |  |  |  | CON | TA | G | ANSA.000 | 00 | G-ML | 001 |  |
| A5680 | Turnaround safety plan final issue | milestone | 0d | 2023-12-25 | 2023-12-25 | A5670 FS+5d | 453d | 0d |  |  |  | CON | TA | G | ANSA.000 | 00 | G-ML | 001 |  |
| A5690 | Long lead items ultimate delivery date | milestone | 0d | 2023-12-25 | 2023-12-25 | A5680 SS | 453d | 0d |  |  |  | CON | TA | G | ANSA.000 | 00 | G-ML | 001 |  |
| A6580 | ANSA.004 - Electromechanical - TA |  | 40d | 2024-01-01 | 2024-02-23 | A4200 | 131d | 0d |  | Recurso Ponderador [1454890 h]; Recurso Homem Hora [10080 h] | 1,454,890 | CON | TA | M | ANSA.004 | 02 | M-RF | 001 |  |
| A6590 | ANSA.005 - Electromechanical - TA |  | 110d | 2024-01-01 | 2024-05-31 | A4500 | 170d | 52d |  | Recurso Ponderador [84868573 h]; Recurso Homem Hora [252000 h] | 84,868,573 | CON | TA | M | ANSA.005 | 04 | M-MT | 001 |  |
| A6600 | ANSA.016 - Electromechanical - TA |  | 98d | 2024-01-01 | 2024-05-15 | A4740 | 158d | 0d |  | Recurso Ponderador [22631620 h]; Recurso Homem Hora [100800 h] | 22,631,620 | CON | TA | M | ANSA.016 | 04 | M-RF | 001 |  |
| A6610 | ANSA.021 - Electromechanical - TA |  | 58d | 2024-01-01 | 2024-03-20 | A4860 | 281d | 104d |  | Recurso Ponderador [484963 h]; Recurso Homem Hora [3360 h] | 484,963 | CON | TA | M | ANSA.021 | 04 | M-RF | 001 |  |
| A5700 | Schedule final | milestone | 0d | 2024-01-09 | 2024-01-09 | A5690 FS+11d | 453d | 0d |  |  |  | CON | TA | G | ANSA.000 | 00 | G-ML | 001 |  |
| A5710 | Conduct TAP(*) 3 review | milestone | 0d | 2024-01-09 | 2024-01-09 | A5700 | 453d |  |  |  |  | CON | TA | G | ANSA.000 | 00 | G-ML | 001 |  |
| A6530 | ANSA.014 - Electromechanical - Internal Repair |  | 120d | 2024-01-10 | 2024-06-25 | A4650 | 332d |  |  | Recurso Ponderador [8629114 h]; Recurso Homem Hora [30240 h] | 8,629,114 | CON | TA | M | ANSA.014 | 04 | M-RF | 001 |  |
| A4160 | ANSA.002 - First Supply |  | 30d | 2024-01-15 | 2024-02-26 | A4170 SF | 419d |  |  | Recurso Ponderador [3411525 h] | 3,411,525 | SUP | PR | G | ANSA.002 | 02 | G-SF | 001 |  |
| A4220 | ANSA.010 - First Supply |  | 30d | 2024-01-15 | 2024-02-26 | A4230 SF | 419d |  |  | Recurso Ponderador [3411525 h] | 3,411,525 | SUP | PR | G | ANSA.010 | 02 | G-SF | 001 |  |
| A4960 | ANSA.025 - First Supply |  | 80d | 2024-01-17 | 2024-05-07 | A6210 FS+70d | 247d | 0d |  | Recurso Ponderador [10234576 h] | 10,234,576 | SUP | PR | G | ANSA.025 | 04 | G-SF | 001 |  |
| A5030 | 91 - Entrance Substation |  | 15d | 2024-01-24 | 2024-02-13 | A5010, A5020, A4930, A4940 | 103d | 0d |  | Recurso Ponderador [2378634 h] | 2,378,634 | COM | CO | N | ANSA.000 | 05 | N-CQ | 001 |  |
| A5040 | 92 - Main Substation |  | 15d | 2024-01-24 | 2024-02-13 | A5010, A5020, A4930, A4940 | 103d | 0d |  | Recurso Ponderador [2378634 h] | 2,378,634 | COM | CO | N | ANSA.000 | 05 | N-CQ | 001 |  |
| A5050 | 93 - Auxiliary Substation I (Control Room) |  | 15d | 2024-01-24 | 2024-02-13 | A5010, A5020, A4930, A4940 | 103d | 0d |  | Recurso Ponderador [2378634 h] | 2,378,634 | COM | CO | N | ANSA.000 | 05 | N-CQ | 001 |  |
| A5060 | 94 - Auxiliary Substation II (Urea Bagging) |  | 15d | 2024-01-24 | 2024-02-13 | A5010, A5020, A4930, A4940 | 103d | 0d |  | Recurso Ponderador [2378634 h] | 2,378,634 | COM | CO | N | ANSA.000 | 05 | N-CQ | 001 |  |
| A5070 | 95 - Auxiliary Substation III (Urea Granulation) |  | 15d | 2024-01-24 | 2024-02-13 | A5010, A5020, A4930, A4940 | 103d | 0d |  | Recurso Ponderador [2378634 h] | 2,378,634 | COM | CO | N | ANSA.000 | 05 | N-CQ | 001 |  |
| A5080 | 96 - Auxiliary Substation IV (Administrative Area) |  | 15d | 2024-01-24 | 2024-02-13 | A5010, A5020, A4930, A4940 | 103d | 0d |  | Recurso Ponderador [2378634 h] | 2,378,634 | COM | CO | N | ANSA.000 | 05 | N-CQ | 001 |  |
| A5090 | 97 - Auxiliary Substation V (ETDI) |  | 15d | 2024-01-24 | 2024-02-13 | A5010, A5020, A4930, A4940 | 103d | 0d |  | Recurso Ponderador [2378634 h] | 2,378,634 | COM | CO | N | ANSA.000 | 05 | N-CQ | 001 |  |
| A5100 | 98 - Substation 528 |  | 15d | 2024-01-24 | 2024-02-13 | A5010, A5020, A4930, A4940 | 103d | 0d |  | Recurso Ponderador [2378634 h] | 2,378,634 | COM | CO | N | ANSA.000 | 05 | N-CQ | 001 |  |
| A4350 | ANSA.006 - Electromechanical |  | 40d | 2024-01-31 | 2024-03-26 | A4340, A6020, A4320 | 277d | 203d |  | Recurso Ponderador [2909779 h]; Recurso Homem Hora [5040 h] | 2,909,779 | CON | TR | M | ANSA.006 | 03 | M-MT | 001 |  |
| A4440 | ANSA.012 - Electromechanical - Vendor |  | 121d | 2024-02-06 | 2024-07-23 | A4420, A4430, A4410 | 103d | 0d |  | Recurso Ponderador [14548898 h]; Recurso Homem Hora [30240 h] | 14,548,898 | CON | TR | M | ANSA.012 | 03 | M-MT | 001 | DemiWater |
| A5110 | 83 - Industrial Dumps Treatment Station - ETDI |  | 90d | 2024-02-14 | 2024-06-18 | A5030, A5040, A5050, A5060, A5070, A5080, A5090, A5100, A4890, A4900 | 103d | 0d |  | Recurso Ponderador [14271802 h] | 14,271,802 | COM | CO | N | ANSA.000 | 05 | N-CQ | 001 |  |
| A5120 | 82 - Sewage System |  | 20d | 2024-02-14 | 2024-03-12 | A5040, A5050, A5060, A5070, A5080, A5090, A5100, A5030 | 173d | 70d |  | Recurso Ponderador [3171512 h] | 3,171,512 | COM | CO | N | ANSA.000 | 05 | N-CQ | 001 |  |
| A5130 | Natural Gas System for Boiler |  | 20d | 2024-02-14 | 2024-03-12 | A5050, A5060, A5070, A5080, A5090, A5100, A5030, A5040 | 173d | 70d |  | Recurso Ponderador [3171512 h] | 3,171,512 | COM | CO | N | ANSA.000 | 05 | N-CQ | 001 |  |
| A4780 | ANSA.017 - Electromechanical |  | 100d | 2024-02-22 | 2024-07-10 | A4770, A6130, A6370, A4760 | 189d | 24d |  | Recurso Ponderador [21823348 h]; Recurso Homem Hora [45360 h] | 21,823,348 | CON | TA | M | ANSA.017 | 04 | M-RF | 001 |  |

Notes:
- A3120: Assumptions: Contratação para atendimento da Parada em 2024. / Considerado término da 1ª mobilização em 17/01/24.
- A3130: Assumptions: Contratação para atendimento da Parada em 2024. / Considerado término da 1ª mobilização em 17/01/24.
- A4540: Assumptions: 3 primeiros meses de serviço serão para a manutenação de rotina que não / possuem interface com o escopo de Transformação.
- A6510: Assumptions: Ajustes / e recolocação de elétrica e instrumentação que passam pelo rack conforme escopo / de Tranformation.

| ID | Activity | Type | Duration | Start | Finish | Predecessors | Total float | Free float | Calendar | Resources | Cost | Yara ANSA - Project Phase | Yara ANSA - Workstream | Yara ANSA - Disciplines | Yara ANSA - CWA | Yara ANSA - Workface | Yara ANSA - Subisciplines | Yara ANSA - Sequencial |
| --- | --- | --- | --- | --- | --- | --- | --- | --- | --- | --- | --- | --- | --- | --- | --- | --- | --- | --- |
| A4990 | ANSA.026 - First Supply |  | 60d | 2024-02-22 | 2024-05-16 | A5000 SF | 361d |  |  | Recurso Ponderador [426441 h] | 426,441 | SUP | PR | G | ANSA.026 | 04 | G-SF | 001 |
| A4170 | ANSA.002 - Electromechanical |  | 80d | 2024-02-26 | 2024-06-14 | A5980, A4200, A6370, A6580 | 131d | 0d |  | Recurso Ponderador [404136 h]; Recurso Homem Hora [13440 h] | 404,136 | CON | TA | M | ANSA.002 | 02 | M-RF | 001 |
| A4230 | ANSA.010 - Electromechanical |  | 80d | 2024-02-26 | 2024-06-14 | A6060, A4170 FF, A6370 | 131d | 0d |  | Recurso Ponderador [1616545 h]; Recurso Homem Hora [10080 h] | 1,616,545 | CON | TA | M | ANSA.010 | 02 | M-RF | 001 |
| A4110 | ANSA.019 - Electromechanical |  | 60d | 2024-02-29 | 2024-05-22 | A6150, A4100, A6370 | 236d | 59d |  | Recurso Ponderador [3233089 h]; Recurso Homem Hora [6720 h] | 3,233,089 | CON | TA | M | ANSA.019 | 01 | M-RF | 001 |
| A4620 | ANSA.011 - Electromechanical - Others Repairs |  | 100d | 2024-03-27 | 2024-08-13 | A6070, A6370, A4610, A6520 | 177d | 0d |  | Recurso Ponderador [2424816 h]; Recurso Homem Hora [25200 h] | 2,424,816 | CON | TA | M | ANSA.011 | 04 | M-RF | 001 |
| A4300 | ANSA.003 - Electromechanical |  | 200d | 2024-04-01 | 2025-01-03 | A4290 FF+80d, A5990 FF+40d, A6280 FF+100d, A6460 | 1d | 0d |  | Recurso Ponderador [30714341 h]; Recurso Homem Hora [63840 h] | 30,714,341 | CON | TR | M | ANSA.003 | 03 | M-MT | 001 |
| A4970 | ANSA.025 - Civil |  | 120d | 2024-05-08 | 2024-10-22 | A6210, A6370, A4960 | 247d |  |  | Recurso Ponderador [8629114 h]; Recurso Homem Hora [20160 h] | 8,629,114 | CON | TA | C | ANSA.025 | 04 | C-EC | 001 |
| A5000 | ANSA.026 - Electromechanical |  | 20d | 2024-05-16 | 2024-06-12 | A6220, A6370, A4690, A4700, A4740, A6600 | 221d | 0d |  | Recurso Ponderador [404136 h]; Recurso Homem Hora [840 h] | 404,136 | CON | TA | M | ANSA.026 | 04 | M-RF | 001 |
| A6490 | ANSA.013 - Electromechanical - Equipment |  | 80d | 2024-06-13 | 2024-10-02 | A6500, A4470 FF+60d | 27d | 0d |  | Recurso Ponderador [13336490 h]; Recurso Homem Hora [27720 h] | 13,336,490 | CON | TR | M | ANSA.013 | 03 | M-RF | 001 |
| A5240 | 21 - Sulfur Recovery (Chimney Only) |  | 10d | 2024-06-17 | 2024-06-28 | A4230 | 150d |  |  | Recurso Ponderador [1585756 h] | 1,585,756 | COM | CO | N | ANSA.000 | 05 | N-CQ | 001 |
| A5150 | 25 - Instrument and Service Air System |  | 26d | 2024-06-19 | 2024-07-24 | A5120, A5130, A4690, A4700, A5110 | 103d | 76d |  | Recurso Ponderador [4122965 h] | 4,122,965 | COM | CO | N | ANSA.000 | 05 | N-CQ | 001 |
| A5160 | 27 - Cooling Tower |  | 26d | 2024-06-19 | 2024-07-24 | A5130, A4650, A4660, A5110, A5120 | 103d | 76d |  | Recurso Ponderador [4122965 h] | 4,122,965 | COM | CO | N | ANSA.000 | 05 | N-CQ | 001 |
| A4390 | ANSA.007 - Electromechanical |  | 100d | 2024-06-25 | 2024-11-11 | A4380, A4370, A6030 FS+70d, A6300 | 81d | 39d |  | Recurso Ponderador [4364670 h]; Recurso Homem Hora [9072 h] | 4,364,670 | CON | TR | M | ANSA.007 | 03 | M-MT | 001 |
| A4270 | ANSA.001 - Electromechanical |  | 80d | 2024-07-23 | 2024-11-11 | A5970, A4260, A4250, A6270 | 0d |  |  | Recurso Ponderador [16973715 h]; Recurso Homem Hora [35280 h] | 16,973,715 | CON | TR | M | ANSA.001 | 03 | M-MT | 001 |
| A5170 | 28 - Boiler Water Treatment |  | 1d | 2024-07-24 | 2024-07-24 | A4420, A4430, A4440, A5110, A5120, A5130 | 103d | 76d |  | Recurso Ponderador [4122965 h] | 4,122,965 | COM | CO | N | ANSA.000 | 05 | N-CQ | 001 |
| A5740 | TA Maintenance end date | milestone | 0d | 2024-08-13 | 2024-08-13 | A4060, A4070, A4100, A4110, A4140, A4170, A4200, A4230, A4500, A4530, A4540, A4570, A4580, A4610, A4620, A4650, A4660, A4690, A4700, A4730, A4740, A4770, A4780, A4810, A4820, A4850, A4860, A4890, A4900, A4930, A4940, A5000, A6580, A6590, A6600, A6610 | 297d |  |  |  |  | GEN | TA | G | ANSA.000 | 00 | G-ML | 001 |
| A5140 | 23 - Steam and Condensate System |  | 26d | 2024-10-03 | 2024-11-07 | A5110, A5120, A5130, A4470, A6490 | 27d | 0d |  | Recurso Ponderador [4122965 h] | 4,122,965 | COM | CO | N | ANSA.000 | 05 | N-CQ | 001 |
| A5180 | 26 - Flare |  | 5d | 2024-11-08 | 2024-11-14 | A5140, A5150, A5160, A5170, A4230 | 27d | 0d |  | Recurso Ponderador [792878 h] | 792,878 | COM | CO | N | ANSA.000 | 05 | N-CQ | 001 |
| A5190 | Natural Gas System for U11 |  | 20d | 2024-11-12 | 2024-12-09 | A5130, A4260, A4270 | 0d |  |  | Recurso Ponderador [3171512 h] | 3,171,512 | COM | CO | N | ANSA.000 | 05 | N-CQ | 001 |
| A5200 | 19 - Ammonia Cooling |  | 10d | 2024-11-15 | 2024-11-28 | A5180, A5140, A5150, A5160, A5170, A4730, A4740, A6600 | 27d |  |  | Recurso Ponderador [1585756 h] | 1,585,756 | COM | CO | N | ANSA.000 | 05 | N-CQ | 001 |
| A5210 | 10 - Air Separation Unit |  | 7d | 2024-11-15 | 2024-11-25 | A5180, A5140, A5150, A5160, A4730, A4740, A6600 | 30d |  |  | Recurso Ponderador [1110029 h] | 1,110,029 | COM | CO | N | ANSA.000 | 05 | N-CQ | 001 |
| A5220 | NGC |  | 20d | 2024-12-10 | 2025-01-06 | A5190, A4260, A4270, A5130 | 0d |  |  | Recurso Ponderador [3171512 h] | 3,171,512 | COM | CO | N | ANSA.000 | 05 | N-CQ | 001 |
| A6240 | Mechanical Completion | milestone | 0d | 2025-01-03 | 2025-01-03 | A4060, A4070, A4100, A4110, A4140, A4170, A4200, A4230, A4260, A4270, A4300, A4330, A4350, A4380, A4340, A4390, A4420, A4430, A4440, A4470, A4500, A4530, A4540, A4570, A4580, A4610, A4620, A4650, A4660, A4690, A4700, A4730, A4740, A4770, A4780, A4810, A4820, A4850, A4860, A4890, A4900, A4930, A4940, A5000, A6490, A6580, A6590, A6600, A6610 | 74d | 0d |  |  |  | GEN | GE | G | ANSA.000 | 00 | G-ML | 001 |
| A6550 | ANSA.002 - DNAPL |  | 120d | 2025-01-06 | 2025-06-20 | A6240 | 74d |  |  | Recurso Ponderador [1212408 h]; Recurso Homem Hora [10080 h] | 1,212,408 | CON | TA | M | ANSA.002 | 02 | M-RF | 001 |
| A5230 | 11 - Gasification |  | 14d | 2025-01-07 | 2025-01-24 | A5200, A5150, A5160, A5170, A5180, A5210, A5220, A4300, A5140 | 0d |  |  | Recurso Ponderador [2220058 h] | 2,220,058 | COM | CO | N | ANSA.000 | 05 | N-CQ | 001 |
| A5250 | 13 - H2S Separation |  | 21d | 2025-01-27 | 2025-02-24 | A5240, A5140, A5150, A5160, A5170, A5230, A4500, A5180, A6590 | 0d |  |  | Recurso Ponderador [3330087 h] | 3,330,087 | COM | CO | N | ANSA.000 | 05 | N-CQ | 001 |
| A5260 | 15 - CO2 Separation |  | 21d | 2025-01-27 | 2025-02-24 | A5150, A5160, A5170, A5180, A5230, A4500, A5140, A6590 | 0d |  |  | Recurso Ponderador [3330087 h] | 3,330,087 | COM | CO | N | ANSA.000 | 05 | N-CQ | 001 |
| A5270 | 20 - Methanol Synthesis |  | 5d | 2025-01-27 | 2025-01-31 | A5160, A5170, A5180, A5230, A4500, A5140, A6590 | 16d |  |  | Recurso Ponderador [792878 h] | 792,878 | COM | CO | N | ANSA.000 | 05 | N-CQ | 001 |
| A5280 | 14 - CO Shift |  | 6d | 2025-02-25 | 2025-03-04 | A5250, A5140, A5150, A5160, A5170, A5260, A5270, A4500, A5180, A6590 | 0d |  |  | Recurso Ponderador [951453 h] | 951,453 | COM | CO | N | ANSA.000 | 05 | N-CQ | 001 |
| A5290 | 16 - Liquid Nitrogen Wash |  | 9d | 2025-03-05 | 2025-03-17 | A5280, A5140, A5150, A5160, A5170, A4380, A4390, A5180 | 0d |  |  | Recurso Ponderador [1427180 h] | 1,427,180 | COM | CO | N | ANSA.000 | 05 | N-CQ | 001 |
| A5300 | 17 - Synthesis Gas Compression |  | 7d | 2025-03-18 | 2025-03-26 | A5140, A5150, A5160, A5170, A5290, A4690, A4700, A5180 | 0d |  |  | Recurso Ponderador [1110029 h] | 1,110,029 | COM | CO | N | ANSA.000 | 05 | N-CQ | 001 |
| A5310 | 18 - Ammonia Synthesis |  | 4d | 2025-03-27 | 2025-04-01 | A5300, A5140, A5150, A5160, A5170, A4730, A4740, A6600 | 0d |  |  | Recurso Ponderador [634302 h] | 634,302 | COM | CO | N | ANSA.000 | 05 | N-CQ | 001 |
| A5320 | 24 - Ammonia Storage and Charging |  | 10d | 2025-04-02 | 2025-04-15 | A5310 | 122d |  |  | Recurso Ponderador [1585756 h] | 1,585,756 | COM | CO | N | ANSA.000 | 05 | N-CQ | 001 |
| A5330 | 33 - Urea |  | 24d | 2025-04-02 | 2025-05-05 | A5140, A5150, A5160, A5170, A5290, A5310, A4770, A4780 | 0d |  |  | Recurso Ponderador [3805814 h] | 3,805,814 | COM | CO | N | ANSA.000 | 05 | N-CQ | 001 |
| A5340 | 64 - Bulk Urea Storage |  | 24d | 2025-04-02 | 2025-05-05 | A5140, A5150, A5160, A5170, A5290, A5310, A4100, A4110 | 108d |  |  | Recurso Ponderador [3805814 h] | 3,805,814 | COM | CO | N | ANSA.000 | 05 | N-CQ | 001 |
| A5350 | 65 - Bagging and Loading of Urea |  | 24d | 2025-04-02 | 2025-05-05 | A5140, A5150, A5160, A5170, A5310, A5290, A4100, A4110 | 108d |  |  | Recurso Ponderador [3805814 h] | 3,805,814 | COM | CO | N | ANSA.000 | 05 | N-CQ | 001 |
| A5360 | 66 - Bagged Sand Storage |  | 24d | 2025-04-02 | 2025-05-05 | A5140, A5150, A5160, A5170, A5310, A5290, A4100, A4110 | 108d |  |  | Recurso Ponderador [3805814 h] | 3,805,814 | COM | CO | N | ANSA.000 | 05 | N-CQ | 001 |
| A5370 | 67 - Technical Bulk Urea Storage |  | 24d | 2025-04-02 | 2025-05-05 | A5140, A5150, A5160, A5170, A5310, A5290, A4100, A4110 | 108d |  |  | Recurso Ponderador [3805814 h] | 3,805,814 | COM | CO | N | ANSA.000 | 05 | N-CQ | 001 |
| A5380 | 69 - Arla Storage and Loading |  | 6d | 2025-05-06 | 2025-05-13 | A5330, A4850, A4860, A5140, A5160, A5170, A5150, A6610 | 0d |  |  | Recurso Ponderador [792878 h] | 792,878 | COM | CO | N | ANSA.000 | 05 | N-CQ | 001 |
| A5750 | First Ammonia production | milestone | 0d | 2025-05-14 | 2025-05-14 | A5380 | 102d |  |  |  |  | O&M | CO | G | ANSA.000 | 00 | G-ML | 001 |
| A5760 | First Urea production | milestone | 0d | 2025-05-14 | 2025-05-14 | A5380 | 102d |  |  |  |  | O&M | CO | G | ANSA.000 | 00 | G-ML | 001 |
| A6250 | Ramp-up |  | 55d | 2025-05-14 | 2025-07-29 | A5380 | 0d |  |  |  |  | O&M | GE | G | ANSA.000 | 00 | G-ML | 001 |
| A5770 | Lesson learned review | milestone | 0d | 2025-07-30 | 2025-07-30 | A6260 | 0d |  |  |  |  | FOP | TA | G | ANSA.000 | 00 | G-ML | 001 |
| A6260 | Full Production | milestone | 0d | 2025-07-30 | 2025-07-30 | A6250 | 0d |  | 7 Dias Corridos |  |  | O&M | GE | G | ANSA.000 | 00 | G-ML | 001 |
| A5780 | Final cost report | milestone | 0d | 2025-09-03 | 2025-09-03 | A5770 FS+25d | 0d |  |  |  |  | FOP | TA | G | ANSA.000 | 00 | G-ML | 001 |
| A5790 | Post Turnaround report final version | milestone | 0d | 2025-09-03 | 2025-09-03 | A5780 SS | 0d |  |  |  |  | FOP | TA | G | ANSA.000 | 00 | G-ML | 001 |
| A5800 | Conduct TAP(*) 4 review | milestone | 0d | 2025-10-03 | 2025-10-03 | A5790 FS+22d | 0d |  |  |  |  | FOP | TA | G | ANSA.000 | 00 | G-ML | 001 |

Notes:
- A4300: Assumptions: Trabalhar em dois refratários antes da chegada dos / equipamentos.
- A4390: Assumptions: 60 dias para infraestrutura, tie-ins etc. / 40 dias para instalação do equipamento
- A6550: Assumptions: Considerado necessidade de troca de solo para remoção do / DNAPL.

## Activity codes

| Code | Value | Meaning |
| --- | --- | --- |
| Yara ANSA - CWA | ANSA.000 | ANSA.000 - General |
| Yara ANSA - CWA | ANSA.001 | ANSA.001 - NGC – Natural Gas Compressor |
| Yara ANSA - CWA | ANSA.002 | ANSA.002 - Tanking |
| Yara ANSA - CWA | ANSA.003 | ANSA.003 - Gasification |
| Yara ANSA - CWA | ANSA.004 | ANSA.004 - Carbono Recovey |
| Yara ANSA - CWA | ANSA.005 | ANSA.005 - U13, U14, U15 e U20 |
| Yara ANSA - CWA | ANSA.006 | ANSA.006 - Flash Column + Blower |
| Yara ANSA - CWA | ANSA.007 | ANSA.007 - LNW |
| Yara ANSA - CWA | ANSA.008 | ANSA.008 - Control House |
| Yara ANSA - CWA | ANSA.009 | ANSA.009 - Pipe Rack |
| Yara ANSA - CWA | ANSA.010 | ANSA.010 - Sulfur and Flare Recovery |
| Yara ANSA - CWA | ANSA.011 | ANSA.011 - Ammonia Tank |
| Yara ANSA - CWA | ANSA.012 | ANSA.012 - Demin Water |
| Yara ANSA - CWA | ANSA.013 | ANSA.013 - Boiler |
| Yara ANSA - CWA | ANSA.014 | ANSA.014 - Cooling Tower |
| Yara ANSA - CWA | ANSA.015 | ANSA.015 - Compressor House |
| Yara ANSA - CWA | ANSA.016 | ANSA.016 - U10-B, U33-B, U18-B e U19-B |
| Yara ANSA - CWA | ANSA.017 | ANSA.017 - Urea Tower |
| Yara ANSA - CWA | ANSA.018 | ANSA.018 - Belt Conveyors |
| Yara ANSA - CWA | ANSA.019 | ANSA.019 - Urea Storage |
| Yara ANSA - CWA | ANSA.020 | ANSA.020 - Ammonia Loading + Piping |
| Yara ANSA - CWA | ANSA.021 | ANSA.021 - Arla |
| Yara ANSA - CWA | ANSA.022 | ANSA.022 - ETDI |
| Yara ANSA - CWA | ANSA.023 | ANSA.023 - Building |
| Yara ANSA - CWA | ANSA.024 | ANSA.024 - Substations |
| Yara ANSA - CWA | ANSA.025 | ANSA.025 - Environmental |
| Yara ANSA - CWA | ANSA.026 | ANSA.026 - Logistics |
| Yara ANSA - CWA | ANSA.027 | ANSA.027 - Fire Network - RCI |
| Yara ANSA - Disciplines | A | Architecture |
| Yara ANSA - Disciplines | C | Civil |
| Yara ANSA - Disciplines | E | Electrical |
| Yara ANSA - Disciplines | G | General |
| Yara ANSA - Disciplines | M | Mechanical |
| Yara ANSA - Disciplines | N | Commissioning |
| Yara ANSA - Disciplines | P | Procurement |
| Yara ANSA - Project Phase | COM | Commissioning |
| Yara ANSA - Project Phase | CON | Construction |
| Yara ANSA - Project Phase | DG3 | DG3 - Decision Gate 3 |
| Yara ANSA - Project Phase | DG4 | DG4 - Decision Gate 4 |
| Yara ANSA - Project Phase | ENG | Engineering |
| Yara ANSA - Project Phase | FOP | Full Operational |
| Yara ANSA - Project Phase | GEN | General |
| Yara ANSA - Project Phase | O&M | Assisted Operation |
| Yara ANSA - Project Phase | OUT | Outside DG4 |
| Yara ANSA - Project Phase | PRO | Procurement / Acquisition |
| Yara ANSA - Project Phase | SUP | Supply |
| Yara ANSA - Sequencial | 032 | 033 |
| Yara ANSA - Subisciplines | A-AA | Masonry execution, coatings and finishes |
| Yara ANSA - Subisciplines | A-CB | Covers assembly (tiles, etc.) |
| Yara ANSA - Subisciplines | C-EC | Concrete structures |
| Yara ANSA - Subisciplines | C-FU | Foundation / bases |
| Yara ANSA - Subisciplines | C-PI | Floor slab |
| Yara ANSA - Subisciplines | E-RF | Maintenance / Repair / Repowering |
| Yara ANSA - Subisciplines | G-EN | Engineering |
| Yara ANSA - Subisciplines | G-F2 | FEL 2 |
| Yara ANSA - Subisciplines | G-F3 | FEL 3 |
| Yara ANSA - Subisciplines | G-ML | Milestones |
| Yara ANSA - Subisciplines | G-SF | Supply |
| Yara ANSA - Subisciplines | M-MT | Assembly of equipment / boiler |
| Yara ANSA - Subisciplines | M-RF | Maintenance / Repair / boiler shop |
| Yara ANSA - Subisciplines | N-CQ | Hot Commissioning |
| Yara ANSA - Subisciplines | P-PI | Indirect |
| Yara ANSA - Subisciplines | P-PM | Material |
| Yara ANSA - Subisciplines | P-PW | Equipment |
| Yara ANSA - Subisciplines | P-SE | Services |
| Yara ANSA - Transformation | Automatation | Automation |
| Yara ANSA - Transformation | DemiWater | Demi Water |
| Yara ANSA - Transformation | LaserScan | Laser Scan |
| Yara ANSA - Workface | 00 | 00 - Management |
| Yara ANSA - Workface | 01 | 01 - General |
| Yara ANSA - Workface | 02 | 02 - Descommissioning |
| Yara ANSA - Workface | 03 | 03 - LLIs |
| Yara ANSA - Workface | 04 | 04 - Maintenance |
| Yara ANSA - Workface | 05 | 05 - Commissioning |
| Yara ANSA - Workstream | CO | Commissioning |
| Yara ANSA - Workstream | GE | General |
| Yara ANSA - Workstream | PC | Project Control |
| Yara ANSA - Workstream | PR | Procurement |
| Yara ANSA - Workstream | TA | Turnaround |
| Yara ANSA - Workstream | TR | Transformation |
