# CC-027 Nodo 3500 RAMPA CONECTIVIDAD TEC-04 Rev 1 al 05-02-23 BIM

Schedule from Primavera P6, 2021-11-16 to 2024-09-05, data date 2023-02-06, costs in USD, A marks actual dates.

## Calendars

- Andina 1 turno: Mon-Sun 07:00-13:00, 14:00-19:00. Exceptions (off unless hours are given): 2021-11-21, 2021-12-19, 2022-01-01, 2022-05-01, 2022-06-06 to 2022-06-08, 2022-06-13 to 2022-06-15, 2022-06-20 to 2022-06-22, 2022-06-27 to 2022-06-28, 2022-07-04 to 2022-07-06, 2022-07-11 to 2022-07-13, 2022-07-18 to 2022-07-20, 2022-07-25 to 2022-07-26, 2022-08-08 to 2022-08-10, 2022-08-15 to 2022-08-17, 2022-08-22 to 2022-08-23, 2022-09-18 to 2022-09-19, 2023-01-01, 2023-05-01, 2023-06-05 to 2023-06-08, 2023-06-12 to 2023-06-15, 2023-06-19 to 2023-06-21, 2023-07-03 to 2023-07-06, 2023-07-10 to 2023-07-13, 2023-07-17 to 2023-07-19, 2023-08-07 to 2023-08-09, 2023-08-14 to 2023-08-16, 2023-08-21 to 2023-08-22, 2023-09-18 to 2023-09-19, 2024-01-01, 2024-05-01, 2024-06-03 to 2024-06-06, 2024-06-10 to 2024-06-13, 2024-06-17 to 2024-06-19, 2024-07-08 to 2024-07-11, 2024-07-15 to 2024-07-18, 2024-07-22 to 2024-07-24, 2024-08-05 to 2024-08-07, 2024-08-12 to 2024-08-14, 2024-08-19 to 2024-08-20.
- Andina 2 turnos: Mon-Sun 00:00-01:00, 02:00-13:00, 14:00-00:00. Exceptions (off unless hours are given): 2021-11-21, 2021-12-19, 2022-01-01, 2022-05-01, 2022-09-18 to 2022-09-19, 2023-01-01, 2023-05-01, 2023-06-05 to 2023-06-07, 2023-06-12 to 2023-06-14, 2023-06-19 to 2023-06-21, 2023-06-26 to 2023-06-27, 2023-07-03 to 2023-07-05, 2023-07-10 to 2023-07-12, 2023-07-17 to 2023-07-19, 2023-07-24 to 2023-07-25, 2023-08-07 to 2023-08-09, 2023-08-14 to 2023-08-16, 2023-08-21 to 2023-08-22, 2023-09-18 to 2023-09-19, 2024-01-01, 2024-05-01, 2024-06-03 to 2024-06-05, 2024-06-10 to 2024-06-12, 2024-06-17 to 2024-06-19, 2024-06-24 to 2024-06-25, 2024-07-08 to 2024-07-10, 2024-07-15 to 2024-07-17, 2024-07-22 to 2024-07-24, 2024-07-29 to 2024-07-30, 2024-08-05 to 2024-08-07, 2024-08-12 to 2024-08-14, 2024-08-19 to 2024-08-20.
- Andina 1 turno N3500: Mon-Sun 07:00-13:00, 14:00-19:00. Exceptions (off unless hours are given): 2021-11-21, 2021-12-19, 2022-01-01, 2022-05-01, 2022-06-06 to 2022-06-08, 2022-06-13 to 2022-06-15, 2022-06-20 to 2022-06-21, 2022-06-27 to 2022-06-28, 2022-07-04 to 2022-07-06, 2022-07-11 to 2022-07-13, 2022-07-18 to 2022-07-19, 2022-07-25 to 2022-07-26, 2022-08-08 to 2022-08-10, 2022-08-15 to 2022-08-17, 2022-08-22 to 2022-08-24, 2022-08-29 to 2022-08-30, 2022-09-18 to 2022-09-19, 2023-01-01, 2023-05-01, 2023-06-05 to 2023-06-07, 2023-06-12 to 2023-06-14, 2023-06-19 to 2023-06-20, 2023-06-26 to 2023-06-27, 2023-07-03 to 2023-07-05, 2023-07-10 to 2023-07-12, 2023-07-17 to 2023-07-19, 2023-07-24 to 2023-07-25, 2023-08-07 to 2023-08-09, 2023-08-14 to 2023-08-16, 2023-08-21 to 2023-08-22, 2023-08-28 to 2023-08-29, 2023-09-18 to 2023-09-19, 2024-01-01, 2024-05-01, 2024-06-03 to 2024-06-05, 2024-06-10 to 2024-06-12, 2024-06-17 to 2024-06-18, 2024-06-24 to 2024-06-25, 2024-07-01 to 2024-07-03, 2024-07-08 to 2024-07-09, 2024-07-15 to 2024-07-16, 2024-07-22 to 2024-07-23, 2024-07-29 to 2024-07-30, 2024-08-05 to 2024-08-07, 2024-08-12 to 2024-08-14, 2024-08-19 to 2024-08-20, 2024-08-26 to 2024-08-27.
- Andina Dìas Corridos: Mon-Sun 07:00-13:00, 14:00-19:00.
- Andina 2 turnos N3500: Mon-Sun 00:00-01:00, 02:00-13:00, 14:00-00:00. Exceptions (off unless hours are given): 2021-11-21, 2021-12-19, 2022-01-01, 2022-05-01, 2022-06-06 to 2022-06-08, 2022-06-13 to 2022-06-15, 2022-06-20 to 2022-06-21, 2022-06-27 to 2022-06-28, 2022-07-04 to 2022-07-06, 2022-07-11 to 2022-07-13, 2022-07-18 to 2022-07-20, 2022-07-25 to 2022-07-26, 2022-08-08 to 2022-08-10, 2022-08-15 to 2022-08-17, 2022-08-22 to 2022-08-23, 2022-08-29 to 2022-08-30, 2022-09-18 to 2022-09-19, 2023-01-01, 2023-05-01, 2023-06-05 to 2023-06-07, 2023-06-12 to 2023-06-14, 2023-06-19 to 2023-06-20, 2023-06-26 to 2023-06-27, 2023-07-03 to 2023-07-05, 2023-07-10 to 2023-07-12, 2023-07-17 to 2023-07-19, 2023-07-24 to 2023-07-25, 2023-08-07 to 2023-08-09, 2023-08-14 to 2023-08-16, 2023-08-21 to 2023-08-22, 2023-08-28 to 2023-08-29, 2023-09-18 to 2023-09-19, 2024-01-01, 2024-05-01, 2024-06-03 to 2024-06-05, 2024-06-10 to 2024-06-12, 2024-06-17 to 2024-06-18, 2024-06-24 to 2024-06-25, 2024-07-01 to 2024-07-03, 2024-07-08 to 2024-07-09, 2024-07-15 to 2024-07-16, 2024-07-22 to 2024-07-23, 2024-07-29 to 2024-07-30, 2024-08-05 to 2024-08-07, 2024-08-12 to 2024-08-14, 2024-08-19 to 2024-08-20, 2024-08-26 to 2024-08-27.

## Resources

| Resource | Group | Rate |
| --- | --- | --- |
| Te in | labor | 1 |
| Pre Com & Com | labor | 1 |
| Movilizacion | labor | 1 |
| Obras Civiles | labor | 1 |
| CARPETA RODADO | equipment |  |
| Cañeria | labor | 1 |
| CAÑERIA | equipment |  |
| Electricidad | labor | 1 |
| Mineria | labor | 1 |
| DESARROLLO HORIZONTALES | equipment |  |
| DESARROLLO VERTICALES | equipment |  |
| HORMIGONES | equipment |  |
| Mecanica | labor | 1 |
| Instrumentacion | labor | 1 |
| CABLES | equipment |  |

## Schedule

| ID | WBS | Activity | Type | Duration | Start | Finish | Predecessors | Complete | Remaining | Planned start | Planned finish | Total float | Free float | Calendar | Resources | Cost | Actual cost | Spanish | Comments |
| --- | --- | --- | --- | --- | --- | --- | --- | --- | --- | --- | --- | --- | --- | --- | --- | --- | --- | --- | --- |
|  | 1 | **General** |  |  | 2021-11-16 | 2024-09-05 |  |  |  |  |  |  |  |  |  |  |  |  |  |
|  | 1 | **Inicio y Término** |  |  | 2021-11-16 | 2024-09-05 |  |  |  |  |  |  |  |  |  |  |  |  |  |
| H222100002 |  | Entrega de Terreno | milestone | 0d | 2021-11-16 A | 2021-11-16 A | H222100003 | 100% |  |  |  |  |  | Andina Dìas Corridos |  |  |  |  |  |
| H222100003 |  | Reunión de Inicio de Contrato | milestone | 0d | 2021-11-16 A | 2021-11-16 A | H222100004 | 100% |  |  |  |  |  | Andina Dìas Corridos |  |  |  |  |  |
| H222100004 |  | Inicio Proyecto Aceptación ME de Adjudicación de Contrato | milestone | 0d | 2021-11-16 A | 2021-11-16 A |  | 100% |  |  |  |  |  | Andina Dìas Corridos |  |  |  |  |  |
| H222100001 |  | Término Proyecto | milestone | 0d | 2024-09-05 | 2024-09-05 | H222100006, J2221ZA000029, M2221ME000306 FF |  |  |  |  | 0d |  | Andina Dìas Corridos |  |  |  |  |  |
|  | 2 | **Hitos** |  |  | 2022-03-03 | 2024-09-05 |  |  |  |  |  |  |  |  |  |  |  |  |  |
| H222100014 |  | Cumplimiento Hito Nº1 Primer Disparo (Frente Nª1 y Nº2) | milestone | 0d | 2022-03-03 A | 2022-03-03 A | M2221MAB00046 SS | 100% |  | 2022-03-05 | 2022-03-05 |  |  | Andina Dìas Corridos |  |  |  |  |  |
| H222100015 |  | Cumplimiento Hito Nº2 Inicio Fortificación Ladera Oeste | milestone | 0d | 2022-03-04 A | 2022-03-04 A | M2221ME000316 SS, H222100014 SS | 100% |  |  |  |  |  | Andina Dìas Corridos |  |  |  |  |  |
| H222100012 |  | Cumplimiento Hito Nº5 Unión de Frente 1 y Frente 2 | milestone | 0d | 2022-12-04 A | 2022-12-04 A | M2221MDB00049, M2221MAB00038 FF, M2221MDB00049 FF, M2221ME000054 FF | 100% |  | 2023-02-03 | 2023-02-03 |  |  | Andina Dìas Corridos |  |  |  |  |  |
| H222100011 |  | Cumplimiento Hito Nº4 Término de obras en superficie | milestone | 0d | 2023-05-19 | 2023-05-19 | M2221BAG00333 FF, H222100013 FF, H222100015 SF |  |  |  |  | 265d | 233d | Andina Dìas Corridos |  |  |  |  |  |
| H222100013 |  | Cumplimiento Hito Nº3 Término de Instalación de sistema de ventilación definitiva para la construcción del Frente N°1 | milestone | 0d | 2023-05-19 | 2023-05-19 | M2221MAB00042 FF, M2241MDB00484 FF, M2241MAB00479 FF, M2241MAB00478 FF, M2241MDB00485 FF |  |  |  |  | 265d | 0d | Andina Dìas Corridos |  |  |  |  |  |
| H222100009 |  | Cumplimiento Hito Nº7 Término de Excavaciones Mineras | milestone | 0d | 2023-10-13 | 2023-10-13 | M2221ME000173, M2221MAB00038, M2221MDB00313 FF, M2241MDB00484, M2221ME000315, M2221MBC00174, H222100012, M2221MDB00168, M2221MAB00126 |  |  |  |  | 20d | 0d | Andina Dìas Corridos |  |  |  |  |  |
| H222100010 |  | Cumplimento Hito Nº6 Término Mecánico Ventilador de Inyección y Sala Eléctrica | milestone | 0d | 2024-01-09 | 2024-01-09 | M2241TEIN0509, R2221PRECOM0527 FF, M2241TEIN0517, H222100011 FF |  |  |  |  | 126d | 101d | Andina Dìas Corridos |  |  |  |  |  |
| H222100008 |  | Cumplimiento Hito Nº8 Término Construcción y Montaje | milestone | 0d | 2024-04-27 | 2024-04-27 | M2221QC000204 FS+3d, M2221QC000209, M2221QF000205, M2221QJ000206, M2221RBB00207, M2221RBB00208, M2221SB000248, M2221SB000251, M2221SB000259, M2221SB000264, M2221SB000267, M2221SB000274 FF, M2221SB000249, M2221SB000252, M2221SB000268, M2221BAE00419, M2221SB000258, M2221SB000263, M2221SB000273, H222100009 FF, M2221SB000253 FF+1d |  |  |  |  | 27d |  | Andina Dìas Corridos |  |  |  |  |  |
| H222100007 |  | Cumplimiento Hito Nº9 Término Mecánico | milestone | 0d | 2024-05-24 | 2024-05-24 | H222100010, H222100008, R2221PRECOM0528 FF |  |  |  |  | 104d |  | Andina Dìas Corridos |  |  |  |  |  |
| H222100006 |  | Cumplimento Hito Nº10 Término contrato (plazo máximo 938 días corridos) | milestone | 0d | 2024-09-05 | 2024-09-05 | J2221ZA000029 FF, H222100007 |  |  |  |  | 0d |  | Andina Dìas Corridos |  |  |  |  |  |
|  | 3 | **Movilización e Instalación de Faenas** |  |  | 2021-11-16 | 2023-03-07 |  |  |  |  |  |  |  |  |  |  |  |  |  |
| F2221ZA000022 |  | Redacción de Manuales y Procedimientos |  | 45d | 2021-11-16 A | 2022-04-03 A | H222100004 | 100% |  | 2021-11-16 | 2022-01-02 |  |  |  |  |  |  | 1 | Gl |
| F2221ZA000023 |  | Contratos suministro materiales |  | 60d | 2021-11-16 A | 2022-01-17 A | H222100004 | 100% |  |  |  |  |  |  |  |  |  | 1 | Gl |
| F2221ZA000024 |  | Obtención de Permisos (ante DOM, Sernageomin,, etc) |  | 60d | 2021-11-16 A | 2022-01-17 A | H222100004 | 100% |  |  |  |  |  |  |  |  |  | 1 | Gl |
| F2221ZA000025 |  | Subcontratos obra y servicios |  | 60d | 2021-11-16 A | 2022-01-17 A | H222100004 | 100% |  |  |  |  |  |  |  |  |  | 1 | Gl |
| F2221ZA000026 |  | Arriendo de equipos terceros y preparación equipos propios |  | 60d | 2021-11-16 A | 2022-01-17 A | H222100004 | 100% |  |  |  |  |  |  |  |  |  | 1 | Gl |
| F2221ZA000027 |  | Selección y contratación de personal (incluye exámenes preocupacionales) |  | 60d | 2021-11-16 A | 2022-01-17 A | H222100004 | 100% |  |  |  |  |  |  |  |  |  | 1 | Gl |
| F2221ZA000019 |  | Revisión y Aprobación Manuales y Procedimientos por CODELCO |  | 30d | 2021-12-17 A | 2022-04-03 A | F2221ZA000022 FF | 100% |  | 2021-12-17 | 2022-01-17 |  |  |  |  |  |  | 1 | Gl |
| F2221ZA000020 |  | Acreditación de equipos por CODELCO |  | 45d | 2021-12-17 A | 2022-04-03 A | F2221ZA000026 SS | 100% |  | 2021-12-17 | 2022-02-01 |  |  |  |  |  |  | 1 | Gl |
| F2221ZA000021 |  | Acreditación personal por CODELCO |  | 45d | 2021-12-17 A | 2022-04-02 A | F2221ZA000027 SS | 100% |  | 2021-12-17 | 2022-02-01 |  |  |  |  |  |  | 1 | Gl |
| F2221ZA000018 |  | Movilización de personal, equipos y materiales |  | 60d | 2022-01-03 A | 2022-04-03 A | F2221ZA000023 SS, F2221ZA000021 SS, F2221ZA000020 SS, F2221ZA000019 SS, F2221ZA000025 SS, H222100002 | 100% |  | 2022-01-03 | 2022-03-03 |  |  |  |  |  |  | 1 | Gl |
| F2221ZA000017 |  | Instalación de faenas para inicio Obras |  | 61d | 2022-01-08 A | 2023-03-07 | F2221ZA000019 SS, F2221ZA000018 SS, F2221ZA000024 SS | 80% | 30d | 2022-01-08 | 2022-03-09 | 74d | 0d |  | Movilizacion [18907 h] | 18,907 | 13,884 | 1 | Gl |

| ID | WBS | Activity | Type | Duration | Start | Finish | Predecessors | Complete | Remaining | Planned start | Planned finish | Total float | Free float | Constraint | Calendar | Resources | Cost | Actual cost | Spanish | Comments | IWP-BIM | CWA | DISCIPLINA | CWA Descripción | Criticidad FF | Estado Actividad | Criticidad TF | cwp |
| --- | --- | --- | --- | --- | --- | --- | --- | --- | --- | --- | --- | --- | --- | --- | --- | --- | --- | --- | --- | --- | --- | --- | --- | --- | --- | --- | --- | --- |
|  | 4 | **Desmovilización y retiro de instalación de faenas** |  |  | 2024-07-31 | 2024-09-05 |  |  |  |  |  |  |  |  |  |  |  |  |  |  |  |  |  |  |  |  |  |  |
| J2221ZA000029 |  | Desmovilización |  | 29d | 2024-07-31 | 2024-09-05 | J2221ZA000030 SS |  |  |  |  | 0d |  |  |  |  |  |  | 1 | Gl |  |  |  |  |  |  |  |  |
| J2221ZA000030 |  | Desarme Instalaciones |  | 15d | 2024-07-31 | 2024-08-22 | J2221ZA000031 SS |  |  |  |  | 0d |  |  |  | Movilizacion [12912 h] | 12,912 |  | 1 | Gl |  |  |  |  |  |  |  |  |
| J2221ZA000031 |  | Limpieza áreas de trabajo |  | 15d | 2024-07-31 | 2024-08-22 | R2221COM0529 |  |  |  |  | 0d |  |  |  |  |  |  | 1 | Gl |  |  |  |  |  |  |  |  |
|  | 3 | **PROCURA** |  |  | 2023-02-06 | 2023-03-15 |  |  |  |  |  |  |  |  |  |  |  |  |  |  |  |  |  |  |  |  |  |  |
|  | 1 | **VP** |  |  | 2023-02-06 | 2023-03-15 |  |  |  |  |  |  |  |  |  |  |  |  |  |  |  |  |  |  |  |  |  |  |
|  | 1 | **SALA ELÉCTRICA 02221-SEL-001** |  |  | 2023-02-06 | 2023-03-15 |  |  |  |  |  |  |  |  |  |  |  |  |  |  |  |  |  |  |  |  |  |  |
| H222100017 |  | Tablero De Distribución Nema 4. Barra tipo tablero de baja tensión, 400 V;300A; 50 Hz;15kA | milestone | 0d | 2023-02-06 | 2023-02-06 | H222100004 SF |  |  |  |  | 99d | 86d | finish on or after 2022-10-19 | Andina Dìas Corridos |  |  |  |  |  |  |  |  |  |  |  |  |  |
| H222100021 |  | Ventilador inyección de aire a Sala Eléctrica para Presurización con sistema de filtrado (02221-EPZ-001) | milestone | 0d | 2023-02-06 | 2023-02-06 | H222100004 SF |  |  |  |  | 73d | 60d | finish on or after 2022-11-18 | Andina Dìas Corridos |  |  |  |  |  |  |  |  |  |  |  |  |  |
| H222100023 |  | Tablero Servicios Auxiliares, 400-231 V; barra 100 A;3F+N+T;15 kA | milestone | 0d | 2023-02-06 | 2023-02-06 | H222100004 SF |  |  |  |  | 99d | 86d | finish on or after 2022-10-19 | Andina Dìas Corridos |  |  |  |  |  |  |  |  |  |  |  |  |  |
| H222100025 |  | UPS (fuente de poder ininterrumpible) 5kVA, 15kA(sym), 380V(3f) / 380V-220V (3f+N), NEMA 4 (IP-65) | milestone | 0d | 2023-02-06 | 2023-02-06 | H222100004 SF |  |  |  |  | 99d | 86d | finish on or after 2022-10-19 | Andina Dìas Corridos |  |  |  |  |  |  |  |  |  |  |  |  |  |
| H222100027 |  | Equipo de Aire Acondicionado | milestone | 0d | 2023-02-06 | 2023-02-06 | H222100004 SF |  |  |  |  | 73d | 60d | finish on or after 2022-10-19 | Andina Dìas Corridos |  |  |  |  |  |  |  |  |  |  |  |  |  |
| H222100029 |  | Sistema de Presurización Sala Eléctrica | milestone | 0d | 2023-02-06 | 2023-02-06 | H222100004 SF |  |  |  |  | 73d | 60d | finish on or after 2022-10-19 | Andina Dìas Corridos |  |  |  |  |  |  |  |  |  |  |  |  |  |
| H222100031 |  | Tablero Distribución Fuerza Comunicación | milestone | 0d | 2023-02-06 | 2023-02-06 | H222100004 SF |  |  |  |  | 99d | 86d | finish on or after 2022-10-19 | Andina Dìas Corridos |  |  |  |  |  |  |  |  |  |  |  |  |  |
| H222100033 |  | Tablero Distribución Fuerza Instrumentación | milestone | 0d | 2023-02-06 | 2023-02-06 | H222100004 SF |  |  |  |  | 99d | 86d | finish on or after 2022-10-19 | Andina Dìas Corridos |  |  |  |  |  |  |  |  |  |  |  |  |  |
| H222100037 |  | Cable multiconductor | milestone | 0d | 2023-02-06 | 2023-02-06 | H222100004 SF |  |  |  |  | 109d | 96d | finish on or after 2022-09-09 | Andina Dìas Corridos |  |  |  |  |  |  |  |  |  |  |  |  |  |
| H222100039 |  | SISTEMA CCTV | milestone | 0d | 2023-02-06 | 2023-02-06 | H222100004 SF |  |  |  |  | 310d | 146d | finish on or after 2022-11-16 | Andina Dìas Corridos |  |  |  |  |  |  |  |  |  |  |  |  |  |
| H222100035 |  | Variador de Frecuencia, TAG: 2221-VDF-001 | milestone | 0d | 2023-03-15 | 2023-03-15 | H222100004 SF |  |  |  |  | 52d | 38d | finish on or after 2023-03-15 | Andina Dìas Corridos |  |  |  |  |  |  |  |  |  |  |  |  |  |
|  | 2 | **CONSTRUCCIÓN Túnel de Acceso Principal** |  |  | 2022-01-17 | 2024-04-26 |  |  |  |  |  |  |  |  |  |  |  |  |  |  |  |  |  |  |  |  |  |  |
|  | 1 | **Nivel 17 Frente Nº1** |  |  | 2022-01-27 | 2024-03-14 |  |  |  |  |  |  |  |  |  |  |  |  |  |  |  |  |  |  |  |  |  |  |
|  | 1 | **MINERÍA** |  |  | 2022-01-27 | 2023-07-08 |  |  |  |  |  |  |  |  |  |  |  |  |  |  |  |  |  |  |  |  |  |  |
|  | 1 | **Rampa de Conectividad** |  |  | 2022-01-27 | 2023-03-09 |  |  |  |  |  |  |  |  |  |  |  |  |  |  |  |  |  |  |  |  |  |  |
| M222100036 |  | Habilitación de servicios y extracción de aire viciado |  | 15.5d | 2022-01-27 A | 2022-03-03 A | F2221ZA000017 SS | 100% |  | 2022-01-27 | 2022-02-12 |  |  |  | Andina 2 turnos | Mineria |  |  | 1 | Gl |  |  |  |  |  |  |  |  |
| M2221MAB00046-1 |  | Galería Acceso a Barrio Cívico nivel 17 (30 mts) |  | 13d | 2022-02-07 A | 2023-03-09 | M2221MAB00046, M2221MAB00045, M2221MAB00038-1 FS+5d | 90% | 7.5d | 2022-05-25 | 2022-06-07 | 184.52d | 0d |  | Andina 2 turnos | Mineria [3371 h]; DESARROLLO HORIZONTALES [30 h] | 3,371 | 1,426.19 | 35 | m | IWP-2221-MA-100-0106 | CWA-2221-100 | Mineria | CWA-2221-100 - Nível 17 Frente 1 | PND | Completado | PND | CWP-2221-MA-100 |

| ID | WBS | Activity | Duration | Start | Finish | Predecessors | Complete | Remaining | Planned start | Planned finish | Total float | Free float | Calendar | Resources | Cost | Actual cost | Spanish | Cantidad | Comments | IWP-BIM | CWA | DISCIPLINA | CWA Descripción | Criticidad FF | Estado Actividad | Criticidad TF | cwp |
| --- | --- | --- | --- | --- | --- | --- | --- | --- | --- | --- | --- | --- | --- | --- | --- | --- | --- | --- | --- | --- | --- | --- | --- | --- | --- | --- | --- |
|  | 1 | **Rampa de conectividad (356 m)** |  | 2022-02-07 | 2023-02-25 |  |  |  |  |  |  |  |  |  |  |  |  |  |  |  |  |  |  |  |  |  |  |
| M2221MAB00046 |  | 0 - 40 mts. (Pk 0 a Pk 40) | 21d | 2022-02-07 A | 2022-05-05 A |  | 100% |  | 2022-03-04 | 2022-03-25 |  |  | Andina 2 turnos | Mineria [4495 h]; DESARROLLO HORIZONTALES [40 h] | 4,495 | 4,495 | 40 | 40 | m | IWP-2221-MA-100-0107 | CWA-2221-100 | Mineria | CWA-2221-100 - Nível 17 Frente 1 | PND | Completado | PND | CWP-2221-MA-100 |
| M2221MAB476 |  | 380 - 365 mts. (Pk 380 a Pk 363) | 6d | 2022-03-23 A | 2022-04-22 A | M222100036 | 100% |  | 2022-04-18 | 2022-04-24 |  |  | Andina 2 turnos | Mineria [1810 h]; DESARROLLO HORIZONTALES [15 h] | 1,810 | 1,810 | 35 |  | m | IWP-2221-MA-100-0108 | CWA-2221-100 | Mineria | CWA-2221-100 - Nível 17 Frente 1 | PND | Completado | PND | CWP-2221-MA-100 |
| M2221MAB00038 |  | 360 - 365 mts. (Pk 360 a Pk 380) | 3d | 2022-04-11 A | 2022-04-13 A |  | 100% |  | 2022-12-14 | 2022-12-17 |  |  | Andina 2 turnos | Mineria [438 h]; DESARROLLO HORIZONTALES [5 h] | 438 | 438 | 35 |  | m | IWP-2221-MA-100-0117 | CWA-2221-100 | Mineria | CWA-2221-100 - Nível 17 Frente 1 | PND | Completado | PND | CWP-2221-MA-100 |
| M2221MAB00045 |  | 40- 80 mts. (Pk 40 a Pk 80) | 20d | 2022-05-05 A | 2022-05-31 A |  | 100% |  | 2022-05-05 | 2022-05-25 |  |  | Andina 2 turnos | Mineria [4495 h]; DESARROLLO HORIZONTALES [40 h] | 4,495 | 4,495 | 40 |  | m | IWP-2221-MA-100-0109 | CWA-2221-100 | Mineria | CWA-2221-100 - Nível 17 Frente 1 | PND | Completado | PND | CWP-2221-MA-100 |
| M2221MAB00044 |  | 80 - 120 mts. (Pk 80a Pk 120) | 13d | 2022-05-31 A | 2022-06-15 A | M2221MAB00045 | 100% |  | 2022-06-30 | 2022-07-13 |  |  | Andina 2 turnos | Mineria [4495 h]; DESARROLLO HORIZONTALES [40 h] | 4,495 | 4,495 | 40 |  | m | IWP-2221-MA-100-0110 | CWA-2221-100 | Mineria | CWA-2221-100 - Nível 17 Frente 1 | PND | Completado | PND | CWP-2221-MA-100 |
| M2221MAB00043 |  | 120 - 160 mts. (Pk 120 a Pk 160) | 13d | 2022-06-15 A | 2022-06-29 A | M2221MAB00044 | 100% |  | 2022-07-13 | 2022-07-26 |  |  | Andina 2 turnos | Mineria [4495 h]; DESARROLLO HORIZONTALES [40 h] | 4,495 | 4,495 | 40 |  | m | IWP-2221-MA-100-0111 | CWA-2221-100 | Mineria | CWA-2221-100 - Nível 17 Frente 1 | PND | Completado | PND | CWP-2221-MA-100 |
| M2221MAB00042 |  | 160 - 200 mts. (Pk 160 a Pk 200) | 13d | 2022-06-29 A | 2022-07-29 A | M2221MAB00043 | 100% |  | 2022-07-26 | 2022-08-08 |  |  | Andina 2 turnos | Mineria [4495 h]; DESARROLLO HORIZONTALES [40 h] | 4,495 | 4,495 | 40 |  | m | IWP-2221-MA-100-0112 | CWA-2221-100 | Mineria | CWA-2221-100 - Nível 17 Frente 1 | PND | Completado | PND | CWP-2221-MA-100 |
| M2221MAB00041 |  | 200 - 240 mts. (Pk 200 a Pk 240) | 13d | 2022-07-29 A | 2022-08-26 A | M2221MAB00042 | 100% |  | 2022-08-08 | 2022-08-21 |  |  | Andina 2 turnos | Mineria [4495 h]; DESARROLLO HORIZONTALES [40 h] | 4,495 | 4,495 | 40 |  | m | IWP-2221-MA-100-0113 | CWA-2221-100 | Mineria | CWA-2221-100 - Nível 17 Frente 1 | PND | Completado | PND | CWP-2221-MA-100 |
| M2221MAB00040 |  | 240 - 280 mts. (Pk 240 a Pk 280) | 13d | 2022-08-26 A | 2022-09-16 A | M2221MAB00041 | 100% |  | 2022-08-21 | 2022-09-03 |  |  | Andina 2 turnos | Mineria [4495 h]; DESARROLLO HORIZONTALES [40 h] | 4,495 | 4,495 | 40 |  | m | IWP-2221-MA-100-0114 | CWA-2221-100 | Mineria | CWA-2221-100 - Nível 17 Frente 1 | PND | Completado | PND | CWP-2221-MA-100 |
| M2221MAB00039 |  | 280 - 320 mts. (Pk 280 a Pk 320) | 14d | 2022-09-20 A | 2022-10-07 A | M2221MAB00040 | 100% |  | 2022-09-03 | 2022-09-17 |  |  | Andina 2 turnos | Mineria [4495 h]; DESARROLLO HORIZONTALES [40 h] | 4,495 | 4,495 | 40 |  | m | IWP-2221-MA-100-0115 | CWA-2221-100 | Mineria | CWA-2221-100 - Nível 17 Frente 1 | PND | Completado | PND | CWP-2221-MA-100 |
| M2221MAB00038-1 |  | 320 - 360 mts. (Pk 320 a Pk 360) | 14d | 2022-10-10 A | 2023-02-25 | M2221MAB00039, M2221CAC00068 SS+25d | 94% | 8.25d | 2022-09-17 | 2022-10-03 | 0.02d | 0d | Andina 2 turnos | Mineria [4495 h]; DESARROLLO HORIZONTALES [40 h] | 4,495 | 4,225 | 35 |  | m | IWP-2221-MA-100-0116 | CWA-2221-100 | Mineria | CWA-2221-100 - Nível 17 Frente 1 | PND | Completado | PND | CWP-2221-MA-100 |
|  | 2 | **Desquinches** |  | 2022-09-20 | 2023-03-19 |  |  |  |  |  |  |  |  |  |  |  |  |  |  |  |  |  |  |  |  |  |  |
| M2221MDB00048 |  | Ensanche Emergencia Nº1 (Pk 321 a Pk 365) | 20d | 2022-09-20 A | 2023-03-07 | M2221MAB00038-1 |  | 10d | 2023-02-15 | 2023-03-07 | 0.02d | 0d | Andina 2 turnos | Mineria [4578 h] | 4,578 | 3,920 | 5 |  | m3 | IWP-2221-MD-100-0197 | CWA-2221-100 | Mineria | CWA-2221-100 - Nível 17 Frente 1 | PND | Completado | PND | CWP-2221-MD-100 |
| M2221MDB00049 |  | Ensanche Desarenador (PK 32 a Pk 55) | 13d | 2022-11-12 A | 2022-11-27 A | M2221MAB00046 | 100% |  | 2022-12-11 | 2022-12-24 |  |  | Andina 2 turnos | Mineria [3727 h] | 3,727 | 3,727 | 84 |  | m3 | IWP-2221-MD-100-0196 | CWA-2221-100 | Mineria | CWA-2221-100 - Nível 17 Frente 1 | PND | Completado | PND | CWP-2221-MD-100 |
| M2221MDB00050 |  | Ensanche Retorno N17 (Sector Este Barrio Civico) | 10d | 2023-03-09 | 2023-03-19 | M2221MAB00046 SS, M2221MDB00049, M2221MDB00048, M2221MDB00049 FF, M2221MAB00046-1 |  |  |  |  | 184.52d | 88.5d | Andina 2 turnos | Mineria [4257 h] | 4,257 |  | 321 |  | m3 | IWP-2221-MD-110-0198 | CWA-2221-100 | Mineria | CWA-2221-100 - Nível 17 Frente 1 | PND | Sin Iniciar | PND | CWP-2221-MD-110 |
|  | 3 | **Sistema de Seguridad Curva** |  | 2023-06-28 | 2023-07-08 |  |  |  |  |  |  |  |  |  |  |  |  |  |  |  |  |  |  |  |  |  |  |
| M2221ME000052 |  | Montaje sistema FBC Curva emerg Nº1 | 7d | 2023-06-28 | 2023-07-08 | M2221MDB00048, M2221CCA00066-1, M2221CCA00063, M2221MDB00050 |  |  |  |  | 96.02d | 87.02d | Andina 2 turnos | Mineria [512 h] | 512 |  | 45 |  | m | IWP-2221-BA-100-0015 | CWA-2221-100 | PND | CWA-2221-100 - Nível 17 Frente 1 | PND | Sin Iniciar | PND | CWP-2221-BA-100 |
|  | 4 | **Fortificación Cables** |  | 2022-12-01 | 2023-03-17 |  |  |  |  |  |  |  |  |  |  |  |  |  |  |  |  |  |  |  |  |  |  |
| M2221ME000054-1 |  | Fortificación mediante cables Minicage (Ensanche Desarenador ) | 10d | 2022-12-01 A | 2023-02-16 | M2221MDB00049 | 20% | 10d | 2022-12-30 | 2023-01-10 | 0.02d | 0d | Andina 2 turnos | Mineria [1274 h] | 1,274 | 254 | 200 |  | un | IWP-2221-MA-100-0119 | CWA-2221-100 | Mineria | CWA-2221-100 - Nível 17 Frente 1 | PND | Completado | PND | CWP-2221-MA-100 |
| M2221ME000054 |  | Fortificación mediante cables Minicage (Ensanche Emergencia) | 10d | 2023-03-07 | 2023-03-17 | M2221MDB00048, M2221MDB00049, M2221ME000054-1 |  |  |  |  | 70.02d | 0d | Andina 2 turnos | Mineria [1274 h] | 1,274 |  | 200 |  | un | IWP-2221-MA-100-0118 | CWA-2221-100 | Mineria | CWA-2221-100 - Nível 17 Frente 1 | PND | Sin Iniciar | PND | CWP-2221-MA-100 |
|  | 2 | **OBRAS CIVILES** |  | 2022-10-12 | 2023-09-15 |  |  |  |  |  |  |  |  |  |  |  |  |  |  |  |  |  |  |  |  |  |  |
|  | 1 | **CANALETA - CRUCE GALERIA NIVEL 17** |  | 2023-04-06 | 2023-05-07 |  |  |  |  |  |  |  |  |  |  |  |  |  |  |  |  |  |  |  |  |  |  |
| M2221CAC00057 |  | CANALETA - CRUCE GALERIA NIVEL 17 | 30d | 2023-04-06 | 2023-05-07 | M2221CCA420, M2221CAC00059 |  |  |  |  | 421.02d | 0.02d | Andina 2 turnos | Obras Civiles [90 h]; HORMIGONES [2 h] | 90 |  | 1 |  | Gl | IWP-2221-CA-120-0030 | CWA-2221-100 | PND | CWA-2221-100 - Nível 17 Frente 1 | PND | Sin Iniciar | PND | CWP-2221-CA-120 |

| ID | WBS | Activity | Duration | Start | Finish | Predecessors | Remaining | Planned start | Planned finish | Total float | Free float | Calendar | Resources | Cost | Actual cost | Spanish | Comments | IWP-BIM | CWA | DISCIPLINA | CWA Descripción | Criticidad FF | Estado Actividad | Criticidad TF | cwp |
| --- | --- | --- | --- | --- | --- | --- | --- | --- | --- | --- | --- | --- | --- | --- | --- | --- | --- | --- | --- | --- | --- | --- | --- | --- | --- |
|  | 3 | **CANALETA - DESCARGA DESARENADOR** |  | 2023-02-27 | 2023-03-29 |  |  |  |  |  |  |  |  |  |  |  |  |  |  |  |  |  |  |  |  |
| M2221CAC00059 |  | CANALETA - DESCARGA DESARENADOR | 30d | 2023-02-27 | 2023-03-29 | M2221CAC00068 |  |  |  | 53.27d | 0d | Andina 2 turnos | Obras Civiles [110 h]; HORMIGONES [4 h] | 110 |  | 1 | Gl | IWP-2221-CA-120-0031 | CWA-2221-100 | PND | CWA-2221-100 - Nível 17 Frente 1 | PND | Sin Iniciar | PND | CWP-2221-CA-120 |
|  | 4 | **CANALETA - CRUCE RAMPA CONECTIVIDAD** |  | 2023-03-29 | 2023-04-08 |  |  |  |  |  |  |  |  |  |  |  |  |  |  |  |  |  |  |  |  |
| M2221CAC00061 |  | CANALETA - CRUCE RAMPA CONECTIVIDAD | 10d | 2023-03-29 | 2023-04-08 | M2221CAC00059 |  |  |  | 53.27d | 53.25d | Andina 2 turnos | Obras Civiles [200 h]; HORMIGONES [5 h] | 200 |  | 1 | Gl | IWP-2221-CA-120-0032 | CWA-2221-100 | PND | CWA-2221-100 - Nível 17 Frente 1 | PND | Sin Iniciar | PND | CWP-2221-CA-120 |
|  | 2 | **Pavimento Rampa Conectividad N17** |  | 2022-12-14 | 2023-07-14 |  |  |  |  |  |  |  |  |  |  |  |  |  |  |  |  |  |  |  |  |
| M2221CCA422 |  | Picado, escarpe, emplantillado Rampa Conectividad N17 261 a 410 mts | 10d | 2022-12-14 A | 2023-03-17 | M2221MDB00048 | 10d | 2022-12-29 | 2023-01-09 | 0.02d | 0d | Andina 2 turnos | Obras Civiles [2601 h]; CARPETA RODADO | 2,601 | 932 | 2520 | m2 | IWP-2221-CC-100-0043 | CWA-2221-100 | PND | CWA-2221-100 - Nível 17 Frente 1 | PND | Sin Iniciar | PND | CWP-2221-CC-100 |
| M2221CCA00065 |  | Pavimento Rampa Conectividad N17 261 a 410 mts | 15d | 2023-01-05 A | 2023-05-17 | M2221CCA426, M2221CCA422 | 15d | 2023-03-11 | 2023-03-26 | 0.02d | 0d | Andina 2 turnos | Obras Civiles [1115 h]; CARPETA RODADO [1015 h] | 1,115 | 15 | 2520 | m2 | IWP-2221-CC-100-0038 | CWA-2221-100 | PND | CWA-2221-100 - Nível 17 Frente 1 | PND | Sin Iniciar | PND | CWP-2221-CC-100 |
| M2221CCA420 |  | Picado, escarpe, emplantillado Rampa Conectividad N17 160 a 261 mts | 20d | 2023-01-09 A | 2023-04-06 | M2221CCA422 | 20d | 2023-01-31 | 2023-02-20 | 0.02d | 0d | Andina 2 turnos | Obras Civiles [1763 h]; CARPETA RODADO | 1,763 | 751 | 2520 | m2 | IWP-2221-CC-100-0041 | CWA-2221-100 | PND | CWA-2221-100 - Nível 17 Frente 1 | PND | Sin Iniciar | PND | CWP-2221-CC-100 |
| M2221CCA424 |  | Picado, escarpe, emplantillado Rampa Conectividad N17 160 a 60 mts | 15d | 2023-04-06 | 2023-04-21 | M2221CCA420, M2241MAB00471-2 |  |  |  | 0.02d | 0d | Andina 2 turnos | Obras Civiles [1746 h]; CARPETA RODADO | 1,746 |  | 2520 | m2 | IWP-2221-CC-100-0044 | CWA-2221-100 | PND | CWA-2221-100 - Nível 17 Frente 1 | PND | Sin Iniciar | PND | CWP-2221-CC-100 |
| M2221CCA426 |  | Picado, escarpe, emplantillado Rampa Conectividad N17 60 a 0 mts | 10d | 2023-04-21 | 2023-05-02 | M2221CCA424 |  |  |  | 0.02d | 0d | Andina 2 turnos | Obras Civiles [1048 h]; CARPETA RODADO | 1,048 |  | 2520 | m2 | IWP-2221-CC-100-0045 | CWA-2221-100 | PND | CWA-2221-100 - Nível 17 Frente 1 | PND | Sin Iniciar | PND | CWP-2221-CC-100 |
| M2221CCA00065-1 |  | Curado de Pavimento | 15d | 2023-05-17 | 2023-06-01 | M2221CCA00065 |  |  |  | 0.02d | 0d | Andina 2 turnos | Obras Civiles |  |  | 2520 | m2 | IWP-2221-CC-100-0490 | CWA-2221-100 | PND | CWA-2221-100 - Nível 17 Frente 1 | PND | Sin Iniciar | PND | CWP-2221-CC-100 |
| M2221CCA00066-1 |  | Pavimento Rampa Conectividad N17 160 a 261 mts | 10d | 2023-05-17 | 2023-05-27 | M2221MAB00038, M2241MAB00476 SS, M2221CCA420, H222100012, M2221CCA422, M2221CCA00065 |  |  |  | 10.02d | 0.02d | Andina 2 turnos | Obras Civiles [756 h]; CARPETA RODADO [688 h] | 756 |  | 2520 | m2 | IWP-2221-CC-100-0042 | CWA-2221-100 | PND | CWA-2221-100 - Nível 17 Frente 1 | PND | Sin Iniciar | PND | CWP-2221-CC-100 |
| M2221CCA00064 |  | Pavimento Rampa Conectividad N17 160 a 60 mts | 10d | 2023-06-01 | 2023-06-17 | M2221CCA00065, M2221CCA00065-1, M2221CCA424, M2221CAC00061 |  |  |  | 0.02d | 0d | Andina 2 turnos | Obras Civiles [748 h]; CARPETA RODADO [681 h] | 748 |  | 2520 | m2 | IWP-2221-CC-100-0039 | CWA-2221-100 | PND | CWA-2221-100 - Nível 17 Frente 1 | PND | Sin Iniciar | PND | CWP-2221-CC-100 |
| M2221CCA00063 |  | Pavimento Rampa Conectividad N17 60 a 0 mts | 6d | 2023-06-17 | 2023-06-28 | M2221CCA00064, M2221CCA426 |  |  |  | 0.02d | 0d | Andina 2 turnos | Obras Civiles [449 h]; CARPETA RODADO [136 h] | 449 |  | 2520 | m2 | IWP-2221-CC-100-0040 | CWA-2221-100 | PND | CWA-2221-100 - Nível 17 Frente 1 | PND | Sin Iniciar | PND | CWP-2221-CC-100 |
| M2221CCA00065-3 |  | Curado de Pavimento | 10d | 2023-06-28 | 2023-07-14 | M2221CCA00063 |  |  |  | 48.02d | 39.02d | Andina 2 turnos | Obras Civiles |  |  | 2520 | m2 | IWP-2221-CC-100-0491 | CWA-2221-100 | PND | CWA-2221-100 - Nível 17 Frente 1 | PND | Sin Iniciar | PND | CWP-2221-CC-100 |
|  | 5 | **DESARENADOR** |  | 2023-01-23 | 2023-02-27 |  |  |  |  |  |  |  |  |  |  |  |  |  |  |  |  |  |  |  |  |
| M2221CAC00068 |  | DESARENADOR | 30d | 2023-01-23 A | 2023-02-27 | M2221ME000054-1 SS+54d | 21d | 2023-02-06 | 2023-03-08 | 0.02d | 0d | Andina 2 turnos | Obras Civiles [578 h]; HORMIGONES [24 h] | 578 | 173.4 | 1 | Gl | IWP-2221-CA-120-0033 | CWA-2221-100 | PND | CWA-2221-100 - Nível 17 Frente 1 | PND | Completado | PND | CWP-2221-CA-120 |
|  | 7 | **Sala Eléctrica** |  | 2023-03-09 | 2023-04-06 |  |  |  |  |  |  |  |  |  |  |  |  |  |  |  |  |  |  |  |  |
| M2221CAC00076 |  | Pernos de Anclaje - Acero ASTM A36 | 2d | 2023-03-09 | 2023-03-10 | M2221ME000084 |  |  |  | 13d | 0d |  | Obras Civiles [220 h] | 220 |  |  |  | IWP-2221-CA-110-0024 | CWA-2221-100 | PND | CWA-2221-100 - Nível 17 Frente 1 | PND | Completado | PND | CWP-2221-CA-110 |
| M2221CAC00075 |  | Barras de anclaje ø22mm | 2d | 2023-03-11 | 2023-03-12 | M2221CAC00076 |  |  |  | 13d | 0d |  | Obras Civiles [221 h] | 221 |  |  |  | IWP-2221-CA-110-0025 | CWA-2221-100 | PND | CWA-2221-100 - Nível 17 Frente 1 | PND | Completado | PND | CWP-2221-CA-110 |
| M2221CAC00073 |  | Armadura de refuerzo A630-420H | 5d | 2023-03-13 | 2023-03-17 | M2221CAC00075 |  |  |  | 13d | 0d |  | Obras Civiles [992 h] | 992 |  |  |  | IWP-2221-CA-110-0026 | CWA-2221-100 | PND | CWA-2221-100 - Nível 17 Frente 1 | PND | Sin Iniciar | PND | CWP-2221-CA-110 |
| M2221CAC00071 |  | Malla tipo ACMA C257 | 5d | 2023-03-18 | 2023-03-22 | M2221CAC00073, M2221CAC00073 FF |  |  |  | 13d | 0d |  | Obras Civiles [551 h] | 551 |  |  |  | IWP-2221-CA-110-0027 | CWA-2221-100 | PND | CWA-2221-100 - Nível 17 Frente 1 | PND | Sin Iniciar | PND | CWP-2221-CA-110 |
| M2221CAC00072 |  | Radier Hormigón G30 | 3d | 2023-03-23 | 2023-03-25 | M2221CAC00073, M2221CAC00071 |  |  |  | 13d | 0d |  | Obras Civiles [331 h]; HORMIGONES [27 h] | 331 |  |  |  | IWP-2221-CA-110-0028 | CWA-2221-100 | PND | CWA-2221-100 - Nível 17 Frente 1 | PND | Sin Iniciar | PND | CWP-2221-CA-110 |
| M2221DAB00074 |  | Estructura Mediana Acero ASTM + Planchas PV6 Instapanel para Muro y Techo Sala Electrica | 9d | 2023-03-26 | 2023-04-03 | M2221CAC00072 |  |  |  | 13d | 0d |  | Obras Civiles [441 h] | 441 |  |  |  | IWP-2221-DA-110-0082 | CWA-2221-100 | PND | CWA-2221-100 - Nível 17 Frente 1 | PND | Sin Iniciar | PND | CWP-2221-DA-110 |
| M2221CAC00070 |  | Construcción Sala Eléctrica Muros Hormigón G30 | 3d | 2023-04-04 | 2023-04-06 | M2221ME000084, M2221CAC00071, M2221CAC00072, M2221DAB00074 |  |  |  | 13d | 0d |  | Obras Civiles [331 h] | 331 |  |  |  | IWP-2221-CA-110-0029 | CWA-2221-100 | PND | CWA-2221-100 - Nível 17 Frente 1 | PND | Sin Iniciar | PND | CWP-2221-CA-110 |

| ID | WBS | Activity | Duration | Start | Finish | Predecessors | Remaining | Planned start | Planned finish | Total float | Free float | Calendar | Resources | Cost | Actual cost | IWP-BIM | CWA | DISCIPLINA | CWA Descripción | Criticidad FF | Estado Actividad | Criticidad TF | cwp |
| --- | --- | --- | --- | --- | --- | --- | --- | --- | --- | --- | --- | --- | --- | --- | --- | --- | --- | --- | --- | --- | --- | --- | --- |
|  | 6 | **PUERTA VENTILACION 02221-PRT-003@005** |  | 2023-06-28 | 2023-09-15 |  |  |  |  |  |  |  |  |  |  |  |  |  |  |  |  |  |  |
| M2221CAC00081 |  | Planchas Acero Calidad - PUERTA VENTILACION 02221-PRT-003@005 (Tapado Estructural) | 15d | 2023-06-28 | 2023-07-22 | M2221CCA00066-1, M2221CCA00063 |  |  |  | 0.02d | 0d | Andina 2 turnos | Obras Civiles [364 h] | 364 |  | IWP-2221-DA-100-0080 | CWA-2221-100 | PND | CWA-2221-100 - Nível 17 Frente 1 | PND | Sin Iniciar | PND | CWP-2221-DA-100 |
| M2221CAC00080 |  | Armadura de refuerzo A630-420H - PUERTA VENTILACION 02221-PRT-003@005 (Tapado Estructural) | 15d | 2023-07-22 | 2023-08-11 | M2221CAC00081 |  |  |  | 0.02d | 0d | Andina 2 turnos | Obras Civiles [364 h] | 364 |  | IWP-2221-CA-100-0022 | CWA-2221-100 | PND | CWA-2221-100 - Nível 17 Frente 1 | PND | Sin Iniciar | PND | CWP-2221-CA-100 |
| M2221CAC00079 |  | Estructura Liviana Acero ASTM <30 kg/m - PUERTA VENTILACION 02221-PRT-003@005 (Tapado Estructural) | 24d | 2023-08-11 | 2023-09-09 | M2221CAC00080 |  |  |  | 0.02d | 0d | Andina 2 turnos | Obras Civiles [583 h] | 583 |  | IWP-2221-DA-100-0081 | CWA-2221-100 | PND | CWA-2221-100 - Nível 17 Frente 1 | PND | Sin Iniciar | PND | CWP-2221-DA-100 |
| M2221CAC00078 |  | Viga Fundación y Radier Hormigón G30 - PUERTA VENTILACION 02221-PRT-003@005 | 6d | 2023-09-09 | 2023-09-15 | M2221CAC00079 |  |  |  | 0.02d |  | Andina 2 turnos | Obras Civiles [146 h]; HORMIGONES [3 h] | 146 |  | IWP-2221-CA-100-0023 | CWA-2221-100 | PND | CWA-2221-100 - Nível 17 Frente 1 | PND | Sin Iniciar | PND | CWP-2221-CA-100 |
|  | 8 | **Saneamientos** |  | 2022-10-12 | 2023-03-22 |  |  |  |  |  |  |  |  |  |  |  |  |  |  |  |  |  |  |
| M2221ME000084 |  | Saneamiento estocada existente para Sala Eléctrica 02221-SEL-001 | 10d | 2022-10-12 A | 2023-03-09 | M2221MAB00043, M2221MAB00042, M2221CAC00068 | 10d | 2022-12-24 | 2023-01-04 | 13.27d | 0d | Andina 2 turnos | Obras Civiles [612 h] | 612 | 490 | IWP-2221-BA-110-0016 | CWA-2221-100 | PND | CWA-2221-100 - Nível 17 Frente 1 | PND | Completado | PND | CWP-2221-BA-110 |
| M2221ME000083 |  | Saneamiento 2 portones ventilación existentes N17 | 6d | 2023-03-16 | 2023-03-22 | M2221ME000084 FS+7d |  |  |  | 179.27d | 105.27d | Andina 2 turnos | Obras Civiles [669 h] | 669 |  | IWP-2221-BA-130-0017 | CWA-2221-100 | PND | CWA-2221-100 - Nível 17 Frente 1 | PND | Sin Iniciar | PND | CWP-2221-BA-130 |
|  | 3 | **MECÁNICA** |  | 2023-04-07 | 2023-11-15 |  |  |  |  |  |  |  |  |  |  |  |  |  |  |  |  |  |  |
|  | 2 | **Rampa** |  | 2023-09-15 | 2023-11-15 |  |  |  |  |  |  |  |  |  |  |  |  |  |  |  |  |  |  |
| M2221DBF00090 |  | Puerta de ventilación Rampa 02221-PRT-003 (Ancho 4,1m x Altura 4,2m) 1 de 4 | 20d | 2023-09-15 | 2023-10-06 | M2221CCA00063, M2221CAC00078 |  |  |  | 0d |  |  | Mecanica [1386 h] | 1,386 |  | IWP-2221-KM-100-0100 | CWA-2221-100 | PND | CWA-2221-100 - Nível 17 Frente 1 | PND | Sin Iniciar | PND | CWP-2221-KM-100 |
| M2221DBF00089 |  | Puerta de ventilación Rampa 02221-PRT-004 (Ancho 4,1m x Altura 4,2m) 2 de 4 | 20d | 2023-10-07 | 2023-10-26 | M2221DBF00090 |  |  |  | 0d |  |  | Mecanica [1386 h] | 1,386 |  | IWP-2221-KM-100-0101 | CWA-2221-100 | PND | CWA-2221-100 - Nível 17 Frente 1 | PND | Sin Iniciar | PND | CWP-2221-KM-100 |
| M2221DBF00088 |  | Puerta de ventilación Rampa 02221-PRT-005 (Ancho 4,1m x Altura 4,2m) 3 de 4 | 20d | 2023-10-27 | 2023-11-15 | M2221DBF00089 |  |  |  | 0d |  |  | Mecanica [1386 h] | 1,386 |  | IWP-2221-KM-100-0102 | CWA-2221-100 | PND | CWA-2221-100 - Nível 17 Frente 1 | PND | Sin Iniciar | PND | CWP-2221-KM-100 |
|  | 1 | **Sala Eléctrica y de Comunicación y Control** |  | 2023-04-07 | 2023-04-21 |  |  |  |  |  |  |  |  |  |  |  |  |  |  |  |  |  |  |
| M2221SD000094 |  | Montaje Equipos aire acondicionado, Ventilador inyección de aire a sala eléctrica | 10d | 2023-04-07 | 2023-04-16 | M2221CAC00070, H222100021, H222100027, H222100029 |  |  |  | 13d | 0d |  | Mecanica [1001 h] | 1,001 |  | IWP-2221-EC-110-0095 | CWA-2221-100 | PND | CWA-2221-100 - Nível 17 Frente 1 | PND | Sin Iniciar | PND | CWP-2221-EC-110 |
| M2221SD000093 |  | Celosía gravitacional sala eléctrica TAG: 02221-ZZM-001 | 1d | 2023-04-17 | 2023-04-17 | M2221SD000094 |  |  |  | 13d | 0d |  | Mecanica [12 h] | 12 |  | IWP-2221-EC-110-0096 | CWA-2221-100 | PND | CWA-2221-100 - Nível 17 Frente 1 | PND | Sin Iniciar | PND | CWP-2221-EC-110 |
| M2221DFB00092 |  | Portón acceso / Puerta peatonal sala eléctrica y Sala contro | 4d | 2023-04-18 | 2023-04-21 | M2221SD000093 |  |  |  | 13d | 0d |  | Mecanica [616 h] | 616 |  | IWP-2221-KM-110-0103 | CWA-2221-100 | PND | CWA-2221-100 - Nível 17 Frente 1 | PND | Sin Iniciar | PND | CWP-2221-KM-110 |
|  | 4 | **CAÑERÍA** |  | 2023-05-07 | 2023-05-09 |  |  |  |  |  |  |  |  |  |  |  |  |  |  |  |  |  |  |
|  | 1 | **Desarenador** |  | 2023-05-07 | 2023-05-09 |  |  |  |  |  |  |  |  |  |  |  |  |  |  |  |  |  |  |
| M2221PAD00098 |  | Cañería Descarga de Desarenador | 3d | 2023-05-07 | 2023-05-09 | M2221MAB00038, M2221CAC00068, M2221CAC00057 |  |  |  | 421d |  |  | Cañeria [125 h] | 125 |  | IWP-2221-PA-100-0218 | CWA-2221-100 | PND | CWA-2221-100 - Nível 17 Frente 1 | PND | Sin Iniciar | PND | CWP-2221-PA-100 |
|  | 5 | **ELECTRICIDAD** |  | 2023-04-22 | 2023-09-25 |  |  |  |  |  |  |  |  |  |  |  |  |  |  |  |  |  |  |
|  | 1 | **Sala Eléctrica 02221-SEL-001** |  | 2023-04-22 | 2023-05-26 |  |  |  |  |  |  |  |  |  |  |  |  |  |  |  |  |  |  |
| M2221QF0000101 |  | Variador de frecuencia MT con transformador de aislación 1kVA 13,2/4,16 kV, TAG: 2221-VDF-001 | 10d | 2023-04-22 | 2023-05-02 | M2221DFB00092, H222100035 |  |  |  | 13d | 0d |  | Electricidad [493 h] | 493 |  | IWP-2221-QE-110-0280 | CWA-2221-100 | PND | CWA-2221-100 - Nível 17 Frente 1 | PND | Sin Iniciar | PND | CWP-2221-QE-110 |
| M2221QF000103-3 |  | Montaje de Soportes, Canalizacion (Sala Electrica) | 20d | 2023-04-22 | 2023-05-12 | M2221DFB00092 |  |  |  | 13d | 0d |  | Electricidad [227 h]; CABLES | 227 |  | IWP-2221-RD-100-0317 | CWA-2221-100 | PND | CWA-2221-100 - Nível 17 Frente 1 | PND | Sin Iniciar | PND | CWP-2221-RD-100 |
| M2221QF0000100 |  | Montaje Ups, 2 Tableros de fuerza y 1 Alumbrado | 10d | 2023-05-03 | 2023-05-12 | M2221QF0000101, H222100025, H222100031, H222100033, H222100023, H222100017 |  |  |  | 13d | 0d |  | Electricidad [569 h] | 569 |  | IWP-2221-QF-110-0281 | CWA-2221-100 | PND | CWA-2221-100 - Nível 17 Frente 1 | PND | Sin Iniciar | PND | CWP-2221-QF-110 |
| M2221QF000099 |  | Montaje Botonera Jog, Tablero enchufe industriales 32A, Luminarias, Cargador de Banco | 10d | 2023-05-13 | 2023-05-22 | M2221DFB00092, M2221QF0000100 |  |  |  | 13d | 0d |  | Electricidad [439 h] | 439 |  | IWP-2241-QF-400-0480 | CWA-2221-100 | PND | CWA-2221-100 - Nível 17 Frente 1 | PND | Sin Iniciar | PND | CWP-2241-QF-400 |
| M2221QF000103-5 |  | Montaje de Soportación, Canalizacion y cableado (Sala Electrica) | 10d | 2023-05-13 | 2023-05-22 | M2221QF000103-3, H222100037 |  |  |  | 13d | 0d |  | Electricidad [605 h]; CABLES [500 h] | 605 |  | IWP-2221-RD-100-0318 | CWA-2221-100 |  | CWA-2221-100 - Nível 17 Frente 1 | PND | Sin Iniciar | PND | CWP-2221-RD-100 |
| M2221QF000102-1 |  | Montaje Conexionado (Sala Electrica) | 4d | 2023-05-23 | 2023-05-26 | M2221QF000103-3, M2221QF000099, M2221QF000103-5 |  |  |  | 79d | 70d |  | Electricidad [227 h] | 227 |  | IWP-2221-RE-100-0321 | CWA-2221-100 | PND | CWA-2221-100 - Nível 17 Frente 1 | PND | Sin Iniciar | PND | CWP-2221-RE-100 |

| ID | WBS | Activity | Duration | Start | Finish | Predecessors | Total float | Free float | Resources | Cost | IWP-BIM | CWA | DISCIPLINA | CWA Descripción | Criticidad FF | Estado Actividad | Criticidad TF | cwp |
| --- | --- | --- | --- | --- | --- | --- | --- | --- | --- | --- | --- | --- | --- | --- | --- | --- | --- | --- |
|  | 2 | **Rampa** |  | 2023-05-27 | 2023-09-25 |  |  |  |  |  |  |  |  |  |  |  |  |  |
| M2221QF000104 |  | Montaje eléctrico (soportes) Tramo 1 | 20d | 2023-05-27 | 2023-06-26 | M2221CCA00066-1, M2221QF000099, M2221CCA00065, M2221CCA00065-1 SS+10d, M2221QF000103-5 | 9d | 0d | Electricidad [6045 h]; CABLES | 6,045 | IWP-2221-RB-100-0302 | CWA-2221-100 | PND | CWA-2221-100 - Nível 17 Frente 1 | PND | Sin Iniciar | PND | CWP-2221-RB-100 |
| M2221QF000104-1 |  | Montaje eléctrico (soportes) Tramo 2 | 20d | 2023-06-27 | 2023-07-27 | M2221QF000104 | 9d | 0d | Electricidad [6044 h]; CABLES | 6,044 | IWP-2221-RB-100-0303 | CWA-2221-100 | PND | CWA-2221-100 - Nível 17 Frente 1 | PND | Sin Iniciar | PND | CWP-2221-RB-100 |
| M2221QF000103 |  | Montaje eléctrico (canalización | 15d | 2023-07-28 | 2023-08-17 | M2221QF000104, M2221QF000104-1 | 9d | 0d | Electricidad [4533 h]; CABLES | 4,533 | IWP-2221-RD-100-0319 | CWA-2221-100 | PND | CWA-2221-100 - Nível 17 Frente 1 | PND | Sin Iniciar | PND | CWP-2221-RD-100 |
| M2221QF000103-1 |  | Montaje eléctrico (cableado) | 15d | 2023-08-18 | 2023-09-03 | M2221QF000103 | 9d | 0d | Electricidad [4081 h]; CABLES [7870 h] | 4,081 | IWP-2221-RD-100-0320 | CWA-2221-100 | PND | CWA-2221-100 - Nível 17 Frente 1 | PND | Sin Iniciar | PND | CWP-2221-RD-100 |
| M2221QF000102 |  | Montaje eléctrico (Conexionado) | 20d | 2023-09-04 | 2023-09-25 | M2221QF000099, M2221CCA00066-1, M2221CCA00063, M2221QF000103, M2221QF000103-1, M2221QF000103-3, M2221QF000102-1, M2221CCA00065-3 | 9d | 0d | Electricidad [5441 h] | 5,441 | IWP-2221-RE-100-0322 | CWA-2221-100 | PND | CWA-2221-100 - Nível 17 Frente 1 | PND | Sin Iniciar | PND | CWP-2221-RE-100 |
|  | 6 | **INSTRUMENTACIÓN** |  | 2023-05-13 | 2024-03-14 |  |  |  |  |  |  |  |  |  |  |  |  |  |
|  | 1 | **Instrumentación Sala Eléctrica** |  | 2023-05-13 | 2023-07-15 |  |  |  |  |  |  |  |  |  |  |  |  |  |
| M2221QF000105 |  | ALIMENTACIÓN ELECTRICA | 6d | 2023-05-13 | 2023-05-18 | M2221QF000099 SS | 143d | 0d | Instrumentacion [154 h] | 154 | IWP-2221-SA-110-0325 | CWA-2221-100 | PND | CWA-2221-100 - Nível 17 Frente 1 | PND | Sin Iniciar | PND | CWP-2221-SA-110 |
| M2221SC000112 |  | TELEFONIA | 6d | 2023-05-19 | 2023-05-24 | M2221QF000099 SS, M2221QF000105 | 143d | 0d | Instrumentacion [21 h] | 21 | IWP-2221-SA-110-0326 | CWA-2221-100 | PND | CWA-2221-100 - Nível 17 Frente 1 | PND | Sin Iniciar | PND | CWP-2221-SA-110 |
| M2221SB000109 |  | SCADA ELECTRICO | 6d | 2023-05-25 | 2023-05-30 | M2221QF000099 SS, M2221SC000112 | 143d | 0d | Instrumentacion [308 h] | 308 | IWP-2221-SA-110-0327 | CWA-2221-100 | PND | CWA-2221-100 - Nível 17 Frente 1 | PND | Sin Iniciar | PND | CWP-2221-SA-110 |
| M2221SB000111 |  | SISTEMA DETECCION AUTOMATICA DE INCENDIO | 4d | 2023-05-31 | 2023-06-03 | M2221QF000099 SS, M2221SB000109 | 143d | 0d | Instrumentacion [443 h] | 443 | IWP-2221-SA-110-0328 | CWA-2221-100 | PND | CWA-2221-100 - Nível 17 Frente 1 | PND | Sin Iniciar | PND | CWP-2221-SA-110 |
| M2221SA000106 |  | PULSADOR MANUAL TAG:02221-HS-1300@1310 | 5d | 2023-06-04 | 2023-06-16 | M2221QF000099 SS, M2221SB000111 | 143d | 0d | Instrumentacion [42 h] | 42 | IWP-2221-SA-110-0329 | CWA-2221-100 | PND | CWA-2221-100 - Nível 17 Frente 1 | PND | Sin Iniciar | PND | CWP-2221-SA-110 |
| M2221SB000107 |  | RADIOCOMUNICACIONES | 6d | 2023-06-17 | 2023-06-25 | M2221QF000099, M2221SA000106 | 143d | 0d | Instrumentacion [385 h] | 385 | IWP-2221-SA-110-0330 | CWA-2221-100 | PND | CWA-2221-100 - Nível 17 Frente 1 | PND | Sin Iniciar | PND | CWP-2221-SA-110 |
| M2221SD000108 |  | RED INTEGRADA DE SUPERVISIÓN Y CONTROL (RISC) | 6d | 2023-06-26 | 2023-07-01 | M2221QF000099 SS, M2221SB000107 | 143d | 0d | Instrumentacion [385 h] | 385 | IWP-2221-SA-110-0331 | CWA-2221-100 | PND | CWA-2221-100 - Nível 17 Frente 1 | PND | Sin Iniciar | PND | CWP-2221-SA-110 |
| M2221SB000110 |  | SISTEMA CCTV | 6d | 2023-07-02 | 2023-07-15 | M2221QF000099 SS, M2221SD000108, H222100039 | 143d | 134d | Instrumentacion [364 h] | 364 | IWP-2221-SA-110-0332 | CWA-2221-100 | PND | CWA-2221-100 - Nível 17 Frente 1 | PND | Sin Iniciar | PND | CWP-2221-SA-110 |
|  | 2 | **Acceso desde Nivel 17** |  | 2023-06-27 | 2024-03-14 |  |  |  |  |  |  |  |  |  |  |  |  |  |
|  | 1 | **Instrumentación acceso desde nivel 17** |  | 2023-06-27 | 2023-08-29 |  |  |  |  |  |  |  |  |  |  |  |  |  |
| M2221PD000118 |  | SOPORTES | 14d | 2023-06-27 | 2023-07-21 | M2221QF000104 | 131d | 0d | Instrumentacion [1300 h] | 1,300 | IWP-2221-PD-100-0250 | CWA-2221-100 | PND | CWA-2221-100 - Nível 17 Frente 1 | PND | Sin Iniciar | PND | CWP-2221-PD-100 |
| M2221SE000114 |  | CANALIZACIONES | 8d | 2023-07-22 | 2023-07-29 | M2221PD000118 | 131d | 0d | Instrumentacion [540 h] | 540 | IWP-2221-RC-100-0310 | CWA-2221-100 | PND | CWA-2221-100 - Nível 17 Frente 1 | PND | Sin Iniciar | PND | CWP-2221-RC-100 |
| M2221SE000113 |  | CABLES | 10d | 2023-07-30 | 2023-08-11 | M2221SE000114 | 131d | 0d | Instrumentacion [7937 h]; CABLES [3010 h] | 7,937 | IWP-2221-SE-100-0434 | CWA-2221-100 | PND | CWA-2221-100 - Nível 17 Frente 1 | PND | Sin Iniciar | PND | CWP-2221-SE-100 |
| M2221RDD00116 |  | MUFA FIBRA ÓPTICA | 5d | 2023-08-12 | 2023-08-19 | M2221SE000113 | 131d | 0d | Instrumentacion [172 h] | 172 | IWP-2221-SE-100-0435 | CWA-2221-100 | PND | CWA-2221-100 - Nível 17 Frente 1 | PND | Sin Iniciar | PND | CWP-2221-SE-100 |
| M2221SA000115 |  | INSTRUMENTOS | 5d | 2023-08-20 | 2023-08-26 | M2221RDD00116 | 131d | 0d | Instrumentacion [126 h] | 126 | IWP-2221-SA-100-0323 | CWA-2221-100 | PND | CWA-2221-100 - Nível 17 Frente 1 | PND | Sin Iniciar | PND | CWP-2221-SA-100 |
| M2221SB000117 |  | SISTEMA CCTV | 3d | 2023-08-27 | 2023-08-29 | M2221SA000115 | 131d | 111d | Instrumentacion [112 h] | 112 | IWP-2221-SA-100-0324 | CWA-2221-100 | PND | CWA-2221-100 - Nível 17 Frente 1 | PND | Sin Iniciar | PND | CWP-2221-SA-100 |

| ID | WBS | Activity | Duration | Start | Finish | Predecessors | Complete | Remaining | Planned start | Planned finish | Total float | Free float | Calendar | Resources | Cost | Actual cost | IWP-BIM | CWA | DISCIPLINA | CWA Descripción | Criticidad FF | Estado Actividad | Criticidad TF | cwp | Iwp Frente 2 |
| --- | --- | --- | --- | --- | --- | --- | --- | --- | --- | --- | --- | --- | --- | --- | --- | --- | --- | --- | --- | --- | --- | --- | --- | --- | --- |
|  | 2 | **Extensión Sistema Radiocomunicaciones por Haulage II** |  | 2024-01-10 | 2024-03-14 |  |  |  |  |  |  |  |  |  |  |  |  |  |  |  |  |  |  |  |  |
| M2221SE000120 |  | Conduit, Flexible. | 10d | 2024-01-10 | 2024-01-19 | M2241SE000506, R2221PRECOM0527, M2241SA000508 |  |  |  |  | 9d | 0d |  | Instrumentacion [149 h] | 149 |  | IWP-2221-SC-100-0429 | CWA-2221-100 | PND | CWA-2221-100 - Nível 17 Frente 1 | PND | Sin Iniciar | PND | CWP-2221-SC-100 |  |
| M2221SE000119 |  | Cable Radiante 7/8" y 50Ohm | 30d | 2024-01-20 | 2024-02-18 | M2241SE000506, R2221PRECOM0527, M2241SA000508, M2221SE000120 |  |  |  |  | 25d | 5d |  | Instrumentacion [4480 h]; CABLES [8000 h] | 4,480 |  | IWP-2221-SC-100-0430 | CWA-2221-100 | PND | CWA-2221-100 - Nível 17 Frente 1 | PND | Sin Iniciar | PND | CWP-2221-SC-100 |  |
| M2221SE000121 |  | Fibra óptica monomodo 9/125 um. | 30d | 2024-01-20 | 2024-02-18 | M2241SE000506, R2221PRECOM0527, M2241SA000508, M2221SE000120 |  |  |  |  | 9d | 0d |  | Instrumentacion [4095 h]; CABLES [7000 h] | 4,095 |  | IWP-2221-SC-100-0431 | CWA-2221-100 | PND | CWA-2221-100 - Nível 17 Frente 1 | PND | Sin Iniciar | PND | CWP-2221-SC-100 |  |
| M2221SB000123 |  | Unidad Remota (RU) | 20d | 2024-02-19 | 2024-03-09 | M2241SE000506, R2221PRECOM0527, M2241SA000508, M2221SE000121 |  |  |  |  | 9d | 0d |  | Instrumentacion [252 h] | 252 |  | IWP-2221-SC-100-0432 | CWA-2221-100 | PND | CWA-2221-100 - Nível 17 Frente 1 | PND | Sin Iniciar | PND | CWP-2221-SC-100 |  |
| M2221SE000122 |  | Jumper F.O. | 5d | 2024-03-10 | 2024-03-14 | M2241SE000506, R2221PRECOM0527, M2241SA000508, M2221SB000123 |  |  |  |  | 9d | 0d |  | Instrumentacion [42 h] | 42 |  | IWP-2221-SC-100-0433 | CWA-2221-100 | PND | CWA-2221-100 - Nível 17 Frente 1 | PND | Sin Iniciar | PND | CWP-2221-SC-100 |  |
|  | 2 | **Nivel 16 Frente 2** |  | 2022-01-17 | 2024-04-26 |  |  |  |  |  |  |  |  |  |  |  |  |  |  |  |  |  |  |  |  |
|  | 1 | **MINERÍA** |  | 2022-01-17 | 2023-09-15 |  |  |  |  |  |  |  |  |  |  |  |  |  |  |  |  |  |  |  |  |
|  | 1 | **Facilidad Constructiva** |  | 2022-01-17 | 2022-03-06 |  |  |  |  |  |  |  |  |  |  |  |  |  |  |  |  |  |  |  |  |
| M2221MAB00125 |  | Habilitación sistema retiro aire viciado y servicios | 11.5d | 2022-01-17 A | 2022-02-06 A | F2221ZA000020 | 100% |  | 2022-01-31 | 2022-02-12 |  |  | Andina 2 turnos | Mineria |  |  | IWP-2221-MA-200-0121 | CWA-2221-200 | Mineria | CWA-2221-200 - Nível 16 Frente 2 | PND | Completado | PND | CWP-2221-MA-200 |  |
| M2221MAB00124 |  | Excavación Galería Facilidad Constructiva | 13d | 2022-02-07 A | 2022-03-06 A | M2221MAB00125 SS | 100% |  | 2022-02-12 | 2022-02-25 |  |  | Andina 2 turnos | Mineria [2131 h]; DESARROLLO HORIZONTALES [25 h] | 2,131 | 2,131 | IWP-2221-MA-200-0120 | CWA-2221-200 | Mineria | CWA-2221-200 - Nível 16 Frente 2 | PND | Completado | PND | CWP-2221-MA-200 |  |
|  | 2 | **Rampa** |  | 2022-03-03 | 2023-09-15 |  |  |  |  |  |  |  |  |  |  |  |  |  |  |  |  |  |  |  |  |
| M2221MAB00127 |  | Excavación Retorno Nº1 Tramo 1 0 a 44 (Pk 820) | 6d | 2022-09-21 A | 2023-02-14 | M2221MDB00167, M2221MAB00126 | 39% | 4d | 2023-06-10 | 2023-06-19 | 494d | 0d | Andina 2 turnos | Mineria [2476 h]; DESARROLLO HORIZONTALES [22 h] | 2,476 | 1,575.64 | IWP-2221-MD-202-001 | CWA-2221-200 | Mineria | CWA-2221-200 - Nível 16 Frente 2 | C0 | Sin Iniciar | C3 | CWP-2221-M-202 | IWP-2221-MD-202-001 |
| M2221MAB00126-1 |  | Excavación Retorno Nº1 Tramo 2 44 a 88 (Pk 845) | 5d | 2022-10-12 A | 2022-12-26 A |  | 100% |  | 2023-07-02 | 2023-07-10 |  |  | Andina 2 turnos | Mineria [2476 h]; DESARROLLO HORIZONTALES [22 h] | 2,476 | 2,476 | IWP-2221-MD-202-002 | CWA-2221-200 | Mineria | CWA-2221-200 - Nível 16 Frente 2 | C0 | Sin Iniciar | C3 | CWP-2221-M-202 | IWP-2221-MD-202-002 |
| M2221MAB00126 |  | Excavación Retorno Nº1 Tramo 2 44 a 88 (Pk 845) | 5d | 2023-01-13 A | 2023-02-10 | M2221MAB00155 | 22% | 4d | 2023-07-02 | 2023-07-10 | 184d | 0d | Andina 2 turnos | Mineria [2476 h]; DESARROLLO HORIZONTALES [22 h] | 2,476 | 1,575.64 | IWP-2221-MD-202-003 | CWA-2221-200 | Mineria | CWA-2221-200 - Nível 16 Frente 2 | C0 | Sin Iniciar | C3 | CWP-2221-M-202 | IWP-2221-MD-202-003 |
| M2221MAB00127-1 |  | Excavación Retorno Nº1 Tramo 1 0 a 44 (Pk 820) | 11d | 2023-02-14 | 2023-02-24 | M2221MAB00127 |  |  |  |  | 559d |  | Andina Dìas Corridos | Mineria [2476 h]; DESARROLLO HORIZONTALES [22 h] | 2,476 |  | IWP-2221-MD-202-004 | CWA-2221-200 | Mineria | CWA-2221-200 - Nível 16 Frente 2 | C0 | Sin Iniciar | C3 | CWP-2221-M-202 | IWP-2221-MD-202-004 |
|  | 1 | **Excavación Rampa Conectividad 1499 m + 54 m hacia N17** |  | 2022-03-03 | 2023-09-15 |  |  |  |  |  |  |  |  |  |  |  |  |  |  |  |  |  |  |  |  |
| M2221MAB00142 |  | 0 - 40 mts. (Pk 380 a Pk 420) | 22d | 2022-03-03 A | 2022-03-24 A | M2221MAB00124 | 100% |  | 2022-03-06 | 2022-03-28 |  |  | Andina 2 turnos | Mineria [4472 h]; DESARROLLO HORIZONTALES [40 h] | 4,472 | 4,472 | IWP-2221-MA-210-0135 | CWA-2221-200 | Mineria | CWA-2221-200 - Nível 16 Frente 2 | PND | Completado | PND | CWP-2221-M-201 |  |
| M2221MAB00142-1 |  | 40 - 80 mts. (Pk 420 a Pk 460) | 16d | 2022-03-26 A | 2022-04-23 A | M2221MAB00142, M2221MAB476 SS | 100% |  | 2022-03-28 | 2022-04-13 |  |  | Andina 2 turnos | Mineria [4472 h]; DESARROLLO HORIZONTALES [40 h] | 4,472 | 4,472 | IWP-2221-MA-210-0136 | CWA-2221-200 | Mineria | CWA-2221-200 - Nível 16 Frente 2 | PND | Completado | PND | CWP-2221-M-201 |  |
| M2221MAB00143 |  | 80 - 120 mts. (Pk 460 a Pk 500) | 16d | 2022-04-24 A | 2022-05-06 A | M2221MAB00142, M2221MAB00142-1 | 100% |  | 2022-05-13 | 2022-05-29 |  |  | Andina 2 turnos | Mineria [4472 h]; DESARROLLO HORIZONTALES [40 h] | 4,472 | 4,472 | IWP-2221-MA-210-0137 | CWA-2221-200 | Mineria | CWA-2221-200 - Nível 16 Frente 2 | PND | Completado | PND | CWP-2221-M-201 |  |
| M2221MAB00144 |  | 120 - 160 mts. (Pk 500 a Pk 540) | 15d | 2022-05-07 A | 2022-05-19 A | M2221MAB00143 | 100% |  | 2022-12-10 | 2022-12-25 |  |  | Andina 2 turnos | Mineria [4472 h]; DESARROLLO HORIZONTALES [40 h] | 4,472 | 4,472 | IWP-2221-MA-210-0138 | CWA-2221-200 | Mineria | CWA-2221-200 - Nível 16 Frente 2 | PND | Completado | PND | CWP-2221-M-201 |  |
| M2221MAB00145 |  | 160 - 200 mts. (Pk 540 a Pk 580) | 13d | 2022-05-20 A | 2022-06-08 A | M2221MAB00144 | 100% |  | 2022-12-25 | 2023-01-08 |  |  | Andina 2 turnos | Mineria [4472 h]; DESARROLLO HORIZONTALES [40 h] | 4,472 | 4,472 | IWP-2221-MA-210-0139 | CWA-2221-200 | Mineria | CWA-2221-200 - Nível 16 Frente 2 | PND | Completado | PND | CWP-2221-M-201 |  |
| M2221MAB00146 |  | PK 580 al 590 | 5d | 2022-06-09 A | 2022-06-12 A | M2221MAB00145 | 100% |  | 2022-11-29 | 2022-12-04 |  |  | Andina 2 turnos | Mineria [1199 h]; DESARROLLO HORIZONTALES [10.7 h] | 1,199 | 1,199 | IWP-2221-MA-210-0140 | CWA-2221-200 | Mineria | CWA-2221-200 - Nível 16 Frente 2 | PND | Completado | PND | CWP-2221-M-201 |  |
| M2221MAB00146-1 |  | PK 590,749 al 615,865 | 8d | 2022-06-12 A | 2022-06-19 A |  | 100% |  | 2023-02-06 | 2023-02-13 |  |  | Andina Dìas Corridos | Mineria [2808 h]; DESARROLLO HORIZONTALES [25.12 h] | 2,808 | 2,808 | IWP-2221-MA-201-001 | CWA-2221-200 | Mineria | CWA-2221-200 - Nível 16 Frente 2 | PND | Completado | PND | CWP-2221-M-201 | IWP-2221-MA-201-001 |
| M2221MAB00147 |  | PK 615,865 al 640,981 | 13d | 2022-06-20 A | 2022-07-03 A | M2221MAB00146 | 100% |  | 2022-12-12 | 2022-12-25 |  |  | Andina 2 turnos | Mineria [2808 h]; DESARROLLO HORIZONTALES [25.12 h] | 2,808 | 2,808 | IWP-2221-MA-201-002 | CWA-2221-200 | Mineria | CWA-2221-200 - Nível 16 Frente 2 | PND | Completado | PND | CWP-2221-M-201 | IWP-2221-MA-201-002 |
| M2221MAB00148 |  | PK 641 al 651,8 | 5d | 2022-07-04 A | 2022-07-07 A | M2221MAB00147 | 100% |  | 2022-12-25 | 2022-12-30 |  |  | Andina 2 turnos | Mineria [1199 h]; DESARROLLO HORIZONTALES [11 h] | 1,199 | 1,199 | IWP-2221-MA-201-003 | CWA-2221-200 | Mineria | CWA-2221-200 - Nível 16 Frente 2 | PND | Completado | PND | CWP-2221-M-201 | IWP-2221-MA-201-003 |
| M2221MAB00149 |  | PK 651,8 al 666,2 | 3d | 2022-07-07 A | 2022-07-14 A | M2221MAB00148 | 100% |  | 2023-01-08 | 2023-01-11 |  |  | Andina 2 turnos | Mineria [1598 h]; DESARROLLO HORIZONTALES [14 h] | 1,598 | 1,598 | IWP-2221-MA-202-001 | CWA-2221-200 | Mineria | CWA-2221-200 - Nível 16 Frente 2 | PND | Completado | PND | CWP-2221-M-202 | IWP-2221-MA-202-001 |
| M2221MAB00150 |  | PK 666,2 al 691,3 | 7d | 2022-07-15 A | 2022-07-26 A | M2221MAB00149 | 100% |  | 2023-01-21 | 2023-01-28 |  |  | Andina 2 turnos | Mineria [2797 h]; DESARROLLO HORIZONTALES [25 h] | 2,797 | 2,797 | IWP-2221-MA-202-002 | CWA-2221-200 | Mineria | CWA-2221-200 - Nível 16 Frente 2 | PND | Completado | PND | CWP-2221-M-202 | IWP-2221-MA-202-002 |
| M2221MAB00151 |  | PK 691,3 al 716,4 | 11d | 2022-07-27 A | 2022-08-07 A | M2221MAB00150 | 100% |  | 2022-11-29 | 2022-12-10 |  |  | Andina 2 turnos | Mineria [2808 h]; DESARROLLO HORIZONTALES [25 h] | 2,808 | 2,808 | IWP-2221-MA-202-003 | CWA-2221-200 | Mineria | CWA-2221-200 - Nível 16 Frente 2 | PND | Completado | PND | CWP-2221-M-202 | IWP-2221-MA-202-003 |
| M2221MAB00152 |  | PK 716,4 al 737,9 | 10d | 2022-08-08 A | 2022-08-18 A | M2221MAB00151 | 100% |  | 2022-12-12 | 2022-12-22 |  |  | Andina 2 turnos | Mineria [2397 h]; DESARROLLO HORIZONTALES [21 h] | 2,397 | 2,397 | IWP-2221-MA-202-004 | CWA-2221-200 | Mineria | CWA-2221-200 - Nível 16 Frente 2 | PND | Completado | PND | CWP-2221-M-202 | IWP-2221-MA-202-004 |
| M2221MAB00153 |  | PK 737,9 al 759,4 | 10d | 2022-08-19 A | 2022-08-29 A | M2221MAB00152 | 100% |  | 2022-11-29 | 2022-12-09 |  |  | Andina 2 turnos | Mineria [2397 h]; DESARROLLO HORIZONTALES [21 h] | 2,397 | 2,397 | IWP-2221-MA-201-001 | CWA-2221-200 | Mineria | CWA-2221-200 - Nível 16 Frente 2 | PND | Completado | PND | CWP-2221-M-202 | IWP-2221-MA-201-001 |
| M2221MAB00154 |  | PK 759,4 al 780,9 | 10d | 2022-08-30 A | 2022-09-09 A | M2221MAB00153 | 100% |  | 2022-12-12 | 2022-12-22 |  |  | Andina 2 turnos | Mineria [2397 h]; DESARROLLO HORIZONTALES [21 h] | 2,397 | 2,397 | IWP-2221-MA-201-001 | CWA-2221-200 | Mineria | CWA-2221-200 - Nível 16 Frente 2 | PND | Completado | PND | CWP-2221-M-202 | IWP-2221-MA-201-001 |
| M2221MAB00155 |  | PK 780,9 al 802,4 | 10d | 2022-09-10 A | 2022-09-20 A | M2221MAB00154 | 100% |  | 2022-12-25 | 2023-01-05 |  |  | Andina 2 turnos | Mineria [2397 h]; DESARROLLO HORIZONTALES [21 h] | 2,397 | 2,397 | IWP-2221-MA-202-007 | CWA-2221-200 | Mineria | CWA-2221-200 - Nível 16 Frente 2 | PND | Completado | PND | CWP-2221-M-202 | IWP-2221-MA-202-007 |
| M2221MAB00156 |  | PK 802,4 al 823,9 | 10d | 2022-09-21 A | 2022-10-01 A | M2221MAB00155 | 100% |  | 2022-12-11 | 2022-12-21 |  |  | Andina 2 turnos | Mineria [2397 h]; DESARROLLO HORIZONTALES [21 h] | 2,397 | 2,397 | IWP-2221-MA-202-008 | CWA-2221-200 | Mineria | CWA-2221-200 - Nível 16 Frente 2 | PND | Completado | PND | CWP-2221-M-202 | IWP-2221-MA-202-008 |
| M2221MAB00157 |  | PK 823,9 al 845,4 | 10d | 2022-10-02 A | 2022-10-12 A | M2221MAB00156 | 100% |  | 2022-12-14 | 2022-12-24 |  |  | Andina 2 turnos | Mineria [2397 h]; DESARROLLO HORIZONTALES [21 h] | 2,397 | 2,397 | IWP-2221-MA-201-003 | CWA-2221-200 | Mineria | CWA-2221-200 - Nível 16 Frente 2 | PND | Completado | PND | CWP-2221-M-202 | IWP-2221-MA-201-003 |
| M2221MAB00158 |  | PK 845,4 al 859,8 | 7d | 2022-10-13 A | 2022-10-20 A | M2221MAB00157 | 100% |  | 2023-01-14 | 2023-01-21 |  |  | Andina 2 turnos | Mineria [1598 h]; DESARROLLO HORIZONTALES [14 h] | 1,598 | 1,598 | IWP-2221-MA-202-001 | CWA-2221-200 | Mineria | CWA-2221-200 - Nível 16 Frente 2 | PND | Completado | PND | CWP-2221-M-202 | IWP-2221-MA-202-001 |
| M2221MAB00159 |  | PK 859,8 al 867 | 2.77d | 2022-10-21 A | 2022-10-23 A |  | 100% |  | 2023-02-05 | 2023-02-08 |  |  | Andina 2 turnos | Mineria [799 h]; DESARROLLO HORIZONTALES [7 h] | 799 | 799 | IWP-2221-MA-203-001 | CWA-2221-200 | Mineria | CWA-2221-200 - Nível 16 Frente 2 | PND | Completado | PND | CWP-2221-M-203 | IWP-2221-MA-203-001 |
| M2221MAB00160 |  | PK 867 al 888,5 | 10d | 2022-10-24 A | 2022-10-31 A | M2221MAB00159 | 100% |  | 2023-02-22 | 2023-03-04 |  |  | Andina 2 turnos | Mineria [2397 h]; DESARROLLO HORIZONTALES [21 h] | 2,397 | 2,397 | IWP-2221-MA-203-002 | CWA-2221-200 | Mineria | CWA-2221-200 - Nível 16 Frente 2 | PND | Completado | PND | CWP-2221-M-203 | IWP-2221-MA-203-002 |
| M2221MAB00161 |  | PK 888,5 al 913,6 | 11d | 2022-11-01 A | 2022-11-09 A | M2221MAB00160 | 100% |  | 2023-03-10 | 2023-03-21 |  |  | Andina 2 turnos | Mineria [2808 h]; DESARROLLO HORIZONTALES [25 h] | 2,808 | 2,808 | IWP-2221-MA-203-003 | CWA-2221-200 | Mineria | CWA-2221-200 - Nível 16 Frente 2 | PND | Completado | PND | CWP-2221-M-203 | IWP-2221-MA-203-003 |
| M2221MAB00162 |  | PK 913,6 al 938,7 | 11d | 2022-11-10 A | 2022-11-18 A | M2221MAB00161, M2221MAB00127 | 100% |  | 2023-03-26 | 2023-04-06 |  |  | Andina 2 turnos | Mineria [2808 h]; DESARROLLO HORIZONTALES [25 h] | 2,808 | 2,808 | IWP-2221-MA-203-004 | CWA-2221-200 | Mineria | CWA-2221-200 - Nível 16 Frente 2 | C0 | En Progreso | C3 | CWP-2221-M-203 | IWP-2221-MA-203-004 |
| M2221MAB00141 |  | PK 938,7 al 963,8 | 11d | 2022-11-19 A | 2022-11-27 A | M2221MAB00162 | 100% |  | 2023-04-11 | 2023-04-22 |  |  | Andina 2 turnos | Mineria [2808 h]; DESARROLLO HORIZONTALES [25 h] | 2,808 | 2,808 | IWP-2221-MA-203-005 | CWA-2221-200 | Mineria | CWA-2221-200 - Nível 16 Frente 2 | C0 | Sin Iniciar | C3 | CWP-2221-M-203 | IWP-2221-MA-203-005 |
| M2221MAB00140 |  | PK 963,8 al 988,9 | 11d | 2022-11-28 A | 2022-12-08 A | M2221MAB00141 | 100% |  | 2023-04-27 | 2023-05-09 |  |  | Andina 2 turnos | Mineria [2808 h]; DESARROLLO HORIZONTALES [25 h] | 2,808 | 2,808 | IWP-2221-MA-203-006 | CWA-2221-200 | Mineria | CWA-2221-200 - Nível 16 Frente 2 | C0 | Sin Iniciar | C3 | CWP-2221-M-203 | IWP-2221-MA-203-006 |
| M2221MAB00139 |  | PK 988,9 al 1010,4 | 10d | 2022-12-09 A | 2022-12-19 A | M2221MAB00140 | 100% |  | 2023-05-14 | 2023-05-24 |  |  | Andina 2 turnos | Mineria [2397 h]; DESARROLLO HORIZONTALES [21 h] | 2,397 | 2,397 | IWP-2221-MA-203-007 | CWA-2221-200 | Mineria | CWA-2221-200 - Nível 16 Frente 2 | C0 | Sin Iniciar | C3 | CWP-2221-M-203 | IWP-2221-MA-203-007 |
| M2221MAB00138 |  | PK 1010,4 al 1031,9 | 4.27d | 2022-12-20 A | 2022-12-30 A | M2221MAB00139, M2221MAB00165 | 100% |  | 2023-06-08 | 2023-06-15 |  |  | Andina 2 turnos | Mineria [2397 h]; DESARROLLO HORIZONTALES [21 h] | 2,397 | 2,397 | IWP-2221-MA-203-008 | CWA-2221-200 | Mineria | CWA-2221-200 - Nível 16 Frente 2 | C0 | Sin Iniciar | C3 | CWP-2221-M-203 | IWP-2221-MA-203-008 |
| M2221MAB00137 |  | PK 1031,9 al 1046,3 | 3.27d | 2022-12-31 A | 2023-01-07 A | M2221MAB00138 | 100% |  | 2023-06-22 | 2023-06-25 |  |  | Andina 2 turnos | Mineria [1598 h]; DESARROLLO HORIZONTALES [14 h] | 1,598 | 1,598 | IWP-2221-MA-203-009 | CWA-2221-200 | Mineria | CWA-2221-200 - Nível 16 Frente 2 | C0 | Sin Iniciar | C3 | CWP-2221-M-203 | IWP-2221-MA-203-009 |
| M2221MAB00136 |  | PK 1046,3 al 1053,5 | 2d | 2023-01-08 A | 2023-01-12 A |  | 100% |  | 2023-07-07 | 2023-07-09 |  |  | Andina 2 turnos | Mineria [799 h]; DESARROLLO HORIZONTALES [7 h] | 799 | 799 | IWP-2221-MA-204-001 | CWA-2221-200 | Mineria | CWA-2221-200 - Nível 16 Frente 2 | C0 | Sin Iniciar | C3 | CWP-2221-M-204 | IWP-2221-MA-204-001 |
| M2221MAB00135 |  | PK 1053,5 al 1075 | 6d | 2023-01-13 A | 2023-01-23 A |  | 100% |  | 2023-04-22 | 2023-04-28 |  |  | Andina 2 turnos | Mineria [2397 h]; DESARROLLO HORIZONTALES [21 h] | 2,397 | 2,397 | IWP-2221-MA-204-002 | CWA-2221-200 | Mineria | CWA-2221-200 - Nível 16 Frente 2 | C0 | Sin Iniciar | C3 | CWP-2221-M-204 | IWP-2221-MA-204-002 |
| M2221MAB00134 |  | PK 1075 al 1096,5 | 6d | 2023-01-24 A | 2023-02-03 A | M2221MDB00170, M2221MAB00135 | 100% |  | 2023-05-02 | 2023-05-08 |  |  | Andina 2 turnos | Mineria [2397 h]; DESARROLLO HORIZONTALES [21 h] | 2,397 | 2,397 | IWP-2221-MA-204-003 | CWA-2221-200 | Mineria | CWA-2221-200 - Nível 16 Frente 2 | C0 | Sin Iniciar | C3 | CWP-2221-M-204 | IWP-2221-MA-204-003 |
| M2221MAB00133 |  | PK 1096,6 al 1118,1 | 6d | 2023-02-04 A | 2023-02-10 |  |  | 4d | 2023-05-08 | 2023-05-14 | 64d | 0d | Andina 2 turnos | Mineria [2397 h]; DESARROLLO HORIZONTALES [22 h] | 2,397 | 817 | IWP-2221-MA-204-004 | CWA-2221-200 | Mineria | CWA-2221-200 - Nível 16 Frente 2 | C0 | Sin Iniciar | C3 | CWP-2221-M-204 | IWP-2221-MA-204-004 |
| M2221MAB00132 |  | PK 1118,1 al 1139,6 | 6d | 2023-02-10 | 2023-02-16 | M2221MAB00133 |  |  |  |  | 64d | 0d | Andina 2 turnos | Mineria [2397 h]; DESARROLLO HORIZONTALES [22 h] | 2,397 |  | IWP-2221-MA-204-005 | CWA-2221-200 | Mineria | CWA-2221-200 - Nível 16 Frente 2 | C0 | Sin Iniciar | C3 | CWP-2221-M-204 | IWP-2221-MA-204-005 |
| M2221MAB00131 |  | PK 1139,6 al 1164,7 | 7d | 2023-02-23 | 2023-03-02 | M2221MAB00164 |  |  |  |  | 64d | 0d | Andina 2 turnos | Mineria [2808 h]; DESARROLLO HORIZONTALES [25 h] | 2,808 |  | IWP-2221-MA-204-006 | CWA-2221-200 | Mineria | CWA-2221-200 - Nível 16 Frente 2 | C0 | Sin Iniciar | C3 | CWP-2221-M-204 | IWP-2221-MA-204-006 |
| M2221MAB00130 |  | PK 1164,7 al 1189,8 | 7d | 2023-03-02 | 2023-03-09 | M2221MAB00131 |  |  |  |  | 64d | 0d | Andina 2 turnos | Mineria [2808 h]; DESARROLLO HORIZONTALES [25 h] | 2,808 |  | IWP-2221-MA-204-007 | CWA-2221-200 | Mineria | CWA-2221-200 - Nível 16 Frente 2 | C0 | Sin Iniciar | C3 | CWP-2221-M-204 | IWP-2221-MA-204-007 |
| M2221MAB00130-1 |  | PK 1189,8 al 1214,9 | 7d | 2023-03-09 | 2023-03-16 | M2221MAB00130 |  |  |  |  | 64d | 0d | Andina 2 turnos | Mineria [2808 h]; DESARROLLO HORIZONTALES [25 h] | 2,808 |  | IWP-2221-MA-204-008 | CWA-2221-200 | Mineria | CWA-2221-200 - Nível 16 Frente 2 | C0 | Sin Iniciar | C3 | CWP-2221-M-204 | IWP-2221-MA-204-008 |
| M2221MAB00130-3 |  | PK 1214,9 al 1240 | 7d | 2023-03-16 | 2023-03-23 | M2221MAB00130-1 |  |  |  |  | 64d | 0d | Andina 2 turnos | Mineria [2808 h]; DESARROLLO HORIZONTALES [25 h] | 2,808 |  | IWP-2221-MA-204-009 | CWA-2221-200 | Mineria | CWA-2221-200 - Nível 16 Frente 2 | C0 | Sin Iniciar | C3 | CWP-2221-M-204 | IWP-2221-MA-204-009 |
| M2221MAB00129 |  | PK 1240 al 1265,1 | 7d | 2023-03-23 | 2023-03-30 | M2221MAB00130-3 |  |  |  |  | 64d | 0d | Andina 2 turnos | Mineria [2808 h]; DESARROLLO HORIZONTALES [25 h] | 2,808 |  | IWP-2221-MA-204-010 | CWA-2221-200 | Mineria | CWA-2221-200 - Nível 16 Frente 2 | C0 | Sin Iniciar | C3 | CWP-2221-M-204 | IWP-2221-MA-204-010 |
| M2221MAB00129-1 |  | PK 1265,1 al 1286,6 | 6d | 2023-03-30 | 2023-04-05 | M2221MAB00129 |  |  |  |  | 64d | 0.27d | Andina 2 turnos | Mineria [2397 h]; DESARROLLO HORIZONTALES [22 h] | 2,397 |  | IWP-2221-MA-204-011 | CWA-2221-200 | Mineria | CWA-2221-200 - Nível 16 Frente 2 | C0 | Sin Iniciar | C3 | CWP-2221-M-204 | IWP-2221-MA-204-011 |
| M2221MAB00167 |  | PK 1286,6 al 1308,1 | 6d | 2023-04-05 | 2023-04-10 | M2221MAB00129-1 |  |  |  |  | 70.73d | 0d | Andina Dìas Corridos |  |  |  | IWP-2221-MA-204-012 | CWA-2221-200 | Mineria | CWA-2221-200 - Nível 16 Frente 2 | C0 | Sin Iniciar | C3 | CWP-2221-M-204 | IWP-2221-MA-204-012 |
| M2221MAB00168 |  | PK 1308,1 al 1329,6 | 3.64d | 2023-04-11 | 2023-04-14 | M2221MAB00167 |  |  |  |  | 70.73d | 0d | Andina Dìas Corridos |  |  |  | IWP-2221-MA-204-013 | CWA-2221-200 | Mineria | CWA-2221-200 - Nível 16 Frente 2 | C0 | Sin Iniciar | C3 | CWP-2221-M-204 | IWP-2221-MA-204-013 |
| M2221MAB00169 |  | PK 1329,6 al 1351,1 | 6d | 2023-04-14 | 2023-04-20 | M2221MAB00168 |  |  |  |  | 70.73d | 0d | Andina Dìas Corridos |  |  |  | IWP-2221-MA-204-014 | CWA-2221-200 | Mineria | CWA-2221-200 - Nível 16 Frente 2 | C0 | Sin Iniciar | C3 | CWP-2221-M-204 | IWP-2221-MA-204-014 |
| M2221MAB00170 |  | PK 1351,1 al 1372,6 | 6d | 2023-04-20 | 2023-04-26 | M2221MAB00169 |  |  |  |  | 70.73d | 0d | Andina Dìas Corridos |  |  |  | IWP-2221-MA-204-015 | CWA-2221-200 | Mineria | CWA-2221-200 - Nível 16 Frente 2 | C0 | Sin Iniciar | C3 | CWP-2221-M-204 | IWP-2221-MA-204-015 |
| M2221MAB00171 |  | PK 1372,6 al 1394,1 | 6d | 2023-04-26 | 2023-05-02 | M2221MAB00170 |  |  |  |  | 70.73d | 0d | Andina Dìas Corridos |  |  |  | IWP-2221-MA-204-016 | CWA-2221-200 | Mineria | CWA-2221-200 - Nível 16 Frente 2 | C0 | Sin Iniciar | C3 | CWP-2221-M-204 | IWP-2221-MA-204-016 |
| M2221MAB00172 |  | PK 1394,1 al 1404,9 | 3d | 2023-05-02 | 2023-05-05 | M2221MAB00171 |  |  |  |  | 70.73d | 0d | Andina Dìas Corridos |  |  |  | IWP-2221-MA-204-017 | CWA-2221-200 | Mineria | CWA-2221-200 - Nível 16 Frente 2 | C0 | Sin Iniciar | C3 | CWP-2221-M-204 | IWP-2221-MA-204-017 |
| M2221MAB00173 |  | PK 1404,9 al 1415,7 | 3d | 2023-05-05 | 2023-05-08 | M2221MAB00172 |  |  |  |  | 70.73d | 0d | Andina Dìas Corridos |  |  |  | IWP-2221-MA-205-001 | CWA-2221-200 | Mineria | CWA-2221-200 - Nível 16 Frente 2 | C0 | Sin Iniciar | C3 | CWP-2221-M-205 | IWP-2221-MA-205-001 |
| M2221MAB00174 |  | PK 1415,7 al 1437,2 | 6d | 2023-05-08 | 2023-05-14 | M2221MAB00173 |  |  |  |  | 70.73d | 0d | Andina Dìas Corridos |  |  |  | IWP-2221-MA-205-002 | CWA-2221-200 | Mineria | CWA-2221-200 - Nível 16 Frente 2 | C0 | Sin Iniciar | C3 | CWP-2221-M-205 | IWP-2221-MA-205-002 |
| M2221MAB00175 |  | PK 1437,2 al 1462,3 | 7d | 2023-05-14 | 2023-05-21 | M2221MAB00174 |  |  |  |  | 70.73d | 0d | Andina Dìas Corridos |  |  |  | IWP-2221-MA-205-003 | CWA-2221-200 | Mineria | CWA-2221-200 - Nível 16 Frente 2 | C0 | Sin Iniciar | C3 | CWP-2221-M-205 | IWP-2221-MA-205-003 |
| M2221MAB00176 |  | PK 1462,3 al 1487,4 | 7d | 2023-05-21 | 2023-05-28 | M2221MAB00175 |  |  |  |  | 70.73d | 0d | Andina Dìas Corridos |  |  |  | IWP-2221-MA-205-004 | CWA-2221-200 | Mineria | CWA-2221-200 - Nível 16 Frente 2 | C0 | Sin Iniciar | C3 | CWP-2221-M-205 | IWP-2221-MA-205-004 |
| M2221MAB00177 |  | PK 1487,4 al 1512,5 | 7d | 2023-05-28 | 2023-06-04 | M2221MAB00176 |  |  |  |  | 70.73d | 0d | Andina Dìas Corridos |  |  |  | IWP-2221-MA-205-005 | CWA-2221-200 | Mineria | CWA-2221-200 - Nível 16 Frente 2 | C0 | Sin Iniciar | C3 | CWP-2221-M-205 | IWP-2221-MA-205-005 |
| M2221MAB00178 |  | PK 1512,5 al 1537,6 | 7d | 2023-06-04 | 2023-06-11 | M2221MAB00177 |  |  |  |  | 70.73d | 0d | Andina Dìas Corridos |  |  |  | IWP-2221-MA-205-006 | CWA-2221-200 | Mineria | CWA-2221-200 - Nível 16 Frente 2 | C0 | Sin Iniciar | C3 | CWP-2221-M-205 | IWP-2221-MA-205-006 |
| M2221MAB00179 |  | PK 1537,6 al 1562,7 | 7d | 2023-06-11 | 2023-06-18 | M2221MAB00178 |  |  |  |  | 70.73d | 0d | Andina Dìas Corridos |  |  |  | IWP-2221-MA-205-007 | CWA-2221-200 | Mineria | CWA-2221-200 - Nível 16 Frente 2 | C0 | Sin Iniciar | C3 | CWP-2221-M-205 | IWP-2221-MA-205-007 |
| M2221MAB00180 |  | PK 1562,7 al 1584,2 | 6d | 2023-06-18 | 2023-06-24 | M2221MAB00179 |  |  |  |  | 70.73d | 0d | Andina Dìas Corridos |  |  |  | IWP-2221-MA-205-008 | CWA-2221-200 | Mineria | CWA-2221-200 - Nível 16 Frente 2 | C0 | Sin Iniciar | C3 | CWP-2221-M-205 | IWP-2221-MA-205-008 |

| ID | WBS | Activity | Duration | Start | Finish | Predecessors | Complete | Planned start | Planned finish | Total float | Free float | Calendar | Resources | Cost | Actual cost | IWP-BIM | CWA | DISCIPLINA | CWA Descripción | Criticidad FF | Estado Actividad | Criticidad TF | cwp | Iwp Frente 2 |
| --- | --- | --- | --- | --- | --- | --- | --- | --- | --- | --- | --- | --- | --- | --- | --- | --- | --- | --- | --- | --- | --- | --- | --- | --- |
| M2221MAB00181 |  | PK 1584,2 al 1605,7 | 6d | 2023-06-24 | 2023-06-30 | M2221MAB00180 |  |  |  | 70.73d | 0d | Andina Dìas Corridos |  |  |  | IWP-2221-MA-205-009 | CWA-2221-200 | Mineria | CWA-2221-200 - Nível 16 Frente 2 | C0 | Sin Iniciar | C3 | CWP-2221-M-205 | IWP-2221-MA-205-009 |
| M2221MAB00182 |  | PK 1605,7 al 1627,2 | 6d | 2023-06-30 | 2023-07-06 | M2221MAB00181 |  |  |  | 70.73d | 0d | Andina Dìas Corridos |  |  |  | IWP-2221-MA-205-010 | CWA-2221-200 | Mineria | CWA-2221-200 - Nível 16 Frente 2 | C0 | Sin Iniciar | C3 | CWP-2221-M-205 | IWP-2221-MA-205-010 |
| M2221MAB00183 |  | PK 1627,2 al 1648,7 | 6d | 2023-07-06 | 2023-07-12 | M2221MAB00182 |  |  |  | 70.73d | 0d | Andina Dìas Corridos |  |  |  | IWP-2221-MA-205-011 | CWA-2221-200 | Mineria | CWA-2221-200 - Nível 16 Frente 2 | C0 | Sin Iniciar | C3 | CWP-2221-M-205 | IWP-2221-MA-205-011 |
| M2221MAB00184 |  | PK 1648,7 al 1673,8 | 7d | 2023-07-12 | 2023-07-19 | M2221MAB00183 |  |  |  | 70.73d | 0d | Andina Dìas Corridos |  |  |  | IWP-2221-MA-205-012 | CWA-2221-200 | Mineria | CWA-2221-200 - Nível 16 Frente 2 | C0 | Sin Iniciar | C3 | CWP-2221-M-205 | IWP-2221-MA-205-012 |
| M2221MAB00185 |  | PK 1673,8 al 1684,6 | 3d | 2023-07-19 | 2023-07-22 | M2221MAB00184 |  |  |  | 70.73d | 0d | Andina Dìas Corridos |  |  |  | IWP-2221-MA-205-013 | CWA-2221-200 | Mineria | CWA-2221-200 - Nível 16 Frente 2 | C0 | Sin Iniciar | C3 | CWP-2221-M-205 | IWP-2221-MA-205-013 |
| M2221MAB00186 |  | PK 1684,6 al 1699 | 3.64d | 2023-07-22 | 2023-07-26 | M2221MAB00185 |  |  |  | 70.73d | 0d | Andina Dìas Corridos |  |  |  | IWP-2221-MA-206-001 | CWA-2221-200 | Mineria | CWA-2221-200 - Nível 16 Frente 2 | C0 | Sin Iniciar | C3 | CWP-2221-M-206 | IWP-2221-MA-206-001 |
| M2221MAB00187 |  | PK 1699 al 1724,1 | 7d | 2023-07-26 | 2023-08-02 | M2221MAB00186 |  |  |  | 70.73d | 0d | Andina Dìas Corridos |  |  |  | IWP-2221-MA-206-002 | CWA-2221-200 | Mineria | CWA-2221-200 - Nível 16 Frente 2 | C0 | Sin Iniciar | C3 | CWP-2221-M-206 | IWP-2221-MA-206-002 |
| M2221MAB00188 |  | PK 1724,1 al 1749,2 | 7d | 2023-08-02 | 2023-08-09 | M2221MAB00187 |  |  |  | 70.73d | 0d | Andina Dìas Corridos |  |  |  | IWP-2221-MA-206-003 | CWA-2221-200 | Mineria | CWA-2221-200 - Nível 16 Frente 2 | C0 | Sin Iniciar | C3 | CWP-2221-M-206 | IWP-2221-MA-206-003 |
| M2221MAB00189 |  | PK 1749,2 al 1774,3 | 7d | 2023-08-09 | 2023-08-16 | M2221MAB00188 |  |  |  | 70.73d | 0d | Andina Dìas Corridos |  |  |  | IWP-2221-MA-206-004 | CWA-2221-200 | Mineria | CWA-2221-200 - Nível 16 Frente 2 | C0 | Sin Iniciar | C3 | CWP-2221-M-206 | IWP-2221-MA-206-004 |
| M2221MAB00190 |  | PK 1774,3 al 1799,4 | 7d | 2023-08-16 | 2023-08-23 | M2221MAB00189 |  |  |  | 356.73d | 0d | Andina Dìas Corridos |  |  |  | IWP-2221-MA-206-005 | CWA-2221-200 | Mineria | CWA-2221-200 - Nível 16 Frente 2 | C0 | Sin Iniciar | C3 | CWP-2221-M-206 | IWP-2221-MA-206-005 |
| M2221MAB00191 |  | PK 1799,4 al 1820,9 | 6d | 2023-08-23 | 2023-08-29 | M2221MAB00190 |  |  |  | 356.73d | 0d | Andina Dìas Corridos |  |  |  | IWP-2221-MA-206-006 | CWA-2221-200 | Mineria | CWA-2221-200 - Nível 16 Frente 2 | C0 | Sin Iniciar | C3 | CWP-2221-M-206 | IWP-2221-MA-206-006 |
| M2221MAB00192 |  | PK 1820,9 al 1846 | 7d | 2023-08-29 | 2023-09-05 | M2221MAB00191 |  |  |  | 356.73d | 0d | Andina Dìas Corridos |  |  |  | IWP-2221-MA-206-007 | CWA-2221-200 | Mineria | CWA-2221-200 - Nível 16 Frente 2 | C0 | Sin Iniciar | C3 | CWP-2221-M-206 | IWP-2221-MA-206-007 |
| M2221MAB00193 |  | PK 1846 al 1871,1 | 7d | 2023-09-05 | 2023-09-12 | M2221MAB00192 |  |  |  | 356.73d | 0d | Andina Dìas Corridos |  |  |  | IWP-2221-MA-206-008 | CWA-2221-200 | Mineria | CWA-2221-200 - Nível 16 Frente 2 | C0 | Sin Iniciar | C3 | CWP-2221-M-206 | IWP-2221-MA-206-008 |
| M2221MAB00194 |  | PK 1871,65 al 1882,4 | 3d | 2023-09-12 | 2023-09-15 | M2221MAB00193 |  |  |  | 356.73d |  | Andina Dìas Corridos |  |  |  | IWP-2221-MA-206-009 | CWA-2221-200 | Mineria | CWA-2221-200 - Nível 16 Frente 2 | C3 | Sin Iniciar | C3 | CWP-2221-M-206 | IWP-2221-MA-206-009 |
|  | 3 | **Frontones** |  | 2022-05-09 | 2023-05-19 |  |  |  |  |  |  |  |  |  |  |  |  |  |  |  |  |  |  |  |
| M2221MAB00163 |  | Frontón Eléctrico Nº1 (Pk 513) | 6d | 2022-05-09 A | 2022-05-28 A | M2221MAB00142 SS+42d, M2221MAB00144 | 100% | 2022-11-30 | 2022-12-06 |  |  | Andina 2 turnos | Mineria [1045 h]; DESARROLLO HORIZONTALES [9 h] | 1,045 | 1,045 | IWP-2221-MD-201-001 | CWA-2221-200 | Mineria | CWA-2221-200 - Nível 16 Frente 2 | PND | Completado | PND | CWP-2221-M-201 | IWP-2221-MD-201-001 |
| M2221MAB00164 |  | Refugio Nº1 (PK 1102) | 7d | 2023-02-16 | 2023-02-23 | M2221MAB00163 FS+60d, M2221MAB00132 |  |  |  | 64d | 0d | Andina 2 turnos | Mineria [1805 h]; DESARROLLO HORIZONTALES [15 h] | 1,805 |  | IWP-2221-MD-203-001 | CWA-2221-200 | Mineria | CWA-2221-200 - Nível 16 Frente 2 | C0 | Sin Iniciar | C3 | CWP-2221-M-203 | IWP-2221-MA-201-002 |
| M2221MAB00165 |  | Frontón Eléctrico Nº2 (Pk 1359) | 6d | 2023-04-24 | 2023-04-30 | M2221MAB00164 FS+60d, M2221MAB00142 SS+325d, M2221MAB00139 |  |  |  | 429.77d | 0d | Andina 2 turnos | Mineria [1161 h]; DESARROLLO HORIZONTALES [10 h] | 1,161 |  | IWP-2221-MD-204-001 | CWA-2221-200 | Mineria | CWA-2221-200 - Nível 16 Frente 2 | C0 | Sin Iniciar | C3 | CWP-2221-M-204 | IWP-2221-MD-204-001 |
| M2221MAB00166 |  | Refugio Nº2 (Pk 1620) | 8d | 2023-05-11 | 2023-05-19 | M2221MDB00169-1 |  |  |  | 124.18d | 60.82d | Andina 2 turnos | Mineria [1805 h]; DESARROLLO HORIZONTALES [15 h] | 1,805 |  | IWP-2221-MD-205-001 | CWA-2221-200 | Mineria | CWA-2221-200 - Nível 16 Frente 2 | C0 | Sin Iniciar | C3 | CWP-2221-M-205 | IWP-2221-MD-205-001 |
|  | 4 | **Desquinches** |  | 2022-06-10 | 2023-09-01 |  |  |  |  |  |  |  |  |  |  |  |  |  |  |  |  |  |  |  |
| M2221MDB00167 |  | Cruce Vehicular Nº1 (Pk 516 a Pk 562) | 7d | 2022-06-10 A | 2022-06-17 A | M2221MAB00142 SS+42d, M2221MAB00146 SS | 100% | 2022-12-01 | 2022-12-08 |  |  | Andina 2 turnos | Mineria [1807 h] | 1,807 | 1,807 | IWP-2221-MD-201-002 | CWA-2221-200 | Mineria | CWA-2221-200 - Nível 16 Frente 2 | PND | Completado | PND | CWP-2221-M-201 | IWP-2221-MD-201-002 |
| M2221MDB00167-1 |  | Cruce Vehicular Nº1 (Pk 516 a Pk 562) | 7d | 2022-06-18 A | 2022-06-24 A | M2221MDB00167 | 100% | 2023-02-06 | 2023-02-12 |  |  | Andina Dìas Corridos |  |  |  | IWP-2221-MD-201-003 | CWA-2221-200 | Mineria | CWA-2221-200 - Nível 16 Frente 2 | PND | Completado | PND | CWP-2221-M-201 | IWP-2221-MD-201-003 |
| M2221MDB00170 |  | Desquinche para Tiro Eléctrico (Pk 1528) | 3d | 2023-02-06 | 2023-02-09 | M2221MAB00135, M2221MAB00142 SS+100d |  |  |  | 229.77d | 0d | Andina 2 turnos | Mineria [153 h] | 153 |  | IWP-2221-MD-200-0206 | CWA-2221-200 | Mineria | CWA-2221-200 - Nível 16 Frente 2 | PND | Completado | PND | CWP-2221-MD-200 |  |
| M2221MDB00168 |  | Curvas de Alta Retorno Nº1 (Pk 796 a Pk 836) | 15d | 2023-03-09 | 2023-03-24 | M2221MAB00130 |  |  |  | 167.27d | 0d | Andina 2 turnos | Mineria [3768 h] | 3,768 |  | IWP-2221-MD-200-0204 | CWA-2221-200 | Mineria | CWA-2221-200 - Nível 16 Frente 2 | PND | Sin Iniciar | PND | CWP-2221-M-202 |  |
| M2221MDB00169 |  | Cruce Vehicular Nº2 (Pk 1362 a Pk 1408) | 7d | 2023-04-26 | 2023-05-04 | M2221MAB00170 |  |  |  | 124.68d | 0d | Andina 2 turnos | Mineria [1807 h] | 1,807 |  | IWP-2221-MD-204-002 | CWA-2221-200 | Mineria | CWA-2221-200 - Nível 16 Frente 2 | C0 | Sin Iniciar | C3 | CWP-2221-M-204 | IWP-2221-MD-204-002 |
| M2221MDB00169-1 |  | Cruce Vehicular Nº2 (Pk 1362 a Pk 1408) | 7d | 2023-05-04 | 2023-05-11 | M2221MDB00169 |  |  |  | 156.36d | 0d | Andina Dìas Corridos |  |  |  | IWP-2221-MD-204-003 | CWA-2221-200 | Mineria | CWA-2221-200 - Nível 16 Frente 2 | C0 | Sin Iniciar | C3 | CWP-2221-M-204 | IWP-2221-MD-204-003 |
| M2221MDB00171 |  | Ensanche Emergencia Nº2 (Pk 1757 a Pk 1802) | 7d | 2023-08-13 | 2023-08-25 | M2221MAB00166, M2221MAB00189 SS+4d |  |  |  | 63.36d | 0d | Andina 2 turnos | Mineria [2217 h] | 2,217 |  | IWP-2221-MD-206-001 | CWA-2221-200 | Mineria | CWA-2221-200 - Nível 16 Frente 2 | C0 | Sin Iniciar | C3 | CWP-2221-M-206 | IWP-2221-MD-206-001 |
| M2221MDB00171-1 |  | Ensanche Emergencia Nº2 (Pk 1757 a Pk 1802) | 7d | 2023-08-25 | 2023-09-01 | M2221MDB00171 |  |  |  | 370.73d |  | Andina Dìas Corridos |  |  |  | IWP-2221-MD-206-002 | CWA-2221-200 | Mineria | CWA-2221-200 - Nível 16 Frente 2 | C0 | Sin Iniciar | C3 | CWP-2221-M-206 | IWP-2221-MD-206-002 |

| ID | WBS | Activity | Duration | Start | Finish | Predecessors | Total float | Free float | Calendar | Resources | Cost | IWP-BIM | CWA | DISCIPLINA | CWA Descripción | Criticidad FF | Estado Actividad | Criticidad TF | cwp |
| --- | --- | --- | --- | --- | --- | --- | --- | --- | --- | --- | --- | --- | --- | --- | --- | --- | --- | --- | --- |
|  | 5 | **Sistema de Seguridad Curva** |  | 2023-08-25 | 2023-09-09 |  |  |  |  |  |  |  |  |  |  |  |  |  |  |
| M2221ME000172 |  | Sistema FBC Ensanche emergencia Nº2 | 15d | 2023-08-25 | 2023-09-09 | M2221MDB00171 | 137.86d | 0d | Andina 2 turnos | Mineria [512 h] | 512 | IWP-2221-BA-220-0018 | CWA-2221-200 | PND | CWA-2221-200 - Nível 16 Frente 2 | PND | Sin Iniciar | PND | CWP-2221-BA-220 |
|  | 6 | **Fortificación Cables** |  | 2023-08-20 | 2023-08-28 |  |  |  |  |  |  |  |  |  |  |  |  |  |  |
| M2221ME000173 |  | Fortificación con cables Minicage | 6d | 2023-08-20 | 2023-08-28 | M2221MDB00171 FF+3d | 63.36d | 43.86d | Andina 2 turnos | Mineria [3135 h] | 3,135 | IWP-2221-MA-210-0159 | CWA-2221-200 | Mineria | CWA-2221-200 - Nível 16 Frente 2 | PND | Sin Iniciar | PND | CWP-2221-M-201 |
|  | 7 | **Tiro de Cable Eléctrico** |  | 2023-02-09 | 2023-02-12 |  |  |  |  |  |  |  |  |  |  |  |  |  |  |
| M2221MBC00174 |  | Tiro para cable eléctrico Diám 6" 30 m | 3d | 2023-02-09 | 2023-02-12 | M2221MAB00134 FS+1d | 229.77d | 210.27d | Andina 2 turnos | Mineria [57 h] | 57 | IWP-2221-MB-200-0195 | CWA-2221-200 | Mineria | CWA-2221-200 - Nível 16 Frente 2 | PND | Completado | PND | CWP-2221-MB-200 |
|  | 2 | **OBRAS CIVILES** |  | 2023-02-06 | 2024-01-15 |  |  |  |  |  |  |  |  |  |  |  |  |  |  |
|  | 8 | **CANALETA - CRUCE RAMPA CONECTIVIDAD** |  | 2023-02-06 | 2023-03-08 |  |  |  |  |  |  |  |  |  |  |  |  |  |  |
| M2221CAC00176 |  | Canaleta - Cruce Rampa Conectividad (OOCC) | 28d | 2023-02-06 | 2023-03-06 |  | 168.27d | 0d | Andina 2 turnos | Obras Civiles [175 h]; HORMIGONES [5 h] | 175 | IWP-2221-CA-200-0034 | CWA-2221-200 | PND | CWA-2221-200 - Nível 16 Frente 2 | PND | Completado | PND | CWP-2221-CA-200 |
| M2221CAC00175 |  | Canaleta - Cruce Rampa Conectividad (Parrilla Piso) | 2d | 2023-03-06 | 2023-03-08 | M2221CAC00176 | 168.27d | 1d | Andina 2 turnos | Obras Civiles [1 h] | 1 | IWP-2221-DB-200-0094 | CWA-2221-200 | PND | CWA-2221-200 - Nível 16 Frente 2 | PND | Completado | PND | CWP-2221-DB-200 |
|  | 1 | **PAVIMENTO RAMPA** |  | 2023-02-10 | 2023-10-16 |  |  |  |  |  |  |  |  |  |  |  |  |  |  |
| M2221CCA428 |  | Picado, escarpe, emplantillado Rampa Conectividad N16 0 a 223 mts | 10d | 2023-02-10 | 2023-02-20 | M2221MAB00126 | 184d | 0d | Andina 2 turnos | Obras Civiles; CARPETA RODADO |  | IWP-2221-CC-200-0053 | CWA-2221-200 | PND | CWA-2221-200 - Nível 16 Frente 2 | PND | Completado | PND | CWP-2221-CC-200 |
| M2221CCA430 |  | Picado, escarpe, emplantillado Rampa Conectividad N16 223 a 446 mts | 20d | 2023-02-20 | 2023-03-12 | M2221CCA428 | 184d | 0d | Andina 2 turnos | Obras Civiles; CARPETA RODADO |  | IWP-2221-CC-200-0054 | CWA-2221-200 | PND | CWA-2221-200 - Nível 16 Frente 2 | PND | Completado | PND | CWP-2221-CC-200 |
| M2221CCA00177 |  | Pavimento de hormigón G30 e=20 cm 0 a 223 mts | 20d | 2023-03-09 | 2023-03-29 | M2221MDB00168 SS, M2221CAC00176, M2221CAC00175, M2221CCA428 | 167.27d | 0d | Andina 2 turnos | Obras Civiles [5901 h]; CARPETA RODADO [1422 h] | 5,901 | IWP-2221-CC-200-0046 | CWA-2221-200 | PND | CWA-2221-200 - Nível 16 Frente 2 | PND | Sin Iniciar | PND | CWP-2221-CC-200 |
| M2221CCA432 |  | Picado, escarpe, emplantillado Rampa Conectividad N16 446 a 669 mts | 20d | 2023-03-12 | 2023-04-01 | M2221CCA430 | 184d | 0d | Andina 2 turnos | Obras Civiles; CARPETA RODADO |  | IWP-2221-CC-200-0055 | CWA-2221-200 | PND | CWA-2221-200 - Nível 16 Frente 2 | PND | Sin Iniciar | PND | CWP-2221-CC-200 |
| M2221CCA00178 |  | Pavimento de hormigón G30 e=20 cm 223 a 446 mts | 20d | 2023-03-29 | 2023-04-18 | M2221CCA00177, M2221CCA430 | 167.27d | 0d | Andina 2 turnos | Obras Civiles [5901 h]; CARPETA RODADO [1422 h] | 5,901 | IWP-2221-CC-200-0047 | CWA-2221-200 | PND | CWA-2221-200 - Nível 16 Frente 2 | PND | Sin Iniciar | PND | CWP-2221-CC-200 |
| M2221CCA460 |  | Curado | 15d | 2023-03-29 | 2023-04-13 | M2221CCA00177 | 234.27d | 5d | Andina 2 turnos | Obras Civiles; CARPETA RODADO |  | IWP-2221-CC-200-0056 | CWA-2221-200 | PND | CWA-2221-200 - Nível 16 Frente 2 | PND | Sin Iniciar | PND | CWP-2221-CC-200 |
| M2221CCA434 |  | Picado, escarpe, emplantillado Rampa Conectividad N16 669 a 892 mts | 20d | 2023-04-01 | 2023-04-21 | M2221CCA432 | 188d | 0d | Andina 2 turnos | Obras Civiles; CARPETA RODADO |  | IWP-2221-CC-200-0057 | CWA-2221-200 | PND | CWA-2221-200 - Nível 16 Frente 2 | PND | Sin Iniciar | PND | CWP-2221-CC-200 |
| M2221CCA00179 |  | Pavimento de hormigón G30 e=20 cm 446 a 669 mts | 20d | 2023-04-18 | 2023-05-09 | M2221CCA00178, M2221CCA432 | 167.27d | 0d | Andina 2 turnos | Obras Civiles [5901 h]; CARPETA RODADO [1422 h] | 5,901 | IWP-2221-CC-200-0048 | CWA-2221-200 | PND | CWA-2221-200 - Nível 16 Frente 2 | PND | Sin Iniciar | PND | CWP-2221-CC-200 |
| M2221CCA462 |  | Curado | 15d | 2023-04-18 | 2023-05-04 | M2221CCA460, M2221CCA00178 | 229.27d | 5d | Andina 2 turnos | Obras Civiles; CARPETA RODADO |  | IWP-2221-CC-200-0058 | CWA-2221-200 | PND | CWA-2221-200 - Nível 16 Frente 2 | PND | Sin Iniciar | PND | CWP-2221-CC-200 |
| M2221CCA436 |  | Picado, escarpe, emplantillado Rampa Conectividad N16 983 a 1115 mts | 20d | 2023-04-21 | 2023-05-12 | M2221CCA434 | 188d | 0d | Andina 2 turnos | Obras Civiles; CARPETA RODADO |  | IWP-2221-CC-200-0059 | CWA-2221-200 | PND | CWA-2221-200 - Nível 16 Frente 2 | PND | Sin Iniciar | PND | CWP-2221-CC-200 |
| M2221CCA00180 |  | Pavimento de hormigón G30 e=20 cm 669 a 892 mts | 20d | 2023-05-09 | 2023-05-29 | M2221CCA00179, M2221CCA434 | 171.27d | 0d | Andina 2 turnos | Obras Civiles [5901 h]; CARPETA RODADO [1421 h] | 5,901 | IWP-2221-CC-200-0049 | CWA-2221-200 | PND | CWA-2221-200 - Nível 16 Frente 2 | PND | Sin Iniciar | PND | CWP-2221-CC-200 |
| M2221CCA464 |  | Curado | 15d | 2023-05-09 | 2023-05-24 | M2221CCA462, M2221CCA00179 | 224.27d | 5d | Andina 2 turnos | Obras Civiles; CARPETA RODADO |  | IWP-2221-CC-200-0060 | CWA-2221-200 | PND | CWA-2221-200 - Nível 16 Frente 2 | PND | Sin Iniciar | PND | CWP-2221-CC-200 |
| M2221CCA438 |  | Picado, escarpe, emplantillado Rampa Conectividad N16 1114 a 1338 mts | 20d | 2023-05-12 | 2023-06-01 | M2221CCA436 | 188d | 0d | Andina 2 turnos | Obras Civiles; CARPETA RODADO |  | IWP-2221-CC-200-0061 | CWA-2221-200 | PND | CWA-2221-200 - Nível 16 Frente 2 | PND | Sin Iniciar | PND | CWP-2221-CC-200 |
| M2221CCA00181 |  | Pavimento de hormigón G30 e=20 cm 983 a 1115 mts | 20d | 2023-05-29 | 2023-06-29 | M2221CCA00180, M2221CCA436 | 171.27d | 0d | Andina 2 turnos | Obras Civiles [5901 h]; CARPETA RODADO [1421 h] | 5,901 | IWP-2221-CC-200-0050 | CWA-2221-200 | PND | CWA-2221-200 - Nível 16 Frente 2 | PND | Sin Iniciar | PND | CWP-2221-CC-200 |
| M2221CCA466 |  | Curado | 11d | 2023-05-29 | 2023-06-12 | M2221CCA464, M2221CCA00180 | 219.27d | 9d | Andina 2 turnos | Obras Civiles; CARPETA RODADO |  | IWP-2221-CC-200-0062 | CWA-2221-200 | PND | CWA-2221-200 - Nível 16 Frente 2 | PND | Sin Iniciar | PND | CWP-2221-CC-200 |
| M2221CCA440 |  | Picado, escarpe, emplantillado Rampa Conectividad N16 1338 a 1560 mts | 11.73d | 2023-06-01 | 2023-06-19 | M2221CCA438 | 196.27d | 58.41d | Andina 2 turnos | Obras Civiles; CARPETA RODADO |  | IWP-2221-CC-200-0063 | CWA-2221-200 | PND | CWA-2221-200 - Nível 16 Frente 2 | PND | Sin Iniciar | PND | CWP-2221-CC-200 |
| M2221CCA00182 |  | Pavimento de hormigón G30 e=20 cm 1114 a 1338 mts | 20d | 2023-06-29 | 2023-07-30 | M2221CCA00181, M2221CCA438 | 171.27d | 33.41d | Andina 2 turnos | Obras Civiles [5901 h]; CARPETA RODADO [1421 h] | 5,901 | IWP-2221-CC-200-0051 | CWA-2221-200 | PND | CWA-2221-200 - Nível 16 Frente 2 | PND | Sin Iniciar | PND | CWP-2221-CC-200 |
| M2221CCA468 |  | Curado | 10d | 2023-06-29 | 2023-07-15 | M2221CCA466, M2221CCA00181 | 210.27d | 63.41d | Andina 2 turnos | Obras Civiles; CARPETA RODADO |  | IWP-2221-CC-200-0064 | CWA-2221-200 | PND | CWA-2221-200 - Nível 16 Frente 2 | PND | Sin Iniciar | PND | CWP-2221-CC-200 |
| M2221CCA00183 |  | Pavimento de hormigón G30 e=20 cm 1338 a 1560 mts | 20d | 2023-09-09 | 2023-10-01 | M2221MDB00168 SS, M2221ME000172, M2221CCA00182, M2221CAC00176, M2221CCA440 | 137.86d | 0d | Andina 2 turnos | Obras Civiles [4970 h]; CARPETA RODADO [1421 h] | 4,970 | IWP-2221-CC-200-0052 | CWA-2221-200 | PND | CWA-2221-200 - Nível 16 Frente 2 | PND | Sin Iniciar | PND | CWP-2221-CC-200 |
| M2221CCA470 |  | Curado | 15d | 2023-10-01 | 2023-10-16 | M2221CCA00183, M2221CCA468 | 146.86d | 143.86d | Andina 2 turnos | Obras Civiles; CARPETA RODADO |  | IWP-2221-CC-200-0065 | CWA-2221-200 | PND | CWA-2221-200 - Nível 16 Frente 2 | PND | Sin Iniciar | PND | CWP-2221-CC-200 |

| ID | WBS | Activity | Duration | Start | Finish | Predecessors | Total float | Free float | Calendar | Resources | Cost | IWP-BIM | CWA | DISCIPLINA | CWA Descripción | Criticidad FF | Estado Actividad | Criticidad TF | cwp |
| --- | --- | --- | --- | --- | --- | --- | --- | --- | --- | --- | --- | --- | --- | --- | --- | --- | --- | --- | --- |
|  | 2 | **PUERTA VENTILACION 02221-PRT-001@002** |  | 2023-11-15 | 2024-01-15 |  |  |  |  |  |  |  |  |  |  |  |  |  |  |
| M2221DBA00185 |  | Planchas Acero Calidad - PUERTA VENTILACION 02221-PRT-001@002 (Tapado Estructural) | 15d | 2023-11-15 | 2023-11-30 | M2221DBF00088 | 0.5d | 0d | Andina 2 turnos | Obras Civiles [129 h] | 129 | IWP-2221-DA-220-0087 | CWA-2221-200 | PND | CWA-2221-200 - Nível 16 Frente 2 | PND | Sin Iniciar | PND | CWP-2221-DA-220 |
| M2221CAC00186 |  | Armadura de refuerzo A630-420H - PUERTA VENTILACION 02221-PRT-001@002 (Tapado Estructural) | 15d | 2023-11-30 | 2023-12-15 | M2221DBA00185 | 0.5d | 0d | Andina 2 turnos | Obras Civiles [109 h] | 109 | IWP-2221-CA-220-0036 | CWA-2221-200 | PND | CWA-2221-200 - Nível 16 Frente 2 | PND | Sin Iniciar | PND | CWP-2221-CA-220 |
| M2221DBA00187 |  | Estructura Liviana Acero ASTM <30 kg/m - PUERTA VENTILACION 02221-PRT-001@002 (Tapado Estructural) | 24d | 2023-12-15 | 2024-01-09 | M2221CAC00186 | 0.5d | 0d | Andina 2 turnos | Obras Civiles [470 h] | 470 | IWP-2221-DA-220-0088 | CWA-2221-200 | PND | CWA-2221-200 - Nível 16 Frente 2 | PND | Sin Iniciar | PND | CWP-2221-DA-220 |
| M2221CAC00188 |  | Viga Fundación y Radier Hormigón G30 - PUERTA VENTILACION 02221-PRT-001@002 | 6d | 2024-01-09 | 2024-01-15 | M2221DBA00187 | 0.5d |  | Andina 2 turnos | Obras Civiles [78 h]; HORMIGONES [10 h] | 78 | IWP-2221-CA-220-0037 | CWA-2221-200 | PND | CWA-2221-200 - Nível 16 Frente 2 | PND | Sin Iniciar | PND | CWP-2221-CA-220 |
|  | 3 | **TAPADO T02 (FACILIDAD CONSTRUCTIVA)** |  | 2023-04-24 | 2023-05-05 |  |  |  |  |  |  |  |  |  |  |  |  |  |  |
| M2221CAC00189 |  | TAPADO T02 (FACILIDAD CONSTRUCTIVA) | 10d | 2023-04-24 | 2023-05-05 | M2221CAC00193 | 223.27d |  | Andina 2 turnos | Obras Civiles [202 h]; HORMIGONES [4 h] | 202 | IWP-2221-CA-210-0035 | CWA-2221-200 | PND | CWA-2221-200 - Nível 16 Frente 2 | PND | Sin Iniciar | PND | CWP-2221-CA-210 |
|  | 4 | **CERCO METALICO** |  | 2023-02-23 | 2023-04-24 |  |  |  |  |  |  |  |  |  |  |  |  |  |  |
| M2221DBA00190 |  | Barras de anclaje ø22mm (Lechada, Empotramiento mayor a 1.5 m) | 15d | 2023-02-23 | 2023-03-10 | M2221MAB00159 SS+1d, M2221MAB00164 | 78.27d | 0d | Andina 2 turnos | Obras Civiles [63 h] | 63 | IWP-2221-DA-210-0085 | CWA-2221-200 | PND | CWA-2221-200 - Nível 16 Frente 2 | PND | Completado | PND | CWP-2221-DA-210 |
| M2221CAC00191 |  | Acero Planchas de Acero Calidad ASTM A 36 | 15d | 2023-03-10 | 2023-03-25 | M2221DBA00190 | 78.27d | 0d | Andina 2 turnos | Obras Civiles [29 h] | 29 | IWP-2221-DA-210-0083 | CWA-2221-200 | PND | CWA-2221-200 - Nível 16 Frente 2 | PND | Sin Iniciar | PND | CWP-2221-DA-210 |
| M2221DBA00192 |  | Malla tipo ACMA C257 | 15d | 2023-03-25 | 2023-04-09 | M2221CAC00191 | 78.27d | 0d | Andina 2 turnos | Obras Civiles [54 h] | 54 | IWP-2221-DA-210-0086 | CWA-2221-200 | PND | CWA-2221-200 - Nível 16 Frente 2 | PND | Sin Iniciar | PND | CWP-2221-DA-210 |
| M2221CAC00193 |  | Estructura Liviana Acero ASTM <30 kg/m ASTM-A36/A36M | 15d | 2023-04-09 | 2023-04-24 | M2221DBA00192 | 78.27d | 0d | Andina 2 turnos | Obras Civiles [313 h] | 313 | IWP-2221-DA-210-0084 | CWA-2221-200 | PND | CWA-2221-200 - Nível 16 Frente 2 | PND | Sin Iniciar | PND | CWP-2221-DA-210 |
|  | 3 | **MECÁNICA** |  | 2023-06-29 | 2024-03-15 |  |  |  |  |  |  |  |  |  |  |  |  |  |  |
|  | 1 | **GALERIA FACILIDADES CONSTRUCTIVAS** |  | 2024-01-16 | 2024-03-15 |  |  |  |  |  |  |  |  |  |  |  |  |  |  |
| M2221DBF00189 |  | Puerta de Ventilación, TAG: 02221-PRT-001(Ancho 3,7m x Altura 3,5 m) | 30d | 2024-01-16 | 2024-02-14 | M2221DBA00185 SS, M2221CAC00188, M2221CAC00189, M2221CCA00181 SS | 0d |  | Andina Dìas Corridos | Mecanica [1386 h] | 1,386 | IWP-2221-KM-200-0104 | CWA-2221-200 | PND | CWA-2221-200 - Nível 16 Frente 2 | PND | Sin Iniciar | PND | CWP-2221-KM-200 |
| M2221DBF00189-1 |  | Puerta de Ventilación, TAG: 02221-PRT-002(Ancho 3,7m x Altura 3,5 m) | 30d | 2024-02-15 | 2024-03-15 | M2221DBF00189 | 35d |  | Andina Dìas Corridos | Mecanica [1386 h] | 1,386 | IWP-2221-KM-200-0105 | CWA-2221-200 | PND | CWA-2221-200 - Nível 16 Frente 2 | PND | Sin Iniciar | PND | CWP-2221-KM-200 |
|  | 2 | **RAMPA** |  | 2023-06-29 | 2024-02-04 |  |  |  |  |  |  |  |  |  |  |  |  |  |  |
| M2221KM000195 |  | Refugio de emergencia Semimovil: 20 personas. 02221-RFG-001@002 (Estocada N°1) | 2d | 2023-06-29 | 2023-06-30 | M2221MAB00161 SS+1d, M2221MAB00164, M2221CCA00181 | 199d |  | Andina Dìas Corridos | Mecanica [1430 h] | 1,430 | IWP-2221-EC-200-0097 | CWA-2221-200 | PND | CWA-2221-200 - Nível 16 Frente 2 | PND | Sin Iniciar | PND | CWP-2221-EC-200 |
| M2221KM000196 |  | Refugio de emergencia Semimovil: 20 personas. 02221-RFG-003@004 (Estocada N°2) | 20d | 2024-01-16 | 2024-02-04 | M2221KM000334 SS, M2221DBF00189 SS, M2221KM000195, M2221CCA00181, M2221MAB00166 | 0d |  | Andina Dìas Corridos | Mecanica [1430 h] | 1,430 | IWP-2221-EC-210-0098 | CWA-2221-200 | PND | CWA-2221-200 - Nível 16 Frente 2 | PND | Sin Iniciar | PND | CWP-2221-EC-210 |
|  | 4 | **ELECTRICIDAD** |  | 2023-04-18 | 2024-04-09 |  |  |  |  |  |  |  |  |  |  |  |  |  |  |
|  | 7 | **Montaje Eléctrico Frente 2 Km 400 al 800** |  | 2023-05-09 | 2024-03-15 |  |  |  |  |  |  |  |  |  |  |  |  |  |  |
|  | 1 | **FRONTÓN ELÉCTRICO N°1** |  | 2024-01-17 | 2024-03-15 |  |  |  |  |  |  |  |  |  |  |  |  |  |  |
| M2221QC000197 |  | SUBESTACIÓN UNITARIA 4,16/0,4; 45kVA (Switchgear AIS MT) (FRONTÓN ELÉCTRICO N°1) | 15d | 2024-01-17 | 2024-01-31 | M2221KM000196 SS+1d, M2221CCA00177 | 4d |  |  | Electricidad [648 h] | 648 | IWP-2221-QC-200-0274 | CWA-2221-200 | PND | CWA-2221-200 - Nível 16 Frente 2 | PND | Sin Iniciar | PND | CWP-2221-QC-200 |
| M2221QC000198 |  | EQUIPOS ELÉCTRICOS (FRONTÓN ELÉCTRICO N°1) | 15d | 2024-02-05 | 2024-02-19 | M2221KM000196, M2221CCA00177, M2221QC000197 | 0d |  |  | Electricidad [537 h] | 537 | IWP-2221-QF-200-0282 | CWA-2221-200 | PND | CWA-2221-200 - Nível 16 Frente 2 | PND | Sin Iniciar | PND | CWP-2221-QF-200 |
| M2221QC000204 |  | FRONTÓN ELÉCTRICO N° 1 | 25d | 2024-02-20 | 2024-03-15 | M2221QC000198, M2221QF000199, M2221QF000200, M2221RBB00200, M2221RBB00201, M2221QC000203 | 35d |  |  | Electricidad [3372 h] | 3,372 | IWP-2221-QC-200-0275 | CWA-2221-200 | PND | CWA-2221-200 - Nível 16 Frente 2 | PND | Sin Iniciar | PND | CWP-2221-QC-200 |

| ID | WBS | Activity | Duration | Start | Finish | Predecessors | Total float | Free float | Resources | Cost | IWP-BIM | CWA | DISCIPLINA | CWA Descripción | Criticidad FF | Estado Actividad | Criticidad TF | cwp |
| --- | --- | --- | --- | --- | --- | --- | --- | --- | --- | --- | --- | --- | --- | --- | --- | --- | --- | --- |
|  | 5 | **SOPORTE CANALIZACIÓN** |  | 2023-05-09 | 2023-06-02 |  |  |  |  |  |  |  |  |  |  |  |  |  |
| M2221RBB00201 |  | SOPORTE CANALIZACION Tramo (400 al 800) | 25d | 2023-05-09 | 2023-06-02 | M2221CCA00179 | 167d | 0d | Electricidad [2939 h] | 2,939 | IWP-2221-RB-200-0304 | CWA-2221-200 | PND | CWA-2221-200 - Nível 16 Frente 2 | PND | Sin Iniciar | PND | CWP-2221-RB-200 |
|  | 4 | **CANALIZACIÓN** |  | 2023-05-14 | 2023-06-02 |  |  |  |  |  |  |  |  |  |  |  |  |  |
| M2221RBB00200 |  | CANALIZACION Tramo (400 al 800) | 20d | 2023-05-14 | 2023-06-02 | M2221CCA00179, M2221RBB00201 SS+5d | 167d | 0d | Electricidad [4656 h]; CABLES [2054 h] | 4,656 | IWP-2221-RB-210-0306 | CWA-2221-200 | PND | CWA-2221-200 - Nível 16 Frente 2 | PND | Sin Iniciar | PND | CWP-2221-RB-210 |
|  | 3 | **LUMINARIAS RAMPA** |  | 2023-06-03 | 2023-06-23 |  |  |  |  |  |  |  |  |  |  |  |  |  |
| M2221QF000200 |  | LUMINARIAS RAMPA Tramo (400 al 800) | 10d | 2023-06-03 | 2023-06-23 | M2221CCA00177, M2221CCA00179, M2221RBB00200 | 206d | 68.27d | Electricidad [808 h] | 808 | IWP-2221-QJ-200-0298 | CWA-2221-200 | PND | CWA-2221-200 - Nível 16 Frente 2 | PND | Sin Iniciar | PND | CWP-2221-QJ-200 |
|  | 2 | **RAMPA** |  | 2023-09-09 | 2023-09-12 |  |  |  |  |  |  |  |  |  |  |  |  |  |
| M2221QF000199 |  | Suministro y Montaje Safety Switch. | 3d | 2023-09-09 | 2023-09-12 | M2221CCA00180, M2221CCA00181, M2221CCA00182, M2221CCA00183 SS | 137.73d | 0d | Electricidad [66 h] | 66 | IWP-2221-QF-700-0296 | CWA-2221-700 | PND | CWA-2221-700 - Infraestructura general | PND | Sin Iniciar | PND | CWP-2221-QF-700 |
|  | 1 | **Montaje Eléctrico Frente 2 km 1960 al 800** |  | 2023-04-18 | 2024-04-09 |  |  |  |  |  |  |  |  |  |  |  |  |  |
|  | 2 | **RAMPA** |  | 2024-02-20 | 2024-02-24 |  |  |  |  |  |  |  |  |  |  |  |  |  |
| M2221QF000205 |  | Suministro y Montaje Safety Switch. | 5d | 2024-02-20 | 2024-02-24 | M2221QC000198, M2221QF000199, M2221QF000200, M2221RBB00200, M2221RBB00201, M2221QC000203, M2221CCA00182 | 55d |  | Electricidad [185 h] | 185 | IWP-2221-QF-700-0297 | CWA-2221-700 | PND | CWA-2221-700 - Infraestructura general | PND | Sin Iniciar | PND | CWP-2221-QF-700 |
|  | 5 | **SOPORTE CANALIZACIÓN** |  | 2024-02-20 | 2024-03-30 |  |  |  |  |  |  |  |  |  |  |  |  |  |
| M2221RBB00208 |  | SOPORTE CANALIZACION Tramo (800 al 1960) | 40d | 2024-02-20 | 2024-03-30 | M2221QC000198, M2221QF000200, M2221RBB00200, M2221RBB00201, M2221QC000203 | 0d |  | Electricidad [8364 h] | 8,364 | IWP-2221-RB-200-0305 | CWA-2221-200 | PND | CWA-2221-200 - Nível 16 Frente 2 | PND | Sin Iniciar | PND | CWP-2221-RB-200 |
|  | 4 | **CANALIZACIÓN** |  | 2024-03-01 | 2024-03-30 |  |  |  |  |  |  |  |  |  |  |  |  |  |
| M2221RBB00207 |  | CANALIZACION Tramo (800 al 1960) | 30d | 2024-03-01 | 2024-03-30 | M2221QC000198, M2221QF000200, M2221RBB00200, M2221RBB00201, M2221QC000203, M2221RBB00208 SS+10d | 0d |  | Electricidad [13250 h]; CABLES [5136 h] | 13,250 | IWP-2221-RB-210-0307 | CWA-2221-200 | PND | CWA-2221-200 - Nível 16 Frente 2 | PND | Sin Iniciar | PND | CWP-2221-RB-210 |
|  | 3 | **LUMINARIAS RAMPA** |  | 2024-03-31 | 2024-04-09 |  |  |  |  |  |  |  |  |  |  |  |  |  |
| M2221QJ000206 |  | LUMINARIAS RAMPA Tramo (800 al 1960) | 10d | 2024-03-31 | 2024-04-09 | M2221QC000198, M2221QF000200, M2221RBB00200, M2221RBB00201, M2221QC000203, M2221RBB00207 | 10d |  | Electricidad [2300 h] | 2,300 | IWP-2221-QJ-200-0299 | CWA-2221-200 | PND | CWA-2221-200 - Nível 16 Frente 2 | PND | Sin Iniciar | PND | CWP-2221-QJ-200 |
|  | 6 | **FRONTÓN ELÉCTRICO N°2** |  | 2023-04-18 | 2024-02-29 |  |  |  |  |  |  |  |  |  |  |  |  |  |
| M2221QC000202 |  | SUBESTACIÓN UNITARIA 4,16/0,4; 45kVA (Switchgear AIS MT) (FRONTÓN ELÉCTRICO N°2) | 5d | 2023-04-18 | 2023-04-22 | M2221CCA00177, M2221CCA00178 | 187d | 0d | Electricidad [146 h] | 146 | IWP-2221-QC-210-0276 | CWA-2221-200 | PND | CWA-2221-200 - Nível 16 Frente 2 | PND | Sin Iniciar | PND | CWP-2221-QC-210 |
| M2221QC000203 |  | FRONTÓN ELÉCTRICO N° 2 | 5d | 2023-04-23 | 2023-04-27 | M2221CCA00177, M2221CCA00178, M2221QC000202 | 187d | 20d | Electricidad [146 h] | 146 | IWP-2221-QF-210-0285 | CWA-2221-200 | PND | CWA-2221-200 - Nível 16 Frente 2 | PND | Sin Iniciar | PND | CWP-2221-QF-210 |
| M2221QC000209 |  | FRONTÓN ELÉCTRICO N° 2 | 10d | 2024-02-20 | 2024-02-29 | M2221QC000198, M2221QF000199 SS, M2221QF000200, M2221RBB00200, M2221RBB00201, M2221QC000203 | 50d |  | Electricidad [832 h] | 832 | IWP-2221-QC-210-0277 | CWA-2221-200 | PND | CWA-2221-200 - Nível 16 Frente 2 | PND | Sin Iniciar | PND | CWP-2221-QC-210 |
|  | 5 | **INSTRUMENTACIÓN** |  | 2023-09-09 | 2024-04-26 |  |  |  |  |  |  |  |  |  |  |  |  |  |
|  | 8 | **Instrumentación Frente 2 km 400 al 800** |  | 2024-02-05 | 2024-04-04 |  |  |  |  |  |  |  |  |  |  |  |  |  |
|  | 1 | **CRUCE VEHICULAR N°1 / FRONTÓN ELÉCTRICO N°1** |  | 2024-02-05 | 2024-04-02 |  |  |  |  |  |  |  |  |  |  |  |  |  |
| M2221SA000217 |  | INSTRUMENTOS (Cruce Vehicular N°1) | 4d | 2024-02-05 | 2024-02-08 | M2221QC000198 SS, M2221QF000200 SS, M2221RBB00200 SS, M2221RBB00201 SS, M2221QC000203 SS | 1d | 0d | Instrumentacion [66 h] | 66 | IWP-2221-SA-200-0334 | CWA-2221-200 | PND | CWA-2221-200 - Nível 16 Frente 2 | PND | Sin Iniciar | PND | CWP-2221-SA-200 |
| M2221SB000210 |  | SISTEMA RADIOCOMUNICACIONES (Cruce Vehicular N°1) | 3d | 2024-02-09 | 2024-02-11 | M2221SA000217 | 1d | 0d | Instrumentacion [57 h] | 57 | IWP-2221-SA-200-0335 | CWA-2221-200 | PND | CWA-2221-200 - Nível 16 Frente 2 | PND | Sin Iniciar | PND | CWP-2221-SA-200 |
| M2221SB000211 |  | SISTEMA CCTV (Cruce Vehicular N°1) | 3d | 2024-02-12 | 2024-02-14 | M2221SB000210 | 1d | 0d | Instrumentacion [57 h] | 57 | IWP-2221-SA-200-0336 | CWA-2221-200 | PND | CWA-2221-200 - Nível 16 Frente 2 | PND | Sin Iniciar | PND | CWP-2221-SA-200 |
| M2221SD000212 |  | RED INTEGRADA DE SUPERVISIÓN Y CONTROL (RISC) (Cruce Vehicular N°1) | 5d | 2024-02-15 | 2024-02-19 | M2221SB000211 | 1d | 0d | Instrumentacion [100 h] | 100 | IWP-2221-SA-200-0346 | CWA-2221-200 | PND | CWA-2221-200 - Nível 16 Frente 2 | PND | Sin Iniciar | PND | CWP-2221-SA-200 |
| M2221SC000213 |  | TELEFONIA (Cruce Vehicular N°1) | 5d | 2024-02-20 | 2024-02-24 | M2221SD000212 | 1d | 0d | Instrumentacion [3 h] | 3 | IWP-2221-SA-200-0345 | CWA-2221-200 | PND | CWA-2221-200 - Nível 16 Frente 2 | PND | Sin Iniciar | PND | CWP-2221-SA-200 |
| M2221QF000214 |  | ALIMENTACIÓN ELECTRICA (Cruce Vehicular N°1) | 3d | 2024-02-25 | 2024-02-27 | M2221SC000213 | 1d | 0d | Instrumentacion [40 h] | 40 | IWP-2221-QF-200-0283 | CWA-2221-200 | PND | CWA-2221-200 - Nível 16 Frente 2 | PND | Sin Iniciar | PND | CWP-2221-QF-200 |
| M2221SB000215 |  | SCADA ELECTRICO (Cruce Vehicular N°1) | 3d | 2024-02-28 | 2024-03-01 | M2221QF000214 | 1d | 0d | Instrumentacion [40 h] | 40 | IWP-2221-SA-200-0337 | CWA-2221-200 | PND | CWA-2221-200 - Nível 16 Frente 2 | PND | Sin Iniciar | PND | CWP-2221-SA-200 |
| M2221SA000216 |  | SISTEMA DETECCION AUTOMATICA DE INCENDIO (Cruce Vehicular N°1) | 3d | 2024-03-02 | 2024-03-04 | M2221SB000215 | 1d | 0d | Instrumentacion [33 h] | 33 | IWP-2221-SA-200-0333 | CWA-2221-200 | PND | CWA-2221-200 - Nível 16 Frente 2 | PND | Sin Iniciar | PND | CWP-2221-SA-200 |
| M2221SB000248 |  | INSTRUMENTOS(Fronton Electrico N°1) | 4d | 2024-03-05 | 2024-03-08 | M2221KM000196, M2221SA000217, M2221SA000218 SS, M2221SB000229 SS, M2221SB000230 SS, M2221SB000241 SS, M2221SA000216, M2221SA000232 SS, M2221SA000235 SS, M2221SA000216 FF | 17d | 0d | Instrumentacion [186 h] | 186 | IWP-2221-SA-200-0343 | CWA-2221-200 | PND | CWA-2221-200 - Nível 16 Frente 2 | PND | Sin Iniciar | PND | CWP-2221-SA-200 |
| M2221SB000242 |  | SISTEMA RADIOCOMUNICACIONES (Fronton Electrico N°1) | 4d | 2024-03-09 | 2024-03-12 | M2221SB000248 | 17d | 0d | Instrumentacion [164 h] | 164 | IWP-2221-SA-200-0338 | CWA-2221-200 | PND | CWA-2221-200 - Nível 16 Frente 2 | PND | Sin Iniciar | PND | CWP-2221-SA-200 |
| M2221SB000243 |  | SISTEMA CCTV(Fronton Electrico N°1) | 4d | 2024-03-13 | 2024-03-16 | M2221SB000242 | 17d | 0d | Instrumentacion [164 h] | 164 | IWP-2221-SA-200-0339 | CWA-2221-200 | PND | CWA-2221-200 - Nível 16 Frente 2 | PND | Sin Iniciar | PND | CWP-2221-SA-200 |
| M2221SB000244 |  | RED INTEGRADA DE SUPERVISIÓN Y CONTROL (RISC)(Fronton Electrico N°1) | 4d | 2024-03-17 | 2024-03-20 | M2221SB000243 | 17d | 0d | Instrumentacion [285 h] | 285 | IWP-2221-SA-200-0340 | CWA-2221-200 | PND | CWA-2221-200 - Nível 16 Frente 2 | PND | Sin Iniciar | PND | CWP-2221-SA-200 |
| M2221SB000245 |  | TELEFONIA(Fronton Electrico N°1) | 1d | 2024-03-21 | 2024-03-21 | M2221SB000244 | 17d | 0d | Instrumentacion [8 h] | 8 | IWP-2221-SA-200-0341 | CWA-2221-200 | PND | CWA-2221-200 - Nível 16 Frente 2 | PND | Sin Iniciar | PND | CWP-2221-SA-200 |
| M2221SB000246 |  | ALIMENTACIÓN ELECTRICA(Fronton Electrico N°1) | 4d | 2024-03-22 | 2024-03-25 | M2221SB000245 | 17d | 0d | Instrumentacion [112 h] | 112 | IWP-2221-QF-200-0284 | CWA-2221-200 | PND | CWA-2221-200 - Nível 16 Frente 2 | PND | Sin Iniciar | PND | CWP-2221-QF-200 |
| M2221SB000247 |  | SCADA ELECTRICO(Fronton Electrico N°1) | 4d | 2024-03-26 | 2024-03-29 | M2221SB000246 | 17d | 0d | Instrumentacion [112 h] | 112 | IWP-2221-SA-200-0342 | CWA-2221-200 | PND | CWA-2221-200 - Nível 16 Frente 2 | PND | Sin Iniciar | PND | CWP-2221-SA-200 |
| M2221SB000249 |  | SISTEMA DETECCION AUTOMATICA DE INCENDIO(Fronton Electrico N°1) | 4d | 2024-03-30 | 2024-04-02 | M2221SB000247 | 17d |  | Instrumentacion [93 h] | 93 | IWP-2221-SA-200-0344 | CWA-2221-200 | PND | CWA-2221-200 - Nível 16 Frente 2 | PND | Sin Iniciar | PND | CWP-2221-SA-200 |

| ID | WBS | Activity | Duration | Start | Finish | Predecessors | Total float | Free float | Resources | Cost | IWP-BIM | CWA | DISCIPLINA | CWA Descripción | Criticidad FF | Estado Actividad | Criticidad TF | cwp |
| --- | --- | --- | --- | --- | --- | --- | --- | --- | --- | --- | --- | --- | --- | --- | --- | --- | --- | --- |
|  | 6 | **ESTACIÓN REDUCTORA DE PRESIÓN N°03@05** |  | 2024-03-05 | 2024-04-04 |  |  |  |  |  |  |  |  |  |  |  |  |  |
| M2221SB000241 |  | SISTEMA DETECCION AUTOMATICA DE INCENDIO | 3d | 2024-03-05 | 2024-03-07 | M2221QC000198 SS, M2221QF000200 SS, M2221RBB00200 SS, M2221RBB00201 SS, M2221QC000203 SS, M2221SA000216 | 1d | 0d | Instrumentacion [44 h] | 44 | IWP-2221-SA-240-0379 | CWA-2221-200 | PND | CWA-2221-200 - Nível 16 Frente 2 | PND | Sin Iniciar | PND | CWP-2221-SA-240 |
| M2221SB000236 |  | INSTRUMENTOS | 1d | 2024-03-08 | 2024-03-08 | M2221SB000241 | 3d | 0d | Instrumentacion [22 h] | 22 | IWP-2221-SA-240-0378 | CWA-2221-200 | PND | CWA-2221-200 - Nível 16 Frente 2 | PND | Sin Iniciar | PND | CWP-2221-SA-240 |
| M2221SB000237 |  | SOPORTE | 5d | 2024-03-09 | 2024-03-13 | M2221SB000236, M2221CCA470 | 3d | 0d | Instrumentacion [338 h] | 338 | IWP-2221-PD-200-0251 | CWA-2221-200 | PND | CWA-2221-200 - Nível 16 Frente 2 | PND | Sin Iniciar | PND | CWP-2221-PD-200 |
| M2221SB000239 |  | CANALIZACION | 10d | 2024-03-14 | 2024-03-23 | M2221SB000237 | 3d | 0d | Instrumentacion [1651 h] | 1,651 | IWP-2221-RC-200-0311 | CWA-2221-200 | PND | CWA-2221-200 - Nível 16 Frente 2 | PND | Sin Iniciar | PND | CWP-2221-RC-200 |
| M2221SB000238 |  | CABLE | 15d | 2024-03-17 | 2024-03-31 | M2221SB000237, M2221SB000239 SS+3d | 3d | 0d | Instrumentacion [1258 h]; CABLES [3094 h] | 1,258 | IWP-2221-SE-200-0436 | CWA-2221-200 | PND | CWA-2221-200 - Nível 16 Frente 2 | PND | Sin Iniciar | PND | CWP-2221-SE-200 |
| M2221SB000240 |  | MUFA FIBRA ÓPTICA | 4d | 2024-04-01 | 2024-04-04 | M2221SB000239, M2221SB000238 | 3d | 0d | Instrumentacion [32 h] | 32 | IWP-2221-SE-200-0437 | CWA-2221-200 | PND | CWA-2221-200 - Nível 16 Frente 2 | PND | Sin Iniciar | PND | CWP-2221-SE-200 |
|  | 1 | **Instrumentación Frente 2 km 1960 al 800** |  | 2023-09-09 | 2024-04-26 |  |  |  |  |  |  |  |  |  |  |  |  |  |
|  | 2 | **CRUCE VEHICULAR N°2** |  | 2024-03-01 | 2024-03-23 |  |  |  |  |  |  |  |  |  |  |  |  |  |
| M2221SA000218 |  | INSTRUMENTOS INTERRUPTOR DE POSICIÓN TIPO RADAR | 3d | 2024-03-01 | 2024-03-03 | M2221QC000198 SS, M2221QF000199 SS, M2221QF000200 SS, M2221RBB00200 SS, M2221RBB00201 SS, M2221QC000203 SS, M2221RBB00207 SS | 0d |  | Instrumentacion [66 h] | 66 | IWP-2221-SA-230-0365 | CWA-2221-200 | PND | CWA-2221-200 - Nível 16 Frente 2 | PND | Sin Iniciar | PND | CWP-2221-SA-230 |
| M2221SA000219 |  | SISTEMA DE VENTILACION - SENSOR DE FLUJO | 5d | 2024-03-04 | 2024-03-08 | M2221SA000218 | 0d |  | Instrumentacion [67 h] | 67 | IWP-2221-SA-230-0366 | CWA-2221-200 | PND | CWA-2221-200 - Nível 16 Frente 2 | PND | Sin Iniciar | PND | CWP-2221-SA-230 |
| M2221SB000251 |  | INSTRUMENTOS SEMÁFORO TAG:02221-YL-1523A@B | 5d | 2024-03-09 | 2024-03-13 | M2221KM000196 FF, M2221SA000217, M2221SA000218, M2221SB000241, M2221SA000216, M2221SA000219 | 0d |  | Instrumentacion [186 h] | 186 | IWP-2221-SA-230-0371 | CWA-2221-200 | PND | CWA-2221-200 - Nível 16 Frente 2 | PND | Sin Iniciar | PND | CWP-2221-SA-230 |
| M2221SB000250 |  | SISTEMA DE VENTILACION - TRANSMISOR E INDICADOR (4 UN) | 7d | 2024-03-14 | 2024-03-20 | M2221SB000251 | 0d |  | Instrumentacion [192 h] | 192 | IWP-2221-SA-230-0370 | CWA-2221-200 | PND | CWA-2221-200 - Nível 16 Frente 2 | PND | Sin Iniciar | PND | CWP-2221-SA-230 |
| M2221SB000252 |  | SISTEMA RADIOCOMUNICACIONES RADIO BASE TAG: 02221-URB-0354A@B | 3d | 2024-03-21 | 2024-03-23 | M2221SB000250 SS, M2221SB000250 | 0d |  | Instrumentacion [28 h] | 28 | IWP-2221-SA-230-0372 | CWA-2221-200 | PND | CWA-2221-200 - Nível 16 Frente 2 | PND | Sin Iniciar | PND | CWP-2221-SA-230 |
|  | 3 | **FRONTÓN ELÉCTRICO N°2** |  | 2024-03-24 | 2024-04-26 |  |  |  |  |  |  |  |  |  |  |  |  |  |
| M2221SB000224 |  | SISTEMA CCTV - CÁMARA IP TIPO DOMO TAG: 02221-NT-2030 | 4d | 2024-03-24 | 2024-03-27 | M2221QC000198 SS, M2221QF000199 SS, M2221QF000200 SS, M2221RBB00200 SS, M2221RBB00201 SS, M2221QC000203 SS, M2221SB000252 | 0d |  | Instrumentacion [57 h] | 57 | IWP-2221-SA-220-0358 | CWA-2221-200 | PND | CWA-2221-200 - Nível 16 Frente 2 | PND | Sin Iniciar | PND | CWP-2221-SA-220 |
| M2221SD000226 |  | SISTEMA DETECCION DE PRESENCIA - LECTOR RFID CON ANTENA OMNIDIRECCIONA | 4d | 2024-03-28 | 2024-03-31 | M2221SB000224 | 0d |  | Instrumentacion [90 h] | 90 | IWP-2221-SA-220-0364 | CWA-2221-200 | PND | CWA-2221-200 - Nível 16 Frente 2 | PND | Sin Iniciar | PND | CWP-2221-SA-220 |
| M2221SD000222 |  | RED INTEGRADA DE SUPERVISIÓN Y CONTROL (RISC) -GABINETE DE COMUNICACIONES TAG:02221-COM-0250 | 3d | 2024-04-01 | 2024-04-03 | M2221SD000226 | 0d |  | Instrumentacion [100 h] | 100 | IWP-2221-SA-220-0363 | CWA-2221-200 | PND | CWA-2221-200 - Nível 16 Frente 2 | PND | Sin Iniciar | PND | CWP-2221-SA-220 |
| M2221SC000227 |  | TELEFONIA | 1d | 2024-04-04 | 2024-04-04 | M2221SD000222 | 0d |  | Instrumentacion [11 h] | 11 | IWP-2221-SA-220-0362 | CWA-2221-200 | PND | CWA-2221-200 - Nível 16 Frente 2 | PND | Sin Iniciar | PND | CWP-2221-SA-220 |
| M2221QF000221 |  | ALIMENTACIÓN ELECTRICA | 2d | 2024-04-05 | 2024-04-06 | M2221SC000227 | 0d |  | Instrumentacion [154 h] | 154 | IWP-2221-SA-220-0356 | CWA-2221-200 | PND | CWA-2221-200 - Nível 16 Frente 2 | PND | Sin Iniciar | PND | CWP-2221-SA-220 |
| M2221SB000223 |  | SCADA ELECTRICO | 2d | 2024-04-07 | 2024-04-08 | M2221QF000221 | 0d |  | Instrumentacion [154 h] | 154 | IWP-2221-SA-220-0357 | CWA-2221-200 | PND | CWA-2221-200 - Nível 16 Frente 2 | PND | Sin Iniciar | PND | CWP-2221-SA-220 |
| M2221SA000225 |  | SISTEMA DETECCION AUTOMATICA DE INCENDIO - BALIZA / PULSADORA MANUAL | 3d | 2024-04-09 | 2024-04-11 | M2221SB000223 | 0d |  | Instrumentacion [33 h] | 33 | IWP-2221-SA-230-0367 | CWA-2221-200 | PND | CWA-2221-200 - Nível 16 Frente 2 | PND | Sin Iniciar | PND | CWP-2221-SA-230 |
| M2221SB000258 |  | SISTEMA DETECCION AUTOMATICA DE INCENDIO - SENSOR DE TEMPERATURA / MODULO MONITOREO | 5d | 2024-04-12 | 2024-04-16 | M2221SA000225 | 0d |  | Instrumentacion [93 h] | 93 | IWP-2221-SA-230-0373 | CWA-2221-200 | PND | CWA-2221-200 - Nível 16 Frente 2 | PND | Sin Iniciar | PND | CWP-2221-SA-230 |
| M2221SB000259 |  | SISTEMA CCTV - GABINETE CCTV TAG: 02221-COM-2034 | 3d | 2024-04-17 | 2024-04-19 | M2221KM000196 FF, M2221SA000217, M2221SA000218, M2221SB000224, M2221SB000229, M2221SB000230, M2221SB000241, M2221SA000216, M2221SA000225, M2221SA000232, M2221SA000235, M2221SB000240, M2221SB000258 | 0d |  | Instrumentacion [164 h] | 164 | IWP-2221-SA-220-0361 | CWA-2221-200 | PND | CWA-2221-200 - Nível 16 Frente 2 | PND | Sin Iniciar | PND | CWP-2221-SA-220 |
| M2221SB000253 |  | RED INTEGRADA DE SUPERVISIÓN Y CONTROL (RISC) - GABINETE RIO TAG: 02221-RIO-0150 | 7d | 2024-04-20 | 2024-04-26 | M2221SB000254 SS | 26d | 0d | Instrumentacion [285 h] | 285 | IWP-2221-SA-220-0359 | CWA-2221-200 | PND | CWA-2221-200 - Nível 16 Frente 2 | PND | Sin Iniciar | PND | CWP-2221-SA-220 |
| M2221SB000254 |  | SISTEMA DETECCION DE PRESENCIA - GABINETE DE CAMPO | 7d | 2024-04-20 | 2024-04-26 | M2221SB000259 | 26d | 0d | Instrumentacion [257 h] | 257 | IWP-2221-SA-220-0360 | CWA-2221-200 | PND | CWA-2221-200 - Nível 16 Frente 2 | PND | Sin Iniciar | PND | CWP-2221-SA-220 |

| ID | WBS | Activity | Duration | Start | Finish | Predecessors | Total float | Free float | Resources | Cost | IWP-BIM | CWA | DISCIPLINA | CWA Descripción | Criticidad FF | Estado Actividad | Criticidad TF | cwp |
| --- | --- | --- | --- | --- | --- | --- | --- | --- | --- | --- | --- | --- | --- | --- | --- | --- | --- | --- |
|  | 4 | **FRONTON REFUGIO N°1** |  | 2023-09-09 | 2024-02-23 |  |  |  |  |  |  |  |  |  |  |  |  |  |
| M2221SB000229 |  | SISTEMA CCTV - CÁMARA IP TIPO FISHEYE / DOMO | 4d | 2023-09-09 | 2023-09-13 | M2221QF000199 SS, M2221QF000200 SS, M2221RBB00200 SS, M2221RBB00201 SS, M2221QC000203 SS | 137.73d | 0d | Instrumentacion [72 h] | 72 | IWP-2221-SA-210-0349 | CWA-2221-200 | PND | CWA-2221-200 - Nível 16 Frente 2 | PND | Sin Iniciar | PND | CWP-2221-SA-210 |
| M2221SA000230 |  | SISTEMA DETECCION DE PRESENCIA- LECTOR RFID CON ANTENA OMNIDIRECCIONA | 3d | 2023-09-13 | 2023-09-16 | M2221SB000229 | 137.73d | 0d | Instrumentacion [90 h] | 90 | IWP-2221-SA-210-0347 | CWA-2221-200 | PND | CWA-2221-200 - Nível 16 Frente 2 | PND | Sin Iniciar | PND | CWP-2221-SA-210 |
| M2221SD000228 |  | RED INTEGRADA DE SUPERVISIÓN Y CONTROL (RISC) | 5d | 2023-09-16 | 2023-09-23 | M2221SA000230 | 137.73d | 0d | Instrumentacion [100 h] | 100 | IWP-2221-SA-210-0355 | CWA-2221-200 | PND | CWA-2221-200 - Nível 16 Frente 2 | PND | Sin Iniciar | PND | CWP-2221-SA-210 |
| M2221SC000231 |  | TELEFONIA | 1d | 2023-09-23 | 2023-09-24 | M2221SD000228 | 137.73d | 0d | Instrumentacion [21 h] | 21 | IWP-2221-SA-210-0354 | CWA-2221-200 | PND | CWA-2221-200 - Nível 16 Frente 2 | PND | Sin Iniciar | PND | CWP-2221-SA-210 |
| M2221SA000232 |  | SISTEMA DETECCION AUTOMATICA DE INCENDIO - BALIZA / PULSADORA MANUAL | 2d | 2023-09-24 | 2023-09-26 | M2221SC000231 | 137.73d | 134.73d | Instrumentacion [49 h] | 49 | IWP-2221-SA-210-0348 | CWA-2221-200 | PND | CWA-2221-200 - Nível 16 Frente 2 | PND | Sin Iniciar | PND | CWP-2221-SA-210 |
| M2221SB000264 |  | SISTEMA CCTV - GABINETE CCTV TAG: 02221-COM-2024 | 5d | 2024-02-09 | 2024-02-13 | M2221KM000196 FF, M2221SA000217, M2221SB000229, M2221SA000232, M2221SA000232 FF | 3d | 0d | Instrumentacion [205 h] | 205 | IWP-2221-SA-210-0353 | CWA-2221-200 | PND | CWA-2221-200 - Nível 16 Frente 2 | PND | Sin Iniciar | PND | CWP-2221-SA-210 |
| M2221SB000260 |  | SISTEMA DETECCION DE PRESENCIA GABINETE DE CAMPO | 5d | 2024-02-14 | 2024-02-18 | M2221SB000264 | 3d | 0d | Instrumentacion [257 h] | 257 | IWP-2221-SA-210-0350 | CWA-2221-200 | PND | CWA-2221-200 - Nível 16 Frente 2 | PND | Sin Iniciar | PND | CWP-2221-SA-210 |
| M2221SB000261 |  | RED INTEGRADA DE SUPERVISIÓN Y CONTROL (RISC) | 5d | 2024-02-14 | 2024-02-18 | M2221SB000260 SS | 8d | 5d | Instrumentacion [285 h] | 285 | IWP-2221-SA-210-0351 | CWA-2221-200 | PND | CWA-2221-200 - Nível 16 Frente 2 | PND | Sin Iniciar | PND | CWP-2221-SA-210 |
| M2221SB000263 |  | SISTEMA DETECCION AUTOMATICA DE INCENDIOINCENDIO - SENSOR DE TEMPERATURA / MODULO MONITOREO | 5d | 2024-02-19 | 2024-02-23 | M2221SA000232, M2221SB000264, M2221SB000260, M2221SB000261 SS | 3d | 0d | Instrumentacion [140 h] | 140 | IWP-2221-SA-210-0352 | CWA-2221-200 | PND | CWA-2221-200 - Nível 16 Frente 2 | PND | Sin Iniciar | PND | CWP-2221-SA-210 |
|  | 5 | **FRONTON REFUGIO N°2** |  | 2024-02-19 | 2024-04-16 |  |  |  |  |  |  |  |  |  |  |  |  |  |
| M2221SA000235 |  | SISTEMA DETECCION AUTOMATICA DE INCENDIO - BALIZA / PULSADORA MANUAL | 3d | 2024-02-19 | 2024-02-21 | M2221SB000263 SS | 3d | 0d | Instrumentacion [49 h] | 49 | IWP-2221-SA-230-0368 | CWA-2221-200 | PND | CWA-2221-200 - Nível 16 Frente 2 | PND | Sin Iniciar | PND | CWP-2221-SA-230 |
| M2221SB000230 |  | SISTEMA CCTV- CÁMARA IP TIPO FISHEYE / DOMO | 3d | 2024-02-19 | 2024-02-21 | M2221QC000198 SS, M2221QF000199 SS, M2221QF000200 SS, M2221RBB00200 SS, M2221RBB00201 SS, M2221QC000203 SS, M2221SA000235 SS | 3d | 0d | Instrumentacion [72 h] | 72 | IWP-2221-SA-230-0369 | CWA-2221-200 | PND | CWA-2221-200 - Nível 16 Frente 2 | PND | Sin Iniciar | PND | CWP-2221-SA-230 |
| M2221SB000267 |  | SISTEMA CCTV - GABINETE CCTV TAG: 02221-COM-2039 | 2d | 2024-04-05 | 2024-04-06 | M2221KM000196 FF, M2221SA000217, M2221SA000218, M2221SB000224, M2221SB000229, M2221SB000230, M2221SB000241, M2221SA000216, M2221SA000232, M2221SA000235, M2221SB000240 | 3d | 0d | Instrumentacion [205 h] | 205 | IWP-2221-SA-230-0376 | CWA-2221-200 | PND | CWA-2221-200 - Nível 16 Frente 2 | PND | Sin Iniciar | PND | CWP-2221-SA-230 |
| M2221SB000265 |  | RED INTEGRADA DE SUPERVISIÓN Y CONTROL (RISC) | 6d | 2024-04-07 | 2024-04-12 | M2221SB000267 | 3d | 0d | Instrumentacion [385 h] | 385 | IWP-2221-SA-230-0374 | CWA-2221-200 | PND | CWA-2221-200 - Nível 16 Frente 2 | PND | Sin Iniciar | PND | CWP-2221-SA-230 |
| M2221SB000266 |  | TELEFONIA | 1d | 2024-04-13 | 2024-04-13 | M2221SB000265 | 3d | 0d | Instrumentacion [21 h] | 21 | IWP-2221-SA-230-0375 | CWA-2221-200 | PND | CWA-2221-200 - Nível 16 Frente 2 | PND | Sin Iniciar | PND | CWP-2221-SA-230 |
| M2221SB000268 |  | SISTEMA DETECCION AUTOMATICA DE INCENDIO - SENSOR DE TEMPERATURA / MODULO MONITOREO | 3d | 2024-04-14 | 2024-04-16 | M2221SB000266 | 3d |  | Instrumentacion [140 h] | 140 | IWP-2221-SA-230-0377 | CWA-2221-200 | PND | CWA-2221-200 - Nível 16 Frente 2 | PND | Sin Iniciar | PND | CWP-2221-SA-230 |
|  | 6 | **ESTACIÓN REDUCTORA DE PRESIÓN N°03@05** |  | 2024-02-19 | 2024-04-16 |  |  |  |  |  |  |  |  |  |  |  |  |  |
| M2221SB000270 |  | SOPORTE | 18d | 2024-02-19 | 2024-03-07 | M2221SB000230 SS | 3d | 0d | Instrumentacion [962 h] | 962 | IWP-2221-PD-200-0252 | CWA-2221-200 | PND | CWA-2221-200 - Nível 16 Frente 2 | PND | Sin Iniciar | PND | CWP-2221-PD-200 |
| M2221SB000272 |  | CANALIZACION | 28d | 2024-03-08 | 2024-04-04 | M2221SB000270 | 3d | 0d | Instrumentacion [4699 h] | 4,699 | IWP-2221-RC-200-0312 | CWA-2221-200 | PND | CWA-2221-200 - Nível 16 Frente 2 | PND | Sin Iniciar | PND | CWP-2221-RC-200 |
| M2221SB000271 |  | CABLE | 18d | 2024-03-22 | 2024-04-08 | M2221SB000270 SS, M2221SB000272 SS+14d | 3d | 0d | Instrumentacion [3581 h]; CABLES [7735 h] | 3,581 | IWP-2221-SE-200-0438 | CWA-2221-200 | PND | CWA-2221-200 - Nível 16 Frente 2 | PND | Sin Iniciar | PND | CWP-2221-SE-200 |
| M2221SB000273 |  | MUFA FIBRA ÓPTICA | 2d | 2024-04-09 | 2024-04-10 | M2221SB000272 SS, M2221SB000271 | 3d | 0d | Instrumentacion [90 h] | 90 | IWP-2221-SE-200-0439 | CWA-2221-200 | PND | CWA-2221-200 - Nível 16 Frente 2 | PND | Sin Iniciar | PND | CWP-2221-SE-200 |
| M2221SB000269 |  | INSTRUMENTOS | 3d | 2024-04-11 | 2024-04-13 | M2221SB000273 | 3d | 0d | Instrumentacion [62 h] | 62 | IWP-2221-SA-240-0380 | CWA-2221-200 | PND | CWA-2221-200 - Nível 16 Frente 2 | PND | Sin Iniciar | PND | CWP-2221-SA-240 |
| M2221SB000274 |  | SISTEMA DETECCION AUTOMATICA DE INCENDIO | 3d | 2024-04-14 | 2024-04-16 | M2221KM000196 FF, M2221SA000217, M2221SA000218, M2221SB000224, M2221SB000229, M2221SB000230, M2221SB000241, M2221SA000216, M2221SA000225, M2221SA000232, M2221SA000235, M2221SB000240, M2221SB000273, M2221SB000269 | 3d |  | Instrumentacion [124 h] | 124 | IWP-2221-SA-240-0381 | CWA-2221-200 | PND | CWA-2221-200 - Nível 16 Frente 2 | PND | Sin Iniciar | PND | CWP-2221-SA-240 |

| ID | WBS | Activity | Duration | Start | Finish | Predecessors | Complete | Remaining | Planned start | Planned finish | Total float | Free float | Constraint | Calendar | Resources | Cost | Actual cost | IWP-BIM | CWA | DISCIPLINA | CWA Descripción | Criticidad FF | Estado Actividad | Criticidad TF | cwp | Iwp Frente 3 |
| --- | --- | --- | --- | --- | --- | --- | --- | --- | --- | --- | --- | --- | --- | --- | --- | --- | --- | --- | --- | --- | --- | --- | --- | --- | --- | --- |
|  | 3 | **NODO 3500 FRENTE 3** |  | 2022-03-04 | 2024-04-10 |  |  |  |  |  |  |  |  |  |  |  |  |  |  |  |  |  |  |  |  |  |
|  | 1 | **MINERÍA** |  | 2022-03-04 | 2023-11-04 |  |  |  |  |  |  |  |  |  |  |  |  |  |  |  |  |  |  |  |  |  |
|  | 1 | **RAMPA** |  | 2022-03-04 | 2023-10-24 |  |  |  |  |  |  |  |  |  |  |  |  |  |  |  |  |  |  |  |  |  |
| M2221MAB00275 |  | Excavación Zona de Marcos (Pk 3031 a 3026) | 4.59d | 2022-04-09 A | 2022-04-13 A | M2221ME000316 FS+2d | 100% |  | 2022-04-18 | 2022-04-22 |  |  |  | Andina 2 turnos N3500 | Mineria [520 h]; DESARROLLO HORIZONTALES [5 h] | 520 | 520 | IWP-2221-MA-300-0191 | CWA-2221-300 | Mineria | CWA-2221-300 - Nodo 3500 Frente 3 | PND | Completado | PND | CWP-2221-M-301 |  |
| M2221MAB474 |  | Fortificación Zona de Marcos | 10d | 2023-02-06 | 2023-02-16 | M2221MAB00275, M2221MAB00277 SS+13d, M2221MAB00285 FS+20d |  |  |  |  | 189d | 0d | start on or after 2023-01-09 | Andina 2 turnos N3500 | Mineria [736 h]; DESARROLLO HORIZONTALES | 736 |  | IWP-2221-MA-300-0193 | CWA-2221-300 | PND | CWA-2221-300 - Nodo 3500 Frente 3 | PND | Completado | PND | CWP-2221-M-301 |  |
| M2221MAB00276 |  | Retorno Nº2 (Pk 1924 a Pk 1875 ) | 7.5d | 2023-09-24 | 2023-10-01 | M2221MAB00321, M2221MAB00325 SS, M2221MAB00315-2 |  |  |  |  | 30d | 0d |  | Andina 2 turnos N3500 | Mineria [2219 h]; DESARROLLO HORIZONTALES [21 h] | 2,219 |  | IWP-2221-MD-301-001 | CWA-2221-300 | Mineria | CWA-2221-300 - Nodo 3500 Frente 3 | C0 | Sin Iniciar | C0 | CWP-2221-M-301 | IWP-2221-MD-301-001 |
| M2221MAB00276-1 |  | Retorno Nº2 (Pk 1924 a Pk 1875 ) | 7.5d | 2023-10-01 | 2023-10-09 | M2221MAB00276 |  |  |  |  | 284.5d | 0d |  | Andina 2 turnos N3500 | Mineria [2219 h]; DESARROLLO HORIZONTALES [21 h] | 2,219 |  | IWP-2221-MD-301-002 | CWA-2221-300 | Mineria | CWA-2221-300 - Nodo 3500 Frente 3 | C0 | Sin Iniciar | C0 | CWP-2221-M-301 | IWP-2221-MD-301-002 |
| M2221MAB00276-2 |  | Retorno Nº2 (Pk 1924 a Pk 1875 ) | 7.5d | 2023-10-09 | 2023-10-16 | M2221MAB00276-1 |  |  |  |  | 284.5d | 0d |  | Andina 2 turnos N3500 | Mineria [2219 h]; DESARROLLO HORIZONTALES [21 h] | 2,219 |  | IWP-2221-MD-301-003 | CWA-2221-300 | Mineria | CWA-2221-300 - Nodo 3500 Frente 3 | C0 | Sin Iniciar | C0 | CWP-2221-M-301 | IWP-2221-MD-301-003 |
| M2221MAB00276-3 |  | Retorno Nº2 (Pk 1924 a Pk 1875 ) | 7.5d | 2023-10-16 | 2023-10-24 | M2221MAB00276-2 |  |  |  |  | 284.5d |  |  | Andina 2 turnos N3500 | Mineria [2219 h]; DESARROLLO HORIZONTALES [21 h] | 2,219 |  | IWP-2221-MD-301-004 | CWA-2221-300 | Mineria | CWA-2221-300 - Nodo 3500 Frente 3 | C0 | Sin Iniciar | C0 | CWP-2221-M-301 | IWP-2221-MD-301-004 |
|  | 1 | **Excavación Rampa (1.152m)** |  | 2022-03-04 | 2023-09-28 |  |  |  |  |  |  |  |  |  |  |  |  |  |  |  |  |  |  |  |  |  |
| M2221ME000316 |  | Saneamiento de Talud 40*80 m | 30d | 2022-03-04 A | 2022-04-04 A | F2221ZA000017 SS+35d | 100% |  | 2022-03-11 | 2022-04-09 |  |  |  | Andina 1 turno N3500 | Mineria [4150 h] | 4,150 | 4,150 | IWP-1200-MB-640-0009 | CWA-1200-600 | Mineria | CWA-2221-300 - Nodo 3500 Frente 3 | PND | Completado | PND | CWP-1200-MB-640 |  |
| M2221MAB00277 |  | 0 - 40 mts. (Pk 3026 a Pk 2986 ) | 17d | 2022-04-24 A | 2022-06-19 A |  | 100% |  | 2022-12-08 | 2022-12-25 |  |  |  | Andina 2 turnos N3500 | Mineria [4297 h]; DESARROLLO HORIZONTALES [44 h] | 4,297 | 4,297 | IWP-2221-MA-300-0163 | CWA-2221-300 | Mineria | CWA-2221-300 - Nodo 3500 Frente 3 | PND | Completado | PND | CWP-2221-M-301 |  |
| M2221MAB00472 |  | 40 - 80 mts. (Pk 2986 a Pk 2904.9 ) | 17d | 2022-06-20 A | 2022-09-01 A | M2221MAB00277, M2221MAB474 SS | 100% |  | 2022-12-25 | 2023-01-12 |  |  |  | Andina 2 turnos N3500 | Mineria [8035 h]; DESARROLLO HORIZONTALES [81 h] | 8,035 | 8,035 | IWP-2221-MA-300-0190 | CWA-2221-300 | Mineria | CWA-2221-300 - Nodo 3500 Frente 3 | PND | Completado | PND | CWP-2221-M-301 |  |
| M2221MAB00278 |  | PK 2904,96 al 2879,85 | 7d | 2022-09-01 A | 2022-09-23 A | M2221MAB00277, M2221MAB00472 | 100% |  | 2023-01-12 | 2023-01-19 |  |  |  | Andina 2 turnos N3500 | Mineria [2488 h]; DESARROLLO HORIZONTALES [25 h] | 2,488 | 2,488 | IWP-2221-MA-304-001 | CWA-2221-300 | Mineria | CWA-2221-300 - Nodo 3500 Frente 3 | PND | Completado | PND | CWP-2221-M-304 | IWP-2221-MA-304-001 |
| M2221MAB00279 |  | PK 2879,85 al 2854,73 | 7d | 2022-09-24 A | 2022-10-13 A | M2221MAB00278 | 100% |  | 2023-01-29 | 2023-02-05 |  |  |  | Andina 2 turnos N3500 | Mineria [2488 h]; DESARROLLO HORIZONTALES [25 h] | 2,488 | 2,488 | IWP-2221-MA-304-002 | CWA-2221-300 | Mineria | CWA-2221-300 - Nodo 3500 Frente 3 | PND | Completado | PND | CWP-2221-M-304 | IWP-2221-MA-304-002 |
| M2221MAB00280 |  | PK 2854,73 al 2829,61 | 7d | 2022-10-13 A | 2022-10-29 A | M2221MAB00279 | 100% |  | 2023-02-15 | 2023-02-22 |  |  |  | Andina 2 turnos N3500 | Mineria [2488 h]; DESARROLLO HORIZONTALES [25 h] | 2,488 | 2,488 | IWP-2221-MA-304-003 | CWA-2221-300 | Mineria | CWA-2221-300 - Nodo 3500 Frente 3 | PND | Completado | PND | CWP-2221-M-304 | IWP-2221-MA-304-003 |
| M2221MAB00281 |  | PK 2829,61 al 2804,49 | 7d | 2022-10-30 A | 2022-11-11 A | M2221MAB00280 | 100% |  | 2022-12-25 | 2023-01-02 |  |  |  | Andina 2 turnos N3500 | Mineria [2488 h]; DESARROLLO HORIZONTALES [25 h] | 2,488 | 2,488 | IWP-2221-MA-304-004 | CWA-2221-300 | Mineria | CWA-2221-300 - Nodo 3500 Frente 3 | PND | Completado | PND | CWP-2221-M-304 | IWP-2221-MA-304-004 |
| M2221MAB00282 |  | PK 2804,49 al 2782,96 | 6d | 2022-11-12 A | 2022-11-24 A | M2221MAB00281 | 100% |  | 2023-01-07 | 2023-01-13 |  |  |  | Andina 2 turnos N3500 | Mineria [2133 h]; DESARROLLO HORIZONTALES [22 h] | 2,133 | 2,133 | IWP-2221-MA-303-001 | CWA-2221-300 | Mineria | CWA-2221-300 - Nodo 3500 Frente 3 | C4 | En Progreso | C4 | CWP-2221-M-303 | IWP-2221-MA-303-001 |
| M2221MAB00283 |  | PK 2782,96 al 2761,43 | 6d | 2022-11-24 A | 2022-12-17 A |  | 100% |  | 2023-01-19 | 2023-01-25 |  |  |  | Andina 2 turnos N3500 | Mineria [2133 h]; DESARROLLO HORIZONTALES [22 h] | 2,133 | 2,133 | IWP-2221-MA-303-002 | CWA-2221-300 | Mineria | CWA-2221-300 - Nodo 3500 Frente 3 | C0 | Sin Iniciar | C0 | CWP-2221-M-303 | IWP-2221-MA-303-002 |
| M2221MAB00284 |  | PK 2761,43 al 2739,9 | 6d | 2022-12-15 A | 2022-12-23 A | M2221MAB00283 SS | 100% |  | 2022-12-19 | 2022-12-25 |  |  |  | Andina 2 turnos N3500 | Mineria [2133 h]; DESARROLLO HORIZONTALES [22 h] | 2,133 | 2,133 | IWP-2221-MA-303-003 | CWA-2221-300 | Mineria | CWA-2221-300 - Nodo 3500 Frente 3 | C0 | Sin Iniciar | C0 | CWP-2221-M-303 | IWP-2221-MA-303-003 |
| M2221MAB00285 |  | PK 2739,9 al 2718,37 | 6d | 2022-12-23 A | 2023-01-15 A | M2221MAB00284, M2221MAB00283 | 100% |  | 2023-01-08 | 2023-01-14 |  |  |  | Andina 2 turnos N3500 | Mineria [2133 h]; DESARROLLO HORIZONTALES [22 h] | 2,133 | 2,133 | IWP-2221-MA-303-004 | CWA-2221-300 | Mineria | CWA-2221-300 - Nodo 3500 Frente 3 | C0 | Sin Iniciar | C0 | CWP-2221-M-303 | IWP-2221-MA-303-004 |
| M2221MAB00286 |  | PK 2718,37 al 2696,84 | 6d | 2023-01-16 A | 2023-02-03 A |  | 100% |  | 2023-01-16 | 2023-01-22 |  |  |  | Andina 2 turnos N3500 | Mineria [2133 h]; DESARROLLO HORIZONTALES [22 h] | 2,133 | 2,133 | IWP-2221-MA-303-005 | CWA-2221-300 | Mineria | CWA-2221-300 - Nodo 3500 Frente 3 | C0 | Sin Iniciar | C0 | CWP-2221-M-303 | IWP-2221-MA-303-005 |
| M2221MAB00287 |  | PK 2696,84 al 2675,31 | 6d | 2023-02-04 A | 2023-02-10 | M2221MAB00286 |  | 4d | 2023-02-06 | 2023-02-12 | 19.77d | 0d |  | Andina 2 turnos N3500 | Mineria [2133 h]; DESARROLLO HORIZONTALES [22 h] | 2,133 | 711 | IWP-2221-MA-303-006 | CWA-2221-300 | Mineria | CWA-2221-300 - Nodo 3500 Frente 3 | C0 | Sin Iniciar | C0 | CWP-2221-M-303 | IWP-2221-MA-303-006 |
| M2221MAB00288 |  | PK 2675,31 al 2653,78 | 6d | 2023-02-10 | 2023-02-16 | M2221MAB00287 |  |  |  |  | 19.77d | 0d |  | Andina 2 turnos N3500 | Mineria [2133 h]; DESARROLLO HORIZONTALES [22 h] | 2,133 |  | IWP-2221-MA-303-007 | CWA-2221-300 | Mineria | CWA-2221-300 - Nodo 3500 Frente 3 | C0 | Sin Iniciar | C0 | CWP-2221-M-303 | IWP-2221-MA-303-007 |
| M2221MAB00289 |  | PK 2653,78 al 2632,25 | 6d | 2023-02-16 | 2023-02-22 | M2221MAB00288 |  |  |  |  | 19.77d | 0d |  | Andina 2 turnos N3500 | Mineria [2133 h]; DESARROLLO HORIZONTALES [22 h] | 2,133 |  | IWP-2221-MA-303-008 | CWA-2221-300 | Mineria | CWA-2221-300 - Nodo 3500 Frente 3 | C0 | Sin Iniciar | C0 | CWP-2221-M-303 | IWP-2221-MA-303-008 |
| M2221MAB00290 |  | PK 2632,25 al 2610,72 | 6d | 2023-02-22 | 2023-02-28 | M2221MAB00289 |  |  |  |  | 19.77d | 0d |  | Andina 2 turnos N3500 | Mineria [2133 h]; DESARROLLO HORIZONTALES [22 h] | 2,133 |  | IWP-2221-MA-303-009 | CWA-2221-300 | Mineria | CWA-2221-300 - Nodo 3500 Frente 3 | C0 | Sin Iniciar | C0 | CWP-2221-M-303 | IWP-2221-MA-303-009 |
| M2221MAB00291 |  | PK 2610,72 al 2589,19 | 6d | 2023-02-28 | 2023-03-06 | M2221MAB00290 |  |  |  |  | 19.77d | 0d |  | Andina 2 turnos N3500 | Mineria [2133 h]; DESARROLLO HORIZONTALES [22 h] | 2,133 |  | IWP-2221-MA-303-010 | CWA-2221-300 | Mineria | CWA-2221-300 - Nodo 3500 Frente 3 | C0 | Sin Iniciar | C0 | CWP-2221-M-303 | IWP-2221-MA-303-010 |
| M2221MAB00292 |  | PK 2589,19 al 2567,66 | 6d | 2023-03-06 | 2023-03-12 | M2221MAB00291 |  |  |  |  | 19.77d | 0d |  | Andina 2 turnos N3500 | Mineria [2133 h]; DESARROLLO HORIZONTALES [22 h] | 2,133 |  | IWP-2221-MA-303-011 | CWA-2221-300 | Mineria | CWA-2221-300 - Nodo 3500 Frente 3 | C0 | Sin Iniciar | C0 | CWP-2221-M-303 | IWP-2221-MA-303-011 |
| M2221MAB00293 |  | PK 2567,66 al 2546,13 | 6d | 2023-03-12 | 2023-03-18 | M2221MAB00292 |  |  |  |  | 19.77d | 0d |  | Andina 2 turnos N3500 | Mineria [2133 h]; DESARROLLO HORIZONTALES [22 h] | 2,133 |  | IWP-2221-MA-303-012 | CWA-2221-300 | Mineria | CWA-2221-300 - Nodo 3500 Frente 3 | C0 | Sin Iniciar | C0 | CWP-2221-M-303 | IWP-2221-MA-303-012 |
| M2221MAB00294 |  | PK 2546,13 al 2524,6 | 6d | 2023-03-18 | 2023-03-24 | M2221MAB00293 |  |  |  |  | 19.77d | 0d |  | Andina 2 turnos N3500 | Mineria [2133 h]; DESARROLLO HORIZONTALES [22 h] | 2,133 |  | IWP-2221-MA-303-013 | CWA-2221-300 | Mineria | CWA-2221-300 - Nodo 3500 Frente 3 | C0 | Sin Iniciar | C0 | CWP-2221-M-303 | IWP-2221-MA-303-013 |
| M2221MAB00295 |  | PK 2524,6 al 2506,66 | 5d | 2023-03-24 | 2023-03-29 | M2221MAB00294 |  |  |  |  | 19.77d | 0d |  | Andina 2 turnos N3500 | Mineria [1777 h]; DESARROLLO HORIZONTALES [18 h] | 1,777 |  | IWP-2221-MA-303-014 | CWA-2221-300 | Mineria | CWA-2221-300 - Nodo 3500 Frente 3 | C0 | Sin Iniciar | C0 | CWP-2221-M-303 | IWP-2221-MA-303-014 |
| M2221MAB00296 |  | PK 2506,66 al 2488,72 | 5d | 2023-03-29 | 2023-04-03 | M2221MAB00295 |  |  |  |  | 19.77d | 0d |  | Andina 2 turnos N3500 | Mineria [1777 h]; DESARROLLO HORIZONTALES [18 h] | 1,777 |  | IWP-2221-MA-303-015 | CWA-2221-300 | Mineria | CWA-2221-300 - Nodo 3500 Frente 3 | C0 | Sin Iniciar | C0 | CWP-2221-M-303 | IWP-2221-MA-303-015 |
| M2221MAB00297 |  | PK 2488,72 al 2470,78 | 5d | 2023-04-03 | 2023-04-08 | M2221MAB00296 |  |  |  |  | 19.77d | 0d |  | Andina 2 turnos N3500 | Mineria [1777 h]; DESARROLLO HORIZONTALES [18 h] | 1,777 |  | IWP-2221-MA-303-016 | CWA-2221-300 | Mineria | CWA-2221-300 - Nodo 3500 Frente 3 | C0 | Sin Iniciar | C0 | CWP-2221-M-303 | IWP-2221-MA-303-016 |
| M2221MAB00298 |  | PK 2470,78 al 2456,43 | 4d | 2023-04-08 | 2023-04-12 | M2221MAB00297 |  |  |  |  | 19.77d | 0d |  | Andina 2 turnos N3500 | Mineria [1422 h]; DESARROLLO HORIZONTALES [14 h] | 1,422 |  | IWP-2221-MA-303-017 | CWA-2221-300 | Mineria | CWA-2221-300 - Nodo 3500 Frente 3 | C0 | Sin Iniciar | C0 | CWP-2221-M-303 | IWP-2221-MA-303-017 |
| M2221MAB00299 |  | PK 2456,43 al 2452,84 | 1d | 2023-04-12 | 2023-04-13 | M2221MAB00298 |  |  |  |  | 19.77d | 0d |  | Andina 2 turnos N3500 | Mineria [355 h]; DESARROLLO HORIZONTALES [4 h] | 355 |  | IWP-2221-MA-302-001 | CWA-2221-300 | Mineria | CWA-2221-300 - Nodo 3500 Frente 3 | C0 | Sin Iniciar | C0 | CWP-2221-M-302 | IWP-2221-MA-302-001 |
| M2221MAB00300 |  | PK 2452,84 al 2434,9 | 5d | 2023-04-13 | 2023-04-18 | M2221MAB00299 |  |  |  |  | 26d | 0d |  | Andina 2 turnos N3500 | Mineria [1777 h]; DESARROLLO HORIZONTALES [18 h] | 1,777 |  | IWP-2221-MA-302-002 | CWA-2221-300 | Mineria | CWA-2221-300 - Nodo 3500 Frente 3 | C0 | Sin Iniciar | C0 | CWP-2221-M-302 | IWP-2221-MA-302-002 |
| M2221MAB00301 |  | PK 2434,9 al 2409,78 | 7d | 2023-04-18 | 2023-04-25 | M2221MAB00300 |  |  |  |  | 26d | 0.77d |  | Andina 2 turnos N3500 | Mineria [2488 h]; DESARROLLO HORIZONTALES [25 h] | 2,488 |  | IWP-2221-MA-302-003 | CWA-2221-300 | Mineria | CWA-2221-300 - Nodo 3500 Frente 3 | C0 | Sin Iniciar | C0 | CWP-2221-M-302 | IWP-2221-MA-302-003 |
| M2221MAB00302 |  | PK 2409,78 al 2384,66 | 7d | 2023-04-25 | 2023-05-03 | M2221MAB00301, M2221MDB00312-1 |  |  |  |  | 25.23d | 0d |  | Andina 2 turnos N3500 | Mineria [2488 h]; DESARROLLO HORIZONTALES [25 h] | 2,488 |  | IWP-2221-MA-302-004 | CWA-2221-300 | Mineria | CWA-2221-300 - Nodo 3500 Frente 3 | C0 | Sin Iniciar | C0 | CWP-2221-M-302 | IWP-2221-MA-302-004 |
| M2221MAB00303 |  | PK 2384,66 al 2359,54 | 7d | 2023-05-03 | 2023-05-10 | M2221MAB00302 |  |  |  |  | 25.23d | 0d |  | Andina 2 turnos N3500 | Mineria [2488 h]; DESARROLLO HORIZONTALES [25 h] | 2,488 |  | IWP-2221-MA-302-005 | CWA-2221-300 | Mineria | CWA-2221-300 - Nodo 3500 Frente 3 | C0 | Sin Iniciar | C0 | CWP-2221-M-302 | IWP-2221-MA-302-005 |
| M2221MAB00304 |  | PK 2359,54 al 2334,42 | 7d | 2023-05-11 | 2023-05-17 | M2221MAB00303 |  |  |  |  | 25d | 0d |  | Andina Dìas Corridos |  |  |  | IWP-2221-MA-302-006 | CWA-2221-300 | Mineria | CWA-2221-300 - Nodo 3500 Frente 3 | C0 | Sin Iniciar | C0 | CWP-2221-M-302 | IWP-2221-MA-302-006 |
| M2221MAB00305 |  | PK 2334,42 al 2309,3 | 7d | 2023-05-18 | 2023-05-24 | M2221MAB00304 |  |  |  |  | 25d | 0d |  | Andina Dìas Corridos |  |  |  | IWP-2221-MA-302-007 | CWA-2221-300 | Mineria | CWA-2221-300 - Nodo 3500 Frente 3 | C0 | Sin Iniciar | C0 | CWP-2221-M-302 | IWP-2221-MA-302-007 |
| M2221MAB00306 |  | PK 2309,3 al 2287,77 | 6d | 2023-05-25 | 2023-05-30 | M2221MAB00305 |  |  |  |  | 25d | 0d |  | Andina Dìas Corridos |  |  |  | IWP-2221-MA-302-008 | CWA-2221-300 | Mineria | CWA-2221-300 - Nodo 3500 Frente 3 | C0 | Sin Iniciar | C0 | CWP-2221-M-302 | IWP-2221-MA-302-008 |
| M2221MAB00307 |  | PK 2287,77 al 2266,24 | 6d | 2023-05-30 | 2023-06-08 | M2221MAB00306 |  |  |  |  | 17.5d | 0d |  | Andina 2 turnos N3500 | Mineria [2133 h]; DESARROLLO HORIZONTALES [22 h] | 2,133 |  | IWP-2221-MA-302-009 | CWA-2221-300 | Mineria | CWA-2221-300 - Nodo 3500 Frente 3 | C0 | Sin Iniciar | C0 | CWP-2221-M-302 | IWP-2221-MA-302-009 |
| M2221MAB00308 |  | PK 2266,24 al 2244,71 | 6d | 2023-06-08 | 2023-06-17 | M2221MAB00307 |  |  |  |  | 17.5d | 0d |  | Andina 2 turnos N3500 | Mineria [2133 h]; DESARROLLO HORIZONTALES [22 h] | 2,133 |  | IWP-2221-MA-302-010 | CWA-2221-300 | Mineria | CWA-2221-300 - Nodo 3500 Frente 3 | C0 | Sin Iniciar | C0 | CWP-2221-M-302 | IWP-2221-MA-302-010 |
| M2221MAB00309 |  | PK 2244,71 al 2223,18 | 6d | 2023-06-17 | 2023-06-25 | M2221MAB00308 |  |  |  |  | 17.5d | 0.23d |  | Andina 2 turnos N3500 | Mineria [2133 h]; DESARROLLO HORIZONTALES [22 h] | 2,133 |  | IWP-2221-MA-302-011 | CWA-2221-300 | Mineria | CWA-2221-300 - Nodo 3500 Frente 3 | C0 | Sin Iniciar | C0 | CWP-2221-M-302 | IWP-2221-MA-302-011 |
| M2221MAB00310 |  | PK 2223,18 al 2198,06 | 7d | 2023-06-26 | 2023-07-02 | M2221MAB00309 |  |  |  |  | 30d | 0d |  | Andina Dìas Corridos |  |  |  | IWP-2221-MA-302-012 | CWA-2221-300 | Mineria | CWA-2221-300 - Nodo 3500 Frente 3 | C0 | Sin Iniciar | C0 | CWP-2221-M-302 | IWP-2221-MA-302-012 |
| M2221MAB00311 |  | PK 2198,06 al 2172,94 | 7d | 2023-07-03 | 2023-07-09 | M2221MAB00310 |  |  |  |  | 30d | 0d |  | Andina Dìas Corridos |  |  |  | IWP-2221-MA-302-013 | CWA-2221-300 | Mineria | CWA-2221-300 - Nodo 3500 Frente 3 | C0 | Sin Iniciar | C0 | CWP-2221-M-302 | IWP-2221-MA-302-013 |
| M2221MAB00312 |  | PK 2172,94 al 2147,82 | 7d | 2023-07-10 | 2023-07-16 | M2221MAB00311 |  |  |  |  | 30d | 0d |  | Andina Dìas Corridos |  |  |  | IWP-2221-MA-302-014 | CWA-2221-300 | Mineria | CWA-2221-300 - Nodo 3500 Frente 3 | C0 | Sin Iniciar | C0 | CWP-2221-M-302 | IWP-2221-MA-302-014 |
| M2221MAB00313 |  | PK 2147,82 al 2144,23 | 1d | 2023-07-17 | 2023-07-17 | M2221MAB00312 |  |  |  |  | 30d | 0d |  | Andina Dìas Corridos |  |  |  | IWP-2221-MA-302-015 | CWA-2221-300 | Mineria | CWA-2221-300 - Nodo 3500 Frente 3 | C0 | Sin Iniciar | C0 | CWP-2221-M-302 | IWP-2221-MA-302-015 |
| M2221MAB00314 |  | PK 2144,23 al 2122,7 | 6d | 2023-07-18 | 2023-07-23 | M2221MAB00313 |  |  |  |  | 30d | 0d |  | Andina Dìas Corridos |  |  |  | IWP-2221-MA-301-001 | CWA-2221-300 | Mineria | CWA-2221-300 - Nodo 3500 Frente 3 | C0 | Sin Iniciar | C0 | CWP-2221-M-301 | IWP-2221-MA-301-001 |
| M2221MAB00315 |  | PK 2122,7 al 2097,58 | 7d | 2023-07-24 | 2023-07-30 | M2221MAB00314 |  |  |  |  | 30d | 0d |  | Andina Dìas Corridos |  |  |  | IWP-2221-MA-301-002 | CWA-2221-300 | Mineria | CWA-2221-300 - Nodo 3500 Frente 3 | C0 | Sin Iniciar | C0 | CWP-2221-M-301 | IWP-2221-MA-301-002 |
| M2221MAB00316 |  | PK 2097,58 al 2072,46 | 7d | 2023-07-31 | 2023-08-06 | M2221MAB00315 |  |  |  |  | 30d | 0d |  | Andina Dìas Corridos |  |  |  | IWP-2221-MA-301-003 | CWA-2221-300 | Mineria | CWA-2221-300 - Nodo 3500 Frente 3 | C0 | Sin Iniciar | C0 | CWP-2221-M-301 | IWP-2221-MA-301-003 |
| M2221MAB00317 |  | PK 2072,46 al 2050,93 | 6d | 2023-08-07 | 2023-08-12 | M2221MAB00316 |  |  |  |  | 30d | 0d |  | Andina Dìas Corridos |  |  |  | IWP-2221-MA-301-004 | CWA-2221-300 | Mineria | CWA-2221-300 - Nodo 3500 Frente 3 | C0 | Sin Iniciar | C0 | CWP-2221-M-301 | IWP-2221-MA-301-004 |
| M2221MAB00318 |  | PK 2050,93 al 2029,4 | 6d | 2023-08-13 | 2023-08-18 | M2221MAB00317 |  |  |  |  | 30d | 0d |  | Andina Dìas Corridos |  |  |  | IWP-2221-MA-301-005 | CWA-2221-300 | Mineria | CWA-2221-300 - Nodo 3500 Frente 3 | C0 | Sin Iniciar | C0 | CWP-2221-M-301 | IWP-2221-MA-301-005 |
| M2221MAB00319 |  | PK 2029,4 al 2007,87 | 6d | 2023-08-19 | 2023-08-24 | M2221MAB00318 |  |  |  |  | 30d | 0d |  | Andina Dìas Corridos |  |  |  | IWP-2221-MA-301-006 | CWA-2221-300 | Mineria | CWA-2221-300 - Nodo 3500 Frente 3 | C0 | Sin Iniciar | C0 | CWP-2221-M-301 | IWP-2221-MA-301-006 |
| M2221MAB00320 |  | PK 2007,87 al 1986,34 | 6d | 2023-08-25 | 2023-08-30 | M2221MAB00319 |  |  |  |  | 30d | 0d |  | Andina Dìas Corridos |  |  |  | IWP-2221-MA-301-007 | CWA-2221-300 | Mineria | CWA-2221-300 - Nodo 3500 Frente 3 | C0 | Sin Iniciar | C0 | CWP-2221-M-301 | IWP-2221-MA-301-007 |
| M2221MAB00321 |  | PK 1986,34 al 1964,81 | 6d | 2023-08-31 | 2023-09-05 | M2221MAB00320 |  |  |  |  | 30d | 0d |  | Andina Dìas Corridos |  |  |  | IWP-2221-MA-301-008 | CWA-2221-300 | Mineria | CWA-2221-300 - Nodo 3500 Frente 3 | C0 | Sin Iniciar | C0 | CWP-2221-M-301 | IWP-2221-MA-301-008 |
| M2221MAB00322 |  | PK 1964,81 al 1943,28 | 6d | 2023-09-06 | 2023-09-11 | M2221MAB00321 |  |  |  |  | 30d | 0d |  | Andina Dìas Corridos |  |  |  | IWP-2221-MA-301-009 | CWA-2221-300 | Mineria | CWA-2221-300 - Nodo 3500 Frente 3 | C0 | Sin Iniciar | C0 | CWP-2221-M-301 | IWP-2221-MA-301-009 |
| M2221MAB00323 |  | PK 1943,28 al 1921,75 | 6d | 2023-09-12 | 2023-09-17 | M2221MAB00322 |  |  |  |  | 30d | 0d |  | Andina Dìas Corridos |  |  |  | IWP-2221-MA-301-010 | CWA-2221-300 | Mineria | CWA-2221-300 - Nodo 3500 Frente 3 | C0 | Sin Iniciar | C0 | CWP-2221-M-301 | IWP-2221-MA-301-010 |
| M2221MAB00324 |  | PK 1921,75 al 1900,22 | 6d | 2023-09-18 | 2023-09-23 | M2221MAB00323 |  |  |  |  | 30d | 0d |  | Andina Dìas Corridos |  |  |  | IWP-2221-MA-301-011 | CWA-2221-300 | Mineria | CWA-2221-300 - Nodo 3500 Frente 3 | C0 | Sin Iniciar | C0 | CWP-2221-M-301 | IWP-2221-MA-301-011 |
| M2221MAB00325 |  | PK 1900,22 al 1882,28 | 5d | 2023-09-24 | 2023-09-28 | M2221MAB00324 |  |  |  |  | 30d | 0d |  | Andina Dìas Corridos |  |  |  | IWP-2221-MA-301-012 | CWA-2221-300 | Mineria | CWA-2221-300 - Nodo 3500 Frente 3 | C0 | Sin Iniciar | C0 | CWP-2221-M-301 | IWP-2221-MA-301-012 |

| ID | WBS | Activity | Duration | Start | Finish | Predecessors | Complete | Remaining | Planned start | Planned finish | Total float | Free float | Calendar | Resources | Cost | Actual cost | IWP-BIM | CWA | DISCIPLINA | CWA Descripción | Criticidad FF | Estado Actividad | Criticidad TF | cwp | Iwp Frente 3 |
| --- | --- | --- | --- | --- | --- | --- | --- | --- | --- | --- | --- | --- | --- | --- | --- | --- | --- | --- | --- | --- | --- | --- | --- | --- | --- |
|  | 2 | **Transporte de Marina desde Portal** |  | 2022-06-16 | 2023-11-04 |  |  |  |  |  |  |  |  |  |  |  |  |  |  |  |  |  |  |  |  |
| M2221ME000305 |  | Transporte de Marina | 420d | 2022-06-16 A | 2023-10-16 | M2221MAB00472 SS+3d | 11% | 217.73d | 2022-12-01 | 2024-03-01 | 273.27d | 0.27d | Andina 2 turnos N3500 | Mineria [14120 h] | 14,120 | 1,784 | IWP-2221-MG-300-0216 | CWA-2221-300 | PND | CWA-2221-300 - Nodo 3500 Frente 3 | PND | Sin Iniciar | PND | CWP-2221-MG-300 |  |
| M2221ME000304 |  | Habilitación Vía Segregada | 35d | 2023-02-06 | 2023-03-12 |  |  |  |  |  | 476d |  | Andina 1 turno N3500 | Mineria [200 h] | 200 |  | IWP-2221-MG-300-0215 | CWA-2221-300 | PND | CWA-2221-300 - Nodo 3500 Frente 3 | PND | Completado | PND | CWP-2221-MG-300 |  |
| M2221ME000306 |  | Inhabilitación Vía Segregada | 20d | 2023-10-16 | 2023-11-04 | M2221ME000305 |  |  |  |  | 273d |  | Andina 1 turno N3500 | Mineria [200 h] | 200 |  | IWP-2221-MG-300-0217 | CWA-2221-300 | PND | CWA-2221-300 - Nodo 3500 Frente 3 | PND | Sin Iniciar | PND | CWP-2221-MG-300 |  |
|  | 3 | **Frontones** |  | 2022-09-20 | 2023-10-02 |  |  |  |  |  |  |  |  |  |  |  |  |  |  |  |  |  |  |  |  |
| M2221MAB00315-1 |  | Frontón Eléctrico Nº4 (Pk 2930) | 3.64d | 2022-09-20 A | 2022-10-04 A |  | 100% |  | 2023-02-06 | 2023-02-09 |  |  | Andina Dìas Corridos |  |  |  | IWP-2221-MD-304-001 | CWA-2221-300 | Mineria | CWA-2221-300 - Nodo 3500 Frente 3 | C0 | Sin Iniciar | C0 | CWP-2221-M-304 | IWP-2221-MD-304-001 |
| M2221MAB00315-3 |  | Frontón Eléctrico Nº3 (Pk 2185) | 3.64d | 2023-07-03 | 2023-07-06 | M2221MAB00310 |  |  |  |  | 103.36d | 19.36d | Andina Dìas Corridos |  |  |  | IWP-2221-MD-302-001 | CWA-2221-300 | Mineria | CWA-2221-300 - Nodo 3500 Frente 3 | C0 | Sin Iniciar | C0 | CWP-2221-M-302 | IWP-2221-MD-302-001 |
| M2221MAB00315-2 |  | Refugio Nº3 (Pk 2191) | 6d | 2023-07-26 | 2023-07-31 | M2221MAB00311 SS+4d, M2221MAB00314 FS+2d, M2221MAB00315-3, M2221MDB00312-1 |  |  |  |  | 84d | 54d | Andina Dìas Corridos |  |  |  | IWP-2221-MD-302-002 | CWA-2221-300 | Mineria | CWA-2221-300 - Nodo 3500 Frente 3 | C0 | Sin Iniciar | C0 | CWP-2221-M-302 | IWP-2221-MD-302-002 |
| M2221MDB00313 |  | Curvas de Alta Retorno Nº2 (Pk 1935 a 1875) | 1d | 2023-10-01 | 2023-10-02 | M2221MAB00276 |  |  |  |  | 30d | 10.23d | Andina 2 turnos N3500 | Mineria [3762 h] | 3,762 |  | IWP-2221-MD-301-006 | CWA-2221-300 | Mineria | CWA-2221-300 - Nodo 3500 Frente 3 | PND | Sin Iniciar | PND | CWP-2221-M-301 |  |
|  | 4 | **Desquinche** |  | 2022-09-29 | 2023-07-09 |  |  |  |  |  |  |  |  |  |  |  |  |  |  |  |  |  |  |  |  |
| M2221MDB00311 |  | Desquinche Tiro Piping (Pk 3005 a 2932) | 3d | 2022-09-29 A | 2022-10-02 A | M2221MAB00280, M2221MDB00310-2 | 100% |  | 2023-02-14 | 2023-02-17 |  |  | Andina 2 turnos N3500 | Mineria [276 h] | 276 | 276 | IWP-2221-MD-304-002 | CWA-2221-300 | Mineria | CWA-2221-300 - Nodo 3500 Frente 3 | C0 | Sin Iniciar | C0 | CWP-2221-M-304 | IWP-2221-MD-304-002 |
| M2221MDB00312 |  | Cruce Vehicular Nº3 (Pk 2451a Pk 2399) | 7d | 2023-04-12 | 2023-04-19 | M2221MAB00299 SS |  |  |  |  | 19.77d | 0d | Andina 2 turnos N3500 | Mineria [2092.5 h] | 2,092.5 |  | IWP-2221-MD-302-003 | CWA-2221-300 | Mineria | CWA-2221-300 - Nodo 3500 Frente 3 | C0 | Sin Iniciar | C0 | CWP-2221-M-302 | IWP-2221-MD-302-003 |
| M2221MDB00312-1 |  | Cruce Vehicular Nº3 (Pk 2451a Pk 2399) | 7d | 2023-04-19 | 2023-04-25 | M2221MDB00312 |  |  |  |  | 26d | 0d | Andina Dìas Corridos |  |  |  | IWP-2221-MD-302-004 | CWA-2221-300 | Mineria | CWA-2221-300 - Nodo 3500 Frente 3 | C0 | Sin Iniciar | C0 | CWP-2221-M-302 | IWP-2221-MD-302-004 |
| M2221MDB00310 |  | Ensanche Cambio de Cadenas (Pk 3005 a 2932) | 20d | 2023-05-10 | 2023-05-30 | M2221MAB00303 |  |  |  |  | 122d | 0.5d | Andina 2 turnos N3500 | Mineria [2029 h] | 2,029 |  | IWP-2221-MD-304-003 | CWA-2221-300 | Mineria | CWA-2221-300 - Nodo 3500 Frente 3 | C0 | Sin Iniciar | C0 | CWP-2221-M-304 | IWP-2221-MD-304-003 |
| M2221MDB00310-1 |  | Ensanche Cambio de Cadenas (Pk 3005 a 2932) | 20d | 2023-05-31 | 2023-06-19 | M2221MDB00310 |  |  |  |  | 424d | 0d | Andina Dìas Corridos |  |  |  | IWP-2221-MD-304-004 | CWA-2221-300 | Mineria | CWA-2221-300 - Nodo 3500 Frente 3 | C0 | Sin Iniciar | C0 | CWP-2221-M-304 | IWP-2221-MD-304-004 |
| M2221MDB00310-2 |  | Ensanche Cambio de Cadenas (Pk 3005 a 2932) | 20d | 2023-06-20 | 2023-07-09 | M2221MDB00310-1 |  |  |  |  | 424d | 0d | Andina Dìas Corridos |  |  |  | IWP-2221-MD-304-005 | CWA-2221-300 | Mineria | CWA-2221-300 - Nodo 3500 Frente 3 | C0 | Sin Iniciar | C0 | CWP-2221-M-304 | IWP-2221-MD-304-005 |
|  | 6 | **Fortificación Cables** |  | 2023-04-12 | 2023-10-13 |  |  |  |  |  |  |  |  |  |  |  |  |  |  |  |  |  |  |  |  |
| M2221ME000315 |  | Fortificación con Cables Minicage | 150d | 2023-04-12 | 2023-10-13 | M2221MAB00276 FF, M2221MDB00313 FF, M2221MDB00312 SS, M2221MDB00310 FF |  |  |  |  | 19.77d | 0.27d | Andina 2 turnos N3500 | Mineria [2880 h] | 2,880 |  | IWP-2221-MA-300-0194 | CWA-2221-300 | Mineria | CWA-2221-300 - Nodo 3500 Frente 3 | PND | Sin Iniciar | PND | CWP-2221-M-301 |  |
|  | 7 | **Fortificación Ladera Oeste** |  | 2022-04-05 | 2022-06-17 |  |  |  |  |  |  |  |  |  |  |  |  |  |  |  |  |  |  |  |  |
| M2221ME000317 |  | Fortificación de Talud tramo 1 | 20d | 2022-04-05 A | 2022-04-20 A | M2221ME000316 | 100% |  | 2022-04-11 | 2022-04-30 |  |  | Andina 1 turno N3500 | Mineria [4116 h] | 4,116 | 4,116 | IWP-1200-MB-640-0010 | CWA-1200-600 | Mineria | CWA-1200-600 - Obras de superficie | PND | Completado | PND | CWP-1200-MB-640 |  |
| M2221ME000317-1 |  | Fortificación de Talud tramo 2 | 20d | 2022-04-21 A | 2022-05-17 A | M2221ME000317 | 100% |  | 2022-05-03 | 2022-05-22 |  |  | Andina 1 turno N3500 | Mineria [4117 h] | 4,117 | 4,117 | IWP-1200-MB-640-0007 | CWA-1200-600 | Mineria | CWA-1200-600 - Obras de superficie | PND | Completado | PND | CWP-1200-MB-640 |  |
| M2221ME000317-2 |  | Fortificación de Talud tramo 3 | 20d | 2022-05-18 A | 2022-06-17 A | M2221ME000317-1 | 100% |  | 2022-12-08 | 2022-12-27 |  |  | Andina 1 turno N3500 | Mineria [4117 h] | 4,117 | 4,117 | IWP-1200-MB-640-0008 | CWA-1200-600 | Mineria | CWA-1200-600 - Obras de superficie | PND | Completado | PND | CWP-1200-MB-640 |  |
|  | 2 | **OBRAS CIVILES** |  | 2023-02-06 | 2024-01-06 |  |  |  |  |  |  |  |  |  |  |  |  |  |  |  |  |  |  |  |  |
|  | 1 | **PAVIMENTO RAMPA** |  | 2023-02-06 | 2024-01-06 |  |  |  |  |  |  |  |  |  |  |  |  |  |  |  |  |  |  |  |  |
| M2221CCA442 |  | Picado, escarpe, emplantillado Rampa Conectividad 0 a 255 mts | 22d | 2023-02-06 | 2023-02-28 |  |  |  |  |  | 168.27d | 0d | Andina 2 turnos | Obras Civiles; CARPETA RODADO |  |  | IWP-2221-CC-200-0066 | CWA-2221-200 | PND | CWA-2221-200 - Nível 16 Frente 2 | PND | Completado | PND | CWP-2221-CC-200 |  |
| M2221CCA444 |  | Picado, escarpe, emplantillado Rampa Conectividad 255 a 509 mts | 22d | 2023-02-28 | 2023-03-22 | M2221CCA442 |  |  |  |  | 169.27d | 0d | Andina 2 turnos | Obras Civiles; CARPETA RODADO |  |  | IWP-2221-CC-200-0067 | CWA-2221-200 | PND | CWA-2221-200 - Nível 16 Frente 2 | PND | Sin Iniciar | PND | CWP-2221-CC-200 |  |
| M2221CCA446 |  | Picado, escarpe, emplantillado Rampa Conectividad 509 a 764 mts | 22d | 2023-03-22 | 2023-04-13 | M2221CCA444 |  |  |  |  | 170.27d | 0d | Andina 2 turnos | Obras Civiles; CARPETA RODADO |  |  | IWP-2221-CC-200-0068 | CWA-2221-200 | PND | CWA-2221-200 - Nível 16 Frente 2 | PND | Sin Iniciar | PND | CWP-2221-CC-200 |  |
| M2221CCA448 |  | Picado, escarpe, emplantillado Rampa Conectividad 764 a 1018 mts | 22d | 2023-04-13 | 2023-05-06 | M2221CCA446 |  |  |  |  | 171.27d | 0d | Andina 2 turnos | Obras Civiles; CARPETA RODADO |  |  | IWP-2221-CC-200-0070 | CWA-2221-200 | PND | CWA-2221-200 - Nível 16 Frente 2 | PND | Sin Iniciar | PND | CWP-2221-CC-200 |  |
| M2221CCA450 |  | Picado, escarpe, emplantillado Rampa Conectividad 1081 a 1273 mts | 22d | 2023-05-06 | 2023-05-28 | M2221CCA448 |  |  |  |  | 172.27d | 152.27d | Andina 2 turnos | Obras Civiles; CARPETA RODADO |  |  | IWP-2221-CC-200-0071 | CWA-2221-200 | PND | CWA-2221-200 - Nível 16 Frente 2 | PND | Sin Iniciar | PND | CWP-2221-CC-200 |  |
| M2221CCA00318 |  | Pavimento Rampa 0 a 255 mts | 23d | 2023-05-28 | 2023-06-30 | M2221CAC00329 SS+48d, M2221MAB00278, M2221CCA442 |  |  |  |  | 79.27d | 0d | Andina 2 turnos N3500 | Obras Civiles [7255 h]; CARPETA RODADO [1788 h] | 7,255 |  | IWP-2221-CC-200-0075 | CWA-2221-200 | PND | CWA-2221-200 - Nível 16 Frente 2 | PND | Sin Iniciar | PND | CWP-2221-CC-300 |  |
| M2221CCA00319 |  | Pavimento Rampa 255 a 509 mts | 23d | 2023-06-30 | 2023-08-03 | M2221CCA00318, M2221CCA444 |  |  |  |  | 79.27d | 0d | Andina 2 turnos N3500 | Obras Civiles [7255 h]; CARPETA RODADO [1788 h] | 7,255 |  | IWP-2221-CC-200-0076 | CWA-2221-200 | PND | CWA-2221-200 - Nível 16 Frente 2 | PND | Sin Iniciar | PND | CWP-2221-CC-300 |  |
| M2221CCA452 |  | Curado | 9d | 2023-06-30 | 2023-07-15 | M2221CCA00318 |  |  |  |  | 185.27d | 121.27d | Andina 2 turnos | Obras Civiles; CARPETA RODADO |  |  | IWP-2221-CC-200-0069 | CWA-2221-200 | PND | CWA-2221-200 - Nível 16 Frente 2 | PND | Sin Iniciar | PND | CWP-2221-CC-200 |  |
| M2221CCA456 |  | Curado | 9d | 2023-08-03 | 2023-08-18 | M2221CCA00318, M2221CCA00319 |  |  |  |  | 162.27d | 98.27d | Andina 2 turnos | Obras Civiles; CARPETA RODADO |  |  | IWP-2221-CC-200-0072 | CWA-2221-200 | PND | CWA-2221-200 - Nível 16 Frente 2 | PND | Sin Iniciar | PND | CWP-2221-CC-200 |  |
| M2221CCA00320 |  | Pavimento Rampa 509 a 764 mts | 23d | 2023-10-13 | 2023-11-05 | M2221CCA00319, M2221CCA446, H222100009 |  |  |  |  | 20d | 0d | Andina 2 turnos N3500 | Obras Civiles [7255 h]; CARPETA RODADO [1788 h] | 7,255 |  | IWP-2221-CC-200-0077 | CWA-2221-200 | PND | CWA-2221-200 - Nível 16 Frente 2 | PND | Sin Iniciar | PND | CWP-2221-CC-300 |  |
| M2221CCA00321 |  | Pavimento Rampa 764 a 1018 mts | 23d | 2023-11-05 | 2023-11-28 | M2221CCA00320, M2221CCA448 |  |  |  |  | 20d | 0d | Andina 2 turnos N3500 | Obras Civiles [7255 h]; CARPETA RODADO [1788 h] | 7,255 |  | IWP-2221-CC-200-0078 | CWA-2221-200 | PND | CWA-2221-200 - Nível 16 Frente 2 | PND | Sin Iniciar | PND | CWP-2221-CC-300 |  |
| M2221CCA00322 |  | Pavimento Rampa 1081 a 1273 mts | 23d | 2023-11-28 | 2023-12-21 | M2221CAC00329, M2221CCA00321, M2221CCA450 |  |  |  |  | 20d | 0d | Andina 2 turnos N3500 | Obras Civiles [3626 h]; CARPETA RODADO [893 h] | 3,626 |  | IWP-2221-CC-200-0079 | CWA-2221-200 | PND | CWA-2221-200 - Nível 16 Frente 2 | PND | Sin Iniciar | PND | CWP-2221-CC-300 |  |
| M2221CCA454 |  | Curado | 15d | 2023-11-28 | 2023-12-13 | M2221CCA00319, M2221CCA452, M2221CCA00320, M2221CCA00321, M2221CCA456 |  |  |  |  | 64d | 8d | Andina 2 turnos | Obras Civiles; CARPETA RODADO |  |  | IWP-2221-CC-200-0073 | CWA-2221-200 | PND | CWA-2221-200 - Nível 16 Frente 2 | PND | Sin Iniciar | PND | CWP-2221-CC-200 |  |
| M2221CCA458 |  | Curado | 15d | 2023-12-21 | 2024-01-06 | M2221CCA00322, M2221CCA454 |  |  |  |  | 56d | 15d | Andina 2 turnos | Obras Civiles; CARPETA RODADO |  |  | IWP-2221-CC-200-0074 | CWA-2221-200 | PND | CWA-2221-200 - Nível 16 Frente 2 | PND | Sin Iniciar | PND | CWP-2221-CC-200 |  |

| ID | WBS | Activity | Duration | Start | Finish | Predecessors | Total float | Free float | Calendar | Resources | Cost | IWP-BIM | CWA | DISCIPLINA | CWA Descripción | Criticidad FF | Estado Actividad | Criticidad TF | cwp |
| --- | --- | --- | --- | --- | --- | --- | --- | --- | --- | --- | --- | --- | --- | --- | --- | --- | --- | --- | --- |
|  | 3 | **CERCO METALICO** |  | 2023-04-09 | 2023-06-12 |  |  |  |  |  |  |  |  |  |  |  |  |  |  |
| M2221DBA00323 |  | Barras de anclaje ø22mm (Lechada, Empotramiento mayor a 1.5 m) | 15d | 2023-04-09 | 2023-04-24 | M2221CAC00193 SS | 79.27d | 0d | Andina 2 turnos N3500 | Obras Civiles [16 h] | 16 | IWP-2221-DA-310-0090 | CWA-2221-300 | PND | CWA-2221-300 - Nodo 3500 Frente 3 | PND | Sin Iniciar | PND | CWP-2221-DA-310 |
| M2221DBA00324 |  | Acero Planchas de Acero Calidad ASTM A 36 | 15d | 2023-04-24 | 2023-05-10 | M2221DBA00323 | 187.27d | 0d | Andina 2 turnos N3500 | Obras Civiles [15 h] | 15 | IWP-2221-DA-310-0091 | CWA-2221-300 | PND | CWA-2221-300 - Nodo 3500 Frente 3 | PND | Sin Iniciar | PND | CWP-2221-DA-310 |
| M2221DBA00325 |  | Malla tipo ACMA C257 | 15d | 2023-05-10 | 2023-05-25 | M2221DBA00324 | 187.27d | 0d | Andina 2 turnos N3500 | Obras Civiles [38 h] | 38 | IWP-2221-DA-310-0092 | CWA-2221-300 | PND | CWA-2221-300 - Nodo 3500 Frente 3 | PND | Sin Iniciar | PND | CWP-2221-DA-310 |
| M2221DBA00326 |  | Estructura Liviana Acero ASTM <30 kg/m ASTM-A36/A36M | 15d | 2023-05-25 | 2023-06-12 | M2221DBA00325 | 187.27d | 162.27d | Andina 2 turnos N3500 | Obras Civiles [150 h] | 150 | IWP-2221-DA-310-0093 | CWA-2221-300 | PND | CWA-2221-300 - Nodo 3500 Frente 3 | PND | Sin Iniciar | PND | CWP-2221-DA-310 |
|  | 4 | **MARCOS DE FORTIFICACION ACCESO PORTAL NODO 3500** |  | 2023-02-16 | 2023-02-19 |  |  |  |  |  |  |  |  |  |  |  |  |  |  |
| M2221DAD00327 |  | MARCOS DE FORTIFICACION ACCESO PORTAL NODO 3500 | 3d | 2023-02-16 | 2023-02-19 | M2221MAB00275, M2221MAB474 | 237d | 0d | Andina 2 turnos N3500 | Obras Civiles [935 h] | 935 | IWP-2221-DA-300-0089 | CWA-2221-300 | PND | CWA-2221-300 - Nodo 3500 Frente 3 | PND | Completado | PND | CWP-2221-DA-300 |
|  | 5 | **SOPORTE GABINETE DE MANGUERA Y EXTINTORES** |  | 2023-04-09 | 2023-06-12 |  |  |  |  |  |  |  |  |  |  |  |  |  |  |
| M2221DAA00328 |  | SOPORTE GABINETE DE MANGUERA Y EXTINTORES | 60d | 2023-04-09 | 2023-06-12 | M2221DBA00323 SS | 79.27d | 0d | Andina 2 turnos N3500 | Obras Civiles [529 h] | 529 | IWP-2221-PD-710-0259 | CWA-2221-700 | PND | CWA-2221-700 - Infraestructura general | PND | Sin Iniciar | PND | CWP-2221-PD-710 |
|  | 7 | **TOPE DE ALERTA PROXIMIDAD ESTACION REDUCTORA DE PRESION** |  | 2023-04-09 | 2023-06-12 |  |  |  |  |  |  |  |  |  |  |  |  |  |  |
| M2221CAC00329 |  | TOPE DE ALERTA PROXIMIDAD ESTACION REDUCTORA DE PRESION | 60d | 2023-04-09 | 2023-06-12 | M2221DAA00328 SS | 79.27d | 0d | Andina 2 turnos N3500 | Obras Civiles [39 h] | 39 | IWP-2221-PA-700-0219 | CWA-2221-700 | PND | CWA-2221-700 - Infraestructura general | PND | Sin Iniciar | PND | CWP-2221-PA-700 |
|  | 6 | **MURO TEM NODO 3500** |  | 2023-03-11 | 2023-05-13 |  |  |  |  |  |  |  |  |  |  |  |  |  |  |
| M2221BAG00332 |  | Movimiento de Tierra | 5d | 2023-03-11 | 2023-03-15 | M2221ME000317, M2221DAD00327 FS+20d, M2221ME000317-2, M2221MAB00283 | 237d | 0d | Andina 1 turno N3500 | Obras Civiles [459 h] | 459 | IWP-1200-AB-600-0001 | CWA-1200-600 | PND | CWA-1200-600 - Obras de superficie | PND | Sin Iniciar | PND | CWP-1200-AB-600 |
| M2221BAG00330 |  | Construccion Muro Contra Avalanchas | 25d | 2023-03-16 | 2023-04-09 | M2221BAG00332 | 237d | 0d | Andina 1 turno N3500 | Obras Civiles [2248 h]; HORMIGONES [22 h] | 2,248 | IWP-1200-BA-610-0003 | CWA-1200-600 | PND | CWA-1200-600 - Obras de superficie | PND | Sin Iniciar | PND | CWP-1200-BA-610 |
| M2221CAC00331 |  | Geotextil y Geomembrana | 3d | 2023-04-07 | 2023-04-09 | M2221BAG00330 FF | 237d | 0d | Andina 1 turno N3500 | Obras Civiles [177 h] | 177 | IWP-1200-BA-610-0004 | CWA-1200-600 | PND | CWA-1200-600 - Obras de superficie | PND | Sin Iniciar | PND | CWP-1200-BA-610 |
| M2221BAG00333 |  | IMPERMEABILIZACION Y RELLENO SOBRE PORTAL NODO 3500 | 33d | 2023-04-10 | 2023-05-13 | M2221CAC00331 | 237d | 6d | Andina 1 turno N3500 | Obras Civiles [4322 h] | 4,322 | IWP-1200-AB-615-0002 | CWA-1200-600 | PND | CWA-1200-600 - Obras de superficie | PND | Sin Iniciar | PND | CWP-1200-AB-615 |
|  | 3 | **MECÁNICA** |  | 2023-12-21 | 2024-01-05 |  |  |  |  |  |  |  |  |  |  |  |  |  |  |
|  | 1 | **RAMPA** |  | 2023-12-21 | 2024-01-05 |  |  |  |  |  |  |  |  |  |  |  |  |  |  |
| M2221KM000334 |  | Refugio Emergencia Móvil 2 un | 15d | 2023-12-21 | 2024-01-05 | M2221CCA00322 SS, M2221CCA00318, M2221DBA00326, M2221CCA00322, M2221MAB00315-2 | 25d |  | Andina 1 turno N3500 | Mecanica [1430 h] | 1,430 | IWP-2221-EC-300-0099 | CWA-2221-300 | PND | CWA-2221-300 - Nodo 3500 Frente 3 | PND | Sin Iniciar | PND | CWP-2221-EC-300 |
|  | 4 | **ELECTRICIDAD** |  | 2023-12-21 | 2024-03-16 |  |  |  |  |  |  |  |  |  |  |  |  |  |  |
|  | 6 | **Montaje Eléctrico Frente 3 km 3060 al 2700** |  | 2023-12-21 | 2024-02-15 |  |  |  |  |  |  |  |  |  |  |  |  |  |  |
|  | 5 | **SOPORTE CANALIZACIÓN** |  | 2023-12-21 | 2024-01-10 |  |  |  |  |  |  |  |  |  |  |  |  |  |  |
| M2221RBB00345 |  | SOPORTE CANALIZACION Tramo 3060 al 2700 | 20d | 2023-12-21 | 2024-01-10 | M2221CCA00322, M2221SA000115, M2221SB000117, M2221PD000118, M2221SE000113, M2221RDD00116, M2221SE000114 | 20d | 0d | Andina 1 turno N3500 | Electricidad [5085 h] | 5,085 | IWP-2221-RB-300-0308 | CWA-2221-300 | PND | CWA-2221-300 - Nodo 3500 Frente 3 | PND | Sin Iniciar | PND | CWP-2221-RB-300 |
|  | 4 | **CANALIZACIÓN** |  | 2023-12-31 | 2024-01-20 |  |  |  |  |  |  |  |  |  |  |  |  |  |  |
| M2221RBB00344 |  | CANALIZACION Tramo 3060 al 2700 | 20d | 2023-12-31 | 2024-01-20 | M2221CCA00322 SS, M2221SA000115, M2221SB000117, M2221PD000118, M2221SE000113, M2221RDD00116, M2221SE000114, M2221RBB00345 SS+10d | 20d | 0d | Andina 1 turno N3500 | Electricidad [8070 h]; CABLES [1025 h] | 8,070 | IWP-2221-RC-300-0315 | CWA-2221-300 | PND | CWA-2221-300 - Nodo 3500 Frente 3 | PND | Sin Iniciar | PND | CWP-2221-RC-300 |

| ID | WBS | Activity | Duration | Start | Finish | Predecessors | Total float | Free float | Calendar | Resources | Cost | IWP-BIM | CWA | DISCIPLINA | CWA Descripción | Criticidad FF | Estado Actividad | Criticidad TF | cwp |
| --- | --- | --- | --- | --- | --- | --- | --- | --- | --- | --- | --- | --- | --- | --- | --- | --- | --- | --- | --- |
|  | 2 | **FRONTÓN ELÉCTRICO N°4** |  | 2024-01-21 | 2024-02-04 |  |  |  |  |  |  |  |  |  |  |  |  |  |  |
| M2221QC000350 |  | TABLERO DE FUERZA Y ALUMBRADO TAG Fronton Electrico N°4 | 4d | 2024-01-21 | 2024-01-24 | M2221RBB00344 | 35d | 0d | Andina 1 turno N3500 | Electricidad [154 h] | 154 | IWP-2221-QF-310-0293 | CWA-2221-300 | PND | CWA-2221-300 - Nodo 3500 Frente 3 | PND | Sin Iniciar | PND | CWP-2221-QF-310 |
| M2221QC000352 |  | SUBESTACIÓN UNITARIA 4,16/0,4; 45kVA (Celda de entrada de MT tipo AIS | 9d | 2024-01-21 | 2024-01-29 | M2221RBB00344, M2221RBB00345 | 81d |  | Andina 1 turno N3500 | Electricidad [501 h] | 501 | IWP-2221-QC-310-0279 | CWA-2221-300 | PND | CWA-2221-300 - Nodo 3500 Frente 3 | PND | Sin Iniciar | PND | CWP-2221-QC-310 |
| M2221QC000351 |  | UPS (UNIDAD DE PODER ININTERRUMPIDO) TAG | 4d | 2024-01-25 | 2024-01-28 | M2221QC000350 | 35d | 0d | Andina 1 turno N3500 | Electricidad [105 h] | 105 | IWP-2221-QF-310-0294 | CWA-2221-300 | PND | CWA-2221-300 - Nodo 3500 Frente 3 | PND | Sin Iniciar | PND | CWP-2221-QF-310 |
| M2221QC000353 |  | TABLERO DE ENCHUFES INDUSTRIALES 16A IP65 (3F+N+T) TAG | 7d | 2024-01-29 | 2024-02-04 | M2221QC000351 | 35d | 1d | Andina 1 turno N3500 | Electricidad [154 h] | 154 | IWP-2221-QF-310-0295 | CWA-2221-300 | PND | CWA-2221-300 - Nodo 3500 Frente 3 | PND | Sin Iniciar | PND | CWP-2221-QF-310 |
|  | 3 | **LUMINARIAS RAMPA** |  | 2024-02-06 | 2024-02-15 |  |  |  |  |  |  |  |  |  |  |  |  |  |  |
| M2221QJ000343 |  | LUMINARIAS RAMPA | 10d | 2024-02-06 | 2024-02-15 | M2221CCA00322 SS+69d, M2221SA000115, M2221SB000117, M2221PD000118, M2221SE000113, M2221RDD00116, M2221SE000114, M2221QC000353 | 34d | 0d | Andina 1 turno N3500 | Electricidad [1909 h] | 1,909 | IWP-2221-QJ-300-0301 | CWA-2221-300 | PND | CWA-2221-300 - Nodo 3500 Frente 3 | PND | Sin Iniciar | PND | CWP-2221-QJ-300 |
|  | 1 | **Montaje Eléctrico Frente 3 km 1960 al 2700** |  | 2024-01-21 | 2024-03-16 |  |  |  |  |  |  |  |  |  |  |  |  |  |  |
|  | 5 | **SOPORTE CANALIZACIÓN** |  | 2024-01-21 | 2024-02-09 |  |  |  |  |  |  |  |  |  |  |  |  |  |  |
| M2221RBB00356 |  | SOPORTE CANALIZACION Tramo 1960 a 2700 | 20d | 2024-01-21 | 2024-02-09 | M2221RBB00344, M2221RBB00345, M2221CCA458 | 41d | 0d | Andina 1 turno N3500 | Electricidad [10324 h] | 10,324 | IWP-2221-RB-300-0309 | CWA-2221-300 | PND | CWA-2221-300 - Nodo 3500 Frente 3 | PND | Sin Iniciar | PND | CWP-2221-RB-300 |
|  | 4 | **CANALIZACIÓN** |  | 2024-02-16 | 2024-03-06 |  |  |  |  |  |  |  |  |  |  |  |  |  |  |
| M2221RBB00355 |  | CANALIZACION Tramo 1960 a 2700 | 20d | 2024-02-16 | 2024-03-06 | M2221QJ000343, M2221RBB00344, M2221RBB00345, M2221RBB00344 FF, M2221RBB00356 SS+3d | 34d | 0d | Andina 1 turno N3500 | Electricidad [16385 h]; CABLES [2665 h] | 16,385 | IWP-2221-RC-300-0316 | CWA-2221-300 | PND | CWA-2221-300 - Nodo 3500 Frente 3 | PND | Sin Iniciar | PND | CWP-2221-RC-300 |
|  | 3 | **LUMINARIAS RAMPA** |  | 2024-03-07 | 2024-03-16 |  |  |  |  |  |  |  |  |  |  |  |  |  |  |
| M2221QC000354 |  | LUMINARIAS RAMPA | 10d | 2024-03-07 | 2024-03-16 | M2221QJ000343, M2221RBB00344, M2221RBB00345, M2221RBB00355 | 34d |  | Andina 1 turno N3500 | Electricidad [3876 h] | 3,876 | IWP-2221-QJ-300-0300 | CWA-2221-300 | PND | CWA-2221-300 - Nodo 3500 Frente 3 | PND | Sin Iniciar | PND | CWP-2221-QJ-300 |
|  | 1 | **FRONTÓN ELÉCTRICO N°3** |  | 2024-02-10 | 2024-03-01 |  |  |  |  |  |  |  |  |  |  |  |  |  |  |
| M2221QC000346 |  | TABLERO DE FUERZA Y ALUMBRADO TAG (Tramo 2) | 6d | 2024-02-10 | 2024-02-15 | M2221RBB00356 | 49d | 0d | Andina 1 turno N3500 | Electricidad [154 h] | 154 | IWP-2221-QF-300-0288 | CWA-2221-300 | PND | CWA-2221-300 - Nodo 3500 Frente 3 | PND | Sin Iniciar | PND | CWP-2221-QF-300 |
| M2221QC000347 |  | UPS (UNIDAD DE PODER ININTERRUMPIDO) TAG (Tramo 2) | 4d | 2024-02-16 | 2024-02-19 | M2221QC000346, M2221QC000346 FF | 49d | 0d | Andina 1 turno N3500 | Electricidad [105 h] | 105 | IWP-2221-QF-300-0289 | CWA-2221-300 | PND | CWA-2221-300 - Nodo 3500 Frente 3 | PND | Sin Iniciar | PND | CWP-2221-QF-300 |
| M2221QC000348 |  | SUBESTACIÓN UNITARIA 4,16/0,4; 45kVA (Switchgear AIS MT (Tramo 2) | 8d | 2024-02-20 | 2024-02-27 | M2221QJ000343 SS, M2221RBB00344, M2221RBB00345, M2221QC000347 | 49d | 0d | Andina 1 turno N3500 | Electricidad [501 h] | 501 | IWP-2221-QC-300-0278 | CWA-2221-300 | PND | CWA-2221-300 - Nodo 3500 Frente 3 | PND | Sin Iniciar | PND | CWP-2221-QC-300 |
| M2221QC000349 |  | TABLERO DE ENCHUFES INDUSTRIALES 16A IP65 (3F+N+T) TAG | 3d | 2024-02-28 | 2024-03-01 | M2221QC000347 SS, M2221QC000348 | 49d |  | Andina 1 turno N3500 | Electricidad [154 h] | 154 | IWP-2221-QF-300-0290 | CWA-2221-300 | PND | CWA-2221-300 - Nodo 3500 Frente 3 | PND | Sin Iniciar | PND | CWP-2221-QF-300 |
|  | 5 | **INSTRUMENTACIÓN** |  | 2023-12-31 | 2024-04-10 |  |  |  |  |  |  |  |  |  |  |  |  |  |  |
|  | 8 | **Rampa Instrumentación** |  | 2023-12-31 | 2024-04-10 |  |  |  |  |  |  |  |  |  |  |  |  |  |  |
|  | 1 | **Instrumentación Frente 3 Km 3060 al 2700** |  | 2023-12-31 | 2024-03-05 |  |  |  |  |  |  |  |  |  |  |  |  |  |  |
|  | 2 | **FRONTÓN ELÉCTRIO N°4 / ENSANCHE CAMBIO CADENA** |  | 2023-12-31 | 2024-02-15 |  |  |  |  |  |  |  |  |  |  |  |  |  |  |
| M2221QF000366 |  | ALIMENTACIÓN ELECTRICA (Fronto Electrico N°4) | 3d | 2023-12-31 | 2024-01-03 | M2221RBB00344 SS | 54d | 0d | Andina 1 turno N3500 | Instrumentacion [50 h] | 50 | IWP-2221-QF-310-0291 | CWA-2221-300 | PND | CWA-2221-300 - Nodo 3500 Frente 3 | PND | Sin Iniciar | PND | CWP-2221-QF-310 |
| M2221QF000397 |  | ALIMENTACIÓN ELECTRICA (Esanche Cambio Cadena) | 3d | 2024-01-04 | 2024-01-06 | M2221QF000366 | 54d | 0d | Andina 1 turno N3500 | Instrumentacion [102 h] | 102 | IWP-2221-QF-310-0292 | CWA-2221-300 | PND | CWA-2221-300 - Nodo 3500 Frente 3 | PND | Sin Iniciar | PND | CWP-2221-QF-310 |
| M2221SB000398 |  | SCADA ELECTRICO (Fronto Electrico N°4 / Esanche Cambio Cadena) | 3d | 2024-01-07 | 2024-01-09 | M2221QF000397 | 54d | 0d | Andina 1 turno N3500 | Instrumentacion [152 h] | 152 | IWP-2221-SA-310-0402 | CWA-2221-300 | PND | CWA-2221-300 - Nodo 3500 Frente 3 | PND | Sin Iniciar | PND | CWP-2221-SA-310 |
| M2221SB000366 |  | SISTEMA DETECCION AUTOMATICA DE INCENDIO (Fronto Electrico N°4) | 3d | 2024-01-10 | 2024-01-12 | M2221SB000398 | 54d | 0d | Andina 1 turno N3500 | Instrumentacion [74 h] | 74 | IWP-2221-SA-310-0398 | CWA-2221-300 | PND | CWA-2221-300 - Nodo 3500 Frente 3 | PND | Sin Iniciar | PND | CWP-2221-SA-310 |
| M2221SB000394 |  | SISTEMA DETECCION AUTOMATICA DE INCENDIO (Esanche Cambio Cadena) | 3d | 2024-01-13 | 2024-01-15 | M2221SB000398, M2221SB000366 | 54d | 0d | Andina 1 turno N3500 | Instrumentacion [151 h] | 151 | IWP-2221-SA-310-0401 | CWA-2221-300 | PND | CWA-2221-300 - Nodo 3500 Frente 3 | PND | Sin Iniciar | PND | CWP-2221-SA-310 |
| M2221SB000393 |  | SISTEMA DETECCION DE PRESENCIA (Fronto Electrico N°4) | 3d | 2024-01-16 | 2024-01-18 | M2221SB000394 | 54d | 0d | Andina 1 turno N3500 | Instrumentacion [28 h] | 28 | IWP-2221-SA-310-0400 | CWA-2221-300 | PND | CWA-2221-300 - Nodo 3500 Frente 3 | PND | Sin Iniciar | PND | CWP-2221-SA-310 |
| M2221SD000396 |  | RED INTEGRADA DE SUPERVISIÓN Y CONTROL (RISC) (Fronto Electrico N°4) | 5d | 2024-01-16 | 2024-01-20 | M2221SB000393 SS | 54d | 0d | Andina 1 turno N3500 | Instrumentacion [258 h] | 258 | IWP-2221-SA-310-0406 | CWA-2221-300 | PND | CWA-2221-300 - Nodo 3500 Frente 3 | PND | Sin Iniciar | PND | CWP-2221-SA-310 |
| M2221SA000363 |  | SISTEMA DETECCION DE PRESENCIA (Esanche Cambio Cadena) | 2d | 2024-01-19 | 2024-01-20 | M2221SB000366, M2221SB000394, M2221SB000394 FF, M2221SB000393, M2221SB000393 FF | 56d | 2d | Andina 1 turno N3500 | Instrumentacion [14 h] | 14 | IWP-2221-SA-310-0394 | CWA-2221-300 | PND | CWA-2221-300 - Nodo 3500 Frente 3 | PND | Sin Iniciar | PND | CWP-2221-SA-310 |
| M2221SD000364 |  | RED INTEGRADA DE SUPERVISIÓN Y CONTROL (RISC) | 3d | 2024-01-21 | 2024-01-23 | M2221SA000363 SS, M2221SD000396 | 54d | 0d | Andina 1 turno N3500 | Instrumentacion [127 h] | 127 | IWP-2221-SA-310-0405 | CWA-2221-300 | PND | CWA-2221-300 - Nodo 3500 Frente 3 | PND | Sin Iniciar | PND | CWP-2221-SA-310 |
| M2221SC000391 |  | TELEFONIA (Fronto Electrico N°4) | 1d | 2024-01-24 | 2024-01-24 | M2221SD000396 SS, M2221SD000364 | 54d | 0d | Andina 1 turno N3500 | Instrumentacion [7 h] | 7 | IWP-2221-SA-310-0404 | CWA-2221-300 | PND | CWA-2221-300 - Nodo 3500 Frente 3 | PND | Sin Iniciar | PND | CWP-2221-SA-310 |
| M2221SC000365 |  | TELEFONIA (Esanche Cambio Cadena) | 1d | 2024-01-25 | 2024-01-25 | M2221SC000391 | 54d | 11d | Andina 1 turno N3500 | Instrumentacion [4 h] | 4 | IWP-2221-SA-310-0403 | CWA-2221-300 | PND | CWA-2221-300 - Nodo 3500 Frente 3 | PND | Sin Iniciar | PND | CWP-2221-SA-310 |
| M2221SA000367 |  | INSTRUMENTOS Frente 3 KM 3060 al 2700 (Fronto Electrico N°4) | 3d | 2024-02-06 | 2024-02-08 | M2221SE000119 SS, M2221SE000121 SS, M2221SE000120 SS, M2221QJ000343 SS, M2221RBB00344 SS, M2221RBB00345 SS, M2221SB000366, M2221SD000364, M2221SC000365 | 43d | 0d | Andina 1 turno N3500 | Instrumentacion [83 h] | 83 | IWP-2221-SA-310-0395 | CWA-2221-300 | PND | CWA-2221-300 - Nodo 3500 Frente 3 | PND | Sin Iniciar | PND | CWP-2221-SA-310 |
| M2221SA000395 |  | INSTRUMENTOS Frente 3 KM 3060 al 2700 (Esanche Cambio Cadena) | 3d | 2024-02-09 | 2024-02-11 | M2221SA000367 | 43d | 0d | Andina 1 turno N3500 | Instrumentacion [169 h] | 169 | IWP-2221-SA-310-0396 | CWA-2221-300 | PND | CWA-2221-300 - Nodo 3500 Frente 3 | PND | Sin Iniciar | PND | CWP-2221-SA-310 |
| M2221SB000362 |  | SISTEMA CCTV (Fronto Electrico N°4) | 2d | 2024-02-12 | 2024-02-13 | M2221SA000395 | 43d | 0d | Andina 1 turno N3500 | Instrumentacion [82 h] | 82 | IWP-2221-SA-310-0397 | CWA-2221-300 | PND | CWA-2221-300 - Nodo 3500 Frente 3 | PND | Sin Iniciar | PND | CWP-2221-SA-310 |
| M2221SB000392 |  | SISTEMA CCTV (Esanche Cambio Cadena) | 2d | 2024-02-14 | 2024-02-15 | M2221SA000395, M2221SB000362 | 43d | 16d | Andina 1 turno N3500 | Instrumentacion [167 h] | 167 | IWP-2221-SA-310-0399 | CWA-2221-300 | PND | CWA-2221-300 - Nodo 3500 Frente 3 | PND | Sin Iniciar | PND | CWP-2221-SA-310 |

| ID | WBS | Activity | Duration | Start | Finish | Predecessors | Total float | Free float | Calendar | Resources | Cost | IWP-BIM | CWA | DISCIPLINA | CWA Descripción | Criticidad FF | Estado Actividad | Criticidad TF | cwp |
| --- | --- | --- | --- | --- | --- | --- | --- | --- | --- | --- | --- | --- | --- | --- | --- | --- | --- | --- | --- |
|  | 4 | **ESTACIÓN REDUCTORA DE PRESIÓN N°01@02** |  | 2024-01-21 | 2024-01-28 |  |  |  |  |  |  |  |  |  |  |  |  |  |  |
| M2221SA000375 |  | INSTRUMENTOS | 4d | 2024-01-21 | 2024-01-24 | M2221RBB00344 | 20d | 0d | Andina 1 turno N3500 | Instrumentacion [55 h] | 55 | IWP-2221-SA-330-0411 | CWA-2221-300 | PND | CWA-2221-300 - Nodo 3500 Frente 3 | PND | Sin Iniciar | PND | CWP-2221-SA-330 |
| M2221SB000376 |  | SISTEMA DETECCION AUTOMATICA DE INCENDIO | 4d | 2024-01-25 | 2024-01-28 | M2221SE000119 SS, M2221SE000121 SS, M2221SE000120 SS, M2221RBB00344 SS, M2221RBB00345 SS, M2221SA000375 | 20d | 0d | Andina 1 turno N3500 | Instrumentacion [28 h] | 28 | IWP-2221-SA-330-0413 | CWA-2221-300 | PND | CWA-2221-300 - Nodo 3500 Frente 3 | PND | Sin Iniciar | PND | CWP-2221-SA-330 |
|  | 5 | **PORTAL NODO 3500** |  | 2024-01-29 | 2024-02-14 |  |  |  |  |  |  |  |  |  |  |  |  |  |  |
| M2221SD000378 |  | SISTEMA DETECCION DE PRESENCIA Portal Nodo (Tramo 1) | 5d | 2024-01-29 | 2024-02-02 | M2221SE000119 SS, M2221SE000121 SS, M2221RBB00344 SS, M2221RBB00345 SS, M2221SB000376 | 20d | 0d | Andina 1 turno N3500 | Instrumentacion [51 h] | 51 | IWP-2221-SA-320-0409 | CWA-2221-300 | PND | CWA-2221-300 - Nodo 3500 Frente 3 | PND | Sin Iniciar | PND | CWP-2221-SA-320 |
| M2221SD000377 |  | RED INTEGRADA DE SUPERVISIÓN Y CONTROL (RISC) Portal Nodo (Tramo 1) | 5d | 2024-02-03 | 2024-02-07 | M2221SD000378 | 20d | 0d | Andina 1 turno N3500 | Instrumentacion [73 h] | 73 | IWP-2221-SA-320-0408 | CWA-2221-300 | PND | CWA-2221-300 - Nodo 3500 Frente 3 | PND | Sin Iniciar | PND | CWP-2221-SA-320 |
| M2221SB000409 |  | SISTEMA DETECCION DE PRESENCIA Portal Nodo (Tramo 2) | 7d | 2024-02-08 | 2024-02-14 | M2221SB000376, M2221SD000378, M2221SA000375, M2221SD000377, M2221SD000378 FF | 20d | 0d | Andina 1 turno N3500 | Instrumentacion [103 h] | 103 | IWP-2221-SA-320-0407 | CWA-2221-300 | PND | CWA-2221-300 - Nodo 3500 Frente 3 | PND | Sin Iniciar | PND | CWP-2221-SA-320 |
| M2221SD000408 |  | RED INTEGRADA DE SUPERVISIÓN Y CONTROL (RISC) Portal Nodo (Tramo 2) | 7d | 2024-02-08 | 2024-02-14 | M2221SD000377 | 65d |  | Andina 1 turno N3500 | Instrumentacion [148 h] | 148 | IWP-2221-SA-320-0410 | CWA-2221-300 | PND | CWA-2221-300 - Nodo 3500 Frente 3 | PND | Sin Iniciar | PND | CWP-2221-SA-320 |
|  | 6 | **GABINETE DE MANGUERAS** |  | 2024-02-11 | 2024-03-05 |  |  |  |  |  |  |  |  |  |  |  |  |  |  |
| M2221PD000380 |  | SOPORTES | 3d | 2024-02-11 | 2024-02-13 | M2221RBB00356 SS, M2221SB000409 SS+3d | 20d | 0d | Andina 1 turno N3500 | Instrumentacion [429 h] | 429 | IWP-2221-PD-720-0260 | CWA-2221-700 | PND | CWA-2221-700 - Infraestructura general | PND | Sin Iniciar | PND | CWP-2221-PD-720 |
| M2221SE000382 |  | CANALIZACION | 10d | 2024-02-14 | 2024-02-23 | M2221PD000380 | 22d | 0d | Andina 1 turno N3500 | Instrumentacion [1327 h] | 1,327 | IWP-2221-RC-300-0313 | CWA-2221-300 | PND | CWA-2221-300 - Nodo 3500 Frente 3 | PND | Sin Iniciar | PND | CWP-2221-RC-300 |
| M2221SE000379 |  | CABLES | 10d | 2024-02-16 | 2024-02-25 | M2221PD000380 SS, M2221SE000382 SS+2d | 22d | 0d | Andina 1 turno N3500 | Instrumentacion [1231 h]; CABLES [1898 h] | 1,231 | IWP-2221-SE-300-0442 | CWA-2221-300 | PND | CWA-2221-300 - Nodo 3500 Frente 3 | PND | Sin Iniciar | PND | CWP-2221-SE-300 |
| M2221RDD00383 |  | MUFA FIBRA ÓPTICA | 1d | 2024-02-26 | 2024-02-26 | M2221SE000382 SS, M2221SE000379 | 27d | 0d | Andina 1 turno N3500 | Instrumentacion [16 h] | 16 | IWP-2221-SE-300-0440 | CWA-2221-300 | PND | CWA-2221-300 - Nodo 3500 Frente 3 | PND | Sin Iniciar | PND | CWP-2221-SE-300 |
| M2221SE000384 |  | FIBRA OPTICA HACIA SALA DE COMUNICACIONES (Barrio Cívico) y SALA ELECTRICA 3100-SEL-001 | 3d | 2024-02-26 | 2024-02-28 | M2221RDD00383 SS, M2221SE000379 | 27d | 0d | Andina 1 turno N3500 | Instrumentacion [686 h] | 686 | IWP-1200-SE-650-0013 | CWA-1200-600 | PND | CWA-1200-600 - Obras de superficie | PND | Sin Iniciar | PND | CWP-1200-SE-650 |
| M2221SA000381 |  | INSTRUMENTOS | 3d | 2024-02-29 | 2024-03-02 | M2221SE000384 | 27d | 0d | Andina 1 turno N3500 | Instrumentacion [180 h] | 180 | IWP-2221-SA-720-0425 | CWA-2221-700 | PND | CWA-2221-700 - Infraestructura general | PND | Sin Iniciar | PND | CWP-2221-SA-720 |
| M2221SB000385 |  | SISTEMA DETECCION AUTOMATICA DE INCENDIO | 3d | 2024-03-03 | 2024-03-05 | M2221SB000123 SS, M2221SE000119 SS, M2221SE000121 SS, M2221SE000120 SS, M2221QJ000343 SS, M2221RBB00344 SS, M2221RBB00345 SS, M2221SE000379, M2221SA000381 | 27d | 0d | Andina 1 turno N3500 | Instrumentacion [370 h] | 370 | IWP-2221-SA-720-0427 | CWA-2221-700 | PND | CWA-2221-700 - Infraestructura general | PND | Sin Iniciar | PND | CWP-2221-SA-720 |
|  | 2 | **Instrumentación Frente 3 km 1960 al 2700** |  | 2024-02-11 | 2024-04-10 |  |  |  |  |  |  |  |  |  |  |  |  |  |  |
|  | 1 | **CRUCE VEHICULAR N°3** |  | 2024-03-03 | 2024-03-23 |  |  |  |  |  |  |  |  |  |  |  |  |  |  |
| M2221SA000361 |  | INSTRUMENTOS Cruce Vehicular N°3 (Tramo 1) | 3d | 2024-03-03 | 2024-03-05 | M2221SE000119 SS, M2221SE000121 SS, M2221QJ000343 SS, M2221RBB00345 SS, M2221SB000392, M2221SB000385 SS | 27d | 0d | Andina 1 turno N3500 | Instrumentacion [83 h] | 83 | IWP-2221-SA-340-0417 | CWA-2221-300 | PND | CWA-2221-300 - Nodo 3500 Frente 3 | PND | Sin Iniciar | PND | CWP-2221-SA-340 |
| M2221QF000357 |  | SISTEMA RADIOCOMUNICACIONES Vehicular N°3 (Tramo 1) | 4d | 2024-03-06 | 2024-03-09 | M2221SA000361 | 27d | 0d | Andina 1 turno N3500 | Instrumentacion [73 h] | 73 | IWP-2221-SA-340-0415 | CWA-2221-300 | PND | CWA-2221-300 - Nodo 3500 Frente 3 | PND | Sin Iniciar | PND | CWP-2221-SA-340 |
| M2221SB000358 |  | SISTEMA CCTV Vehicular N°3 (Tramo 1) | 1d | 2024-03-06 | 2024-03-06 | M2221QF000357 SS, M2221SB000392 SS | 27d | 0d | Andina 1 turno N3500 | Instrumentacion [9 h] | 9 | IWP-2221-SA-340-0419 | CWA-2221-300 | PND | CWA-2221-300 - Nodo 3500 Frente 3 | PND | Sin Iniciar | PND | CWP-2221-SA-340 |
| M2221SC000359 |  | TELEFONIA Vehicular N°3 (Tramo 1) | 1d | 2024-03-07 | 2024-03-07 | M2221SB000358 | 27d | 0d | Andina 1 turno N3500 | Instrumentacion [4 h] | 4 | IWP-2221-SA-340-0423 | CWA-2221-300 | PND | CWA-2221-300 - Nodo 3500 Frente 3 | PND | Sin Iniciar | PND | CWP-2221-SA-340 |
| M2221SA000360 |  | SISTEMA DETECCION AUTOMATICA DE INCENDIO Vehicular N°3 (Tramo 1) | 4d | 2024-03-08 | 2024-03-11 | M2221SC000359 | 27d | 0d | Andina 1 turno N3500 | Instrumentacion [30 h] | 30 | IWP-2221-SA-340-0416 | CWA-2221-300 | PND | CWA-2221-300 - Nodo 3500 Frente 3 | PND | Sin Iniciar | PND | CWP-2221-SA-340 |
| M2221SA000386 |  | INSTRUMENTOS Vehicular N°3 (Tramo 2) | 3d | 2024-03-12 | 2024-03-14 | M2221SA000361, M2221SA000367, M2221SB000376, M2221SD000378, M2221SB000385, M2221SA000360, M2221SB000366, M2221SA000375, M2221SD000377, M2221SE000384 | 27d | 0d | Andina 1 turno N3500 | Instrumentacion [169 h] | 169 | IWP-2221-SA-340-0418 | CWA-2221-300 | PND | CWA-2221-300 - Nodo 3500 Frente 3 | PND | Sin Iniciar | PND | CWP-2221-SA-340 |
| M2221SB000387 |  | SISTEMA RADIOCOMUNICACIONES Vehicular N°3 (Tramo 2) | 3d | 2024-03-15 | 2024-03-17 | M2221SA000386 | 27d | 0d | Andina 1 turno N3500 | Instrumentacion [148 h] | 148 | IWP-2221-SA-340-0420 | CWA-2221-300 | PND | CWA-2221-300 - Nodo 3500 Frente 3 | PND | Sin Iniciar | PND | CWP-2221-SA-340 |
| M2221SB000388 |  | SISTEMA CCTV Vehicular N°3 (Tramo 2) | 2d | 2024-03-18 | 2024-03-19 | M2221SB000387 | 27d | 0d | Andina 1 turno N3500 | Instrumentacion [19 h] | 19 | IWP-2221-SA-340-0421 | CWA-2221-300 | PND | CWA-2221-300 - Nodo 3500 Frente 3 | PND | Sin Iniciar | PND | CWP-2221-SA-340 |
| M2221SC000390 |  | / | 1d | 2024-03-20 | 2024-03-20 | M2221SB000388 | 27d | 0d | Andina 1 turno N3500 | Instrumentacion [7 h] | 7 | IWP-2221-SA-340-0424 | CWA-2221-300 | PND | CWA-2221-300 - Nodo 3500 Frente 3 | PND | Sin Iniciar | PND | CWP-2221-SA-340 |
| M2221SB000389 |  | SISTEMA DETECCION AUTOMATICA DE INCENDIO Vehicular N°3 (Tramo 2) | 3d | 2024-03-21 | 2024-03-23 | M2221SC000390 | 27d |  | Andina 1 turno N3500 | Instrumentacion [61 h] | 61 | IWP-2221-SA-340-0422 | CWA-2221-300 | PND | CWA-2221-300 - Nodo 3500 Frente 3 | PND | Sin Iniciar | PND | CWP-2221-SA-340 |

| ID | WBS | Activity | Duration | Start | Finish | Predecessors | Total float | Free float | Calendar | Resources | Cost | IWP-BIM | CWA | DISCIPLINA | CWA Descripción | Criticidad FF | Estado Actividad | Criticidad TF | cwp |
| --- | --- | --- | --- | --- | --- | --- | --- | --- | --- | --- | --- | --- | --- | --- | --- | --- | --- | --- | --- |
|  | 3 | **FRONTON REFUGIO N°3 / FRONTÓN ELÉCTRIO N°3** |  | 2024-03-10 | 2024-04-04 |  |  |  |  |  |  |  |  |  |  |  |  |  |  |
| M2221SB000374 |  | SISTEMA CCTV (Fronton Regufio N°3) | 4d | 2024-03-10 | 2024-03-13 | M2221SE000122 SS, M2221SB000123 SS, M2221SE000119 SS, M2221SE000121 SS, M2221SE000120 SS, M2221QJ000343 SS, M2221RBB00344 SS, M2221RBB00345 SS, M2221SE000379 | 9d | 0d | Andina 1 turno N3500 | Instrumentacion [73 h] | 73 | IWP-2221-SA-300-0385 | CWA-2221-300 | PND | CWA-2221-300 - Nodo 3500 Frente 3 | PND | Sin Iniciar | PND | CWP-2221-SA-300 |
| M2221SA000368 |  | SISTEMA DETECCION DE PRESENCIA (Fronton Regufio N°3) | 4d | 2024-03-14 | 2024-03-17 | M2221SB000374 | 9d | 0d | Andina 1 turno N3500 | Instrumentacion [115 h] | 115 | IWP-2221-SA-300-0382 | CWA-2221-300 | PND | CWA-2221-300 - Nodo 3500 Frente 3 | PND | Sin Iniciar | PND | CWP-2221-SA-300 |
| M2221SD000369 |  | RED INTEGRADA DE SUPERVISIÓN Y CONTROL (RISC) (Fronton Regufio N°3) | 4d | 2024-03-18 | 2024-03-21 | M2221SA000368 | 9d | 0d | Andina 1 turno N3500 | Instrumentacion [127 h] | 127 | IWP-2221-SA-300-0392 | CWA-2221-300 | PND | CWA-2221-300 - Nodo 3500 Frente 3 | PND | Sin Iniciar | PND | CWP-2221-SA-300 |
| M2221SC000370 |  | TELEFONIA (Fronton Regufio N°3) | 1d | 2024-03-22 | 2024-03-22 | M2221SD000369 | 9d | 0d | Andina 1 turno N3500 | Instrumentacion [7 h] | 7 | IWP-2221-SA-300-0390 | CWA-2221-300 | PND | CWA-2221-300 - Nodo 3500 Frente 3 | PND | Sin Iniciar | PND | CWP-2221-SA-300 |
| M2221QF000371 |  | ALIMENTACIÓN ELECTRICA (Fronton Regufio N°3) | 3d | 2024-03-23 | 2024-03-25 | M2221SC000370 | 9d | 0d | Andina 1 turno N3500 | Instrumentacion [51 h] | 51 | IWP-2221-QF-300-0286 | CWA-2221-300 | PND | CWA-2221-300 - Nodo 3500 Frente 3 | PND | Sin Iniciar | PND | CWP-2221-QF-300 |
| M2221SB000372 |  | SCADA ELECTRICO (Fronton Regufio N°3) | 3d | 2024-03-26 | 2024-03-28 | M2221QF000371 | 9d | 0d | Andina 1 turno N3500 | Instrumentacion [51 h] | 51 | IWP-2221-SA-300-0383 | CWA-2221-300 | PND | CWA-2221-300 - Nodo 3500 Frente 3 | PND | Sin Iniciar | PND | CWP-2221-SA-300 |
| M2221SB000373 |  | SISTEMA DETECCION AUTOMATICA DE INCENDIO (Fronton Regufio N°3) | 3d | 2024-03-29 | 2024-03-31 | M2221SB000372 | 9d | 0d | Andina 1 turno N3500 | Instrumentacion [97 h] | 97 | IWP-2221-SA-300-0384 | CWA-2221-300 | PND | CWA-2221-300 - Nodo 3500 Frente 3 | PND | Sin Iniciar | PND | CWP-2221-SA-300 |
| M2221QF000402 |  | ALIMENTACIÓN ELECTRICA (Fronton Electrico N°3) | 3d | 2024-04-01 | 2024-04-03 | M2221SC000401 SS, M2221QF000371 | 16d | 0d | Andina 1 turno N3500 | Instrumentacion [103 h] | 103 | IWP-2221-QF-300-0287 | CWA-2221-300 | PND | CWA-2221-300 - Nodo 3500 Frente 3 | PND | Sin Iniciar | PND | CWP-2221-QF-300 |
| M2221SB000399 |  | SISTEMA DETECCION DE PRESENCIA (Fronton Electrico N°3) | 3d | 2024-04-01 | 2024-04-03 | M2221SB000405 SS | 16d | 0d | Andina 1 turno N3500 | Instrumentacion [232 h] | 232 | IWP-2221-SA-300-0386 | CWA-2221-300 | PND | CWA-2221-300 - Nodo 3500 Frente 3 | PND | Sin Iniciar | PND | CWP-2221-SA-300 |
| M2221SB000403 |  | SCADA ELECTRICO (Fronton Electrico N°3) | 3d | 2024-04-01 | 2024-04-03 | M2221QF000402 SS | 16d | 0d | Andina 1 turno N3500 | Instrumentacion [103 h] | 103 | IWP-2221-SA-300-0387 | CWA-2221-300 | PND | CWA-2221-300 - Nodo 3500 Frente 3 | PND | Sin Iniciar | PND | CWP-2221-SA-300 |
| M2221SB000404 |  | SISTEMA DETECCION AUTOMATICA DE INCENDIO (Fronton Electrico N°3) | 3d | 2024-04-01 | 2024-04-03 | M2221SB000403 SS | 16d |  | Andina 1 turno N3500 | Instrumentacion [197 h] | 197 | IWP-2221-SA-300-0388 | CWA-2221-300 | PND | CWA-2221-300 - Nodo 3500 Frente 3 | PND | Sin Iniciar | PND | CWP-2221-SA-300 |
| M2221SB000405 |  | SISTEMA CCTV (Fronton Electrico N°3) | 3d | 2024-04-01 | 2024-04-03 | M2221SA000361, M2221SA000367, M2221SB000374, M2221SB000376, M2221SD000378, M2221SB000385, M2221SA000360, M2221SB000366, M2221SB000373, M2221SA000375, M2221SD000377, M2221SE000384 | 16d | 0d | Andina 1 turno N3500 | Instrumentacion [148 h] | 148 | IWP-2221-SA-300-0389 | CWA-2221-300 | PND | CWA-2221-300 - Nodo 3500 Frente 3 | PND | Sin Iniciar | PND | CWP-2221-SA-300 |
| M2221SC000401 |  | TELEFONIA (Fronton Electrico N°3) | 1d | 2024-04-01 | 2024-04-01 | M2221SD000400 SS | 16d | 0d | Andina 1 turno N3500 | Instrumentacion [14 h] | 14 | IWP-2221-SA-300-0391 | CWA-2221-300 | PND | CWA-2221-300 - Nodo 3500 Frente 3 | PND | Sin Iniciar | PND | CWP-2221-SA-300 |
| M2221SD000400 |  | RED INTEGRADA DE SUPERVISIÓN Y CONTROL (RISC) (Fronton Electrico N°3) | 4d | 2024-04-01 | 2024-04-04 | M2221SB000399 SS | 16d | 0d | Andina 1 turno N3500 | Instrumentacion [258 h] | 258 | IWP-2221-SA-300-0393 | CWA-2221-300 | PND | CWA-2221-300 - Nodo 3500 Frente 3 | PND | Sin Iniciar | PND | CWP-2221-SA-300 |
|  | 4 | **ESTACIÓN REDUCTORA DE PRESIÓN N°01@02** |  | 2024-04-01 | 2024-04-05 |  |  |  |  |  |  |  |  |  |  |  |  |  |  |
| M2221SA000406 |  | INSTRUMENTOS | 5d | 2024-04-01 | 2024-04-05 | M2221SB000407 SS | 14d |  | Andina 1 turno N3500 | Instrumentacion [113 h] | 113 | IWP-2221-SA-330-0412 | CWA-2221-300 | PND | CWA-2221-300 - Nodo 3500 Frente 3 | PND | Sin Iniciar | PND | CWP-2221-SA-330 |
| M2221SB000407 |  | SISTEMA DETECCION AUTOMATICA DE INCENDIO | 5d | 2024-04-01 | 2024-04-05 | M2221SA000361, M2221SA000367, M2221SB000374, M2221SB000376, M2221SD000378, M2221SB000385, M2221SA000360, M2221SB000366, M2221SB000373, M2221SA000375, M2221SD000377, M2221SE000384 | 14d | 0d | Andina 1 turno N3500 | Instrumentacion [56 h] | 56 | IWP-2221-SA-330-0414 | CWA-2221-300 | PND | CWA-2221-300 - Nodo 3500 Frente 3 | PND | Sin Iniciar | PND | CWP-2221-SA-330 |
|  | 6 | **GABINETE DE MANGUERAS** |  | 2024-02-11 | 2024-04-10 |  |  |  |  |  |  |  |  |  |  |  |  |  |  |
| M2221PD000411 |  | SOPORTES | 7d | 2024-02-11 | 2024-02-17 | M2221PD000380 SS, M2221PD000380 FF | 20d | 0d | Andina 1 turno N3500 | Instrumentacion [871 h] | 871 | IWP-2221-PD-720-0261 | CWA-2221-700 | PND | CWA-2221-700 - Infraestructura general | PND | Sin Iniciar | PND | CWP-2221-PD-720 |
| M2221SE000413 |  | CANALIZACION | 10d | 2024-02-18 | 2024-02-27 | M2221PD000411 | 20d | 0d | Andina 1 turno N3500 | Instrumentacion [2693 h] | 2,693 | IWP-2221-RC-300-0314 | CWA-2221-300 | PND | CWA-2221-300 - Nodo 3500 Frente 3 | PND | Sin Iniciar | PND | CWP-2221-RC-300 |
| M2221SE000412 |  | CABLES | 10d | 2024-02-28 | 2024-03-08 | M2221PD000411 SS, M2221SE000413 | 20d | 0d | Andina 1 turno N3500 | Instrumentacion [2500 h]; CABLES [4934 h] | 2,500 | IWP-2221-SE-300-0443 | CWA-2221-300 | PND | CWA-2221-300 - Nodo 3500 Frente 3 | PND | Sin Iniciar | PND | CWP-2221-SE-300 |
| M2221SE000415 |  | FIBRA OPTICA HACIA SALA DE COMUNICACIONES (Barrio Cívico) y SALA ELECTRICA 3100-SEL-001 | 10d | 2024-03-09 | 2024-03-18 | M2221SE000412 | 20d | 0d | Andina 1 turno N3500 | Instrumentacion [1393 h] | 1,393 | IWP-1200-SE-650-0014 | CWA-1200-600 | PND | CWA-1200-600 - Obras de superficie | PND | Sin Iniciar | PND | CWP-1200-SE-650 |
| M2221RDD00414 |  | MUFA FIBRA ÓPTICA | 2d | 2024-03-19 | 2024-03-20 | M2221SE000413 SS, M2221SE000415 | 20d | 11d | Andina 1 turno N3500 | Instrumentacion [33 h] | 33 | IWP-2221-SE-300-0441 | CWA-2221-300 | PND | CWA-2221-300 - Nodo 3500 Frente 3 | PND | Sin Iniciar | PND | CWP-2221-SE-300 |
| M2221SB000416 |  | SISTEMA DETECCION AUTOMATICA DE INCENDIO | 6d | 2024-04-01 | 2024-04-06 | M2221SA000361, M2221SA000367, M2221SB000374, M2221SB000376, M2221SD000378, M2221SB000385, M2221SA000360, M2221SB000366, M2221SB000373, M2221SA000375, M2221SD000377, M2221SE000384, M2221SE000412, M2221SE000415, M2221RDD00414 | 9d | 0d | Andina 1 turno N3500 | Instrumentacion [750 h] | 750 | IWP-2221-SA-720-0428 | CWA-2221-700 | PND | CWA-2221-700 - Infraestructura general | PND | Sin Iniciar | PND | CWP-2221-SA-720 |
| M2221SA000410 |  | INSTRUMENTOS | 4d | 2024-04-07 | 2024-04-10 | M2221RDD00414, M2221SB000416 | 9d |  | Andina 1 turno N3500 | Instrumentacion [366 h] | 366 | IWP-2221-SA-720-0426 | CWA-2221-700 | PND | CWA-2221-700 - Infraestructura general | PND | Sin Iniciar | PND | CWP-2221-SA-720 |

| ID | WBS | Activity | Duration | Start | Finish | Predecessors | Total float | Free float | Calendar | Resources | Cost | IWP-BIM | CWA | DISCIPLINA | CWA Descripción | Criticidad FF | Estado Actividad | Criticidad TF | cwp |
| --- | --- | --- | --- | --- | --- | --- | --- | --- | --- | --- | --- | --- | --- | --- | --- | --- | --- | --- | --- |
|  | 4 | **INFRAESTRUCTURA GENERAL** |  | 2023-04-28 | 2024-03-22 |  |  |  |  |  |  |  |  |  |  |  |  |  |  |
|  | 1 | **OBRAS CIVILES** |  | 2023-12-21 | 2024-02-19 |  |  |  |  |  |  |  |  |  |  |  |  |  |  |
|  | 1 | **Rampa** |  | 2024-01-21 | 2024-02-19 |  |  |  |  |  |  |  |  |  |  |  |  |  |  |
| M2221BAE00418 |  | Señalética Frente 3 | 20d | 2024-01-21 | 2024-02-09 | M2221ECD00445 SS, M2221PAA00452 SS | 60d | 0d | Andina 1 turno N3500 | Obras Civiles [394 h] | 394 | IWP-2221-BA-700-0020 | CWA-2221-700 | PND | CWA-2221-700 - Infraestructura general | PND | Sin Iniciar | PND | CWP-2221-BA-700 |
| M2221BAE00417 |  | Señalética Frente 2 | 10d | 2024-02-10 | 2024-02-19 | M2221ECD00429 SS+10d, M2221BAE00418, M2221PAA00436 SS+10d | 94d |  |  | Obras Civiles [102 h] | 102 | IWP-2221-BA-700-0019 | CWA-2221-700 | PND | CWA-2221-700 - Infraestructura general | PND | Sin Iniciar | PND | CWP-2221-BA-700 |
| M2221BAE00419 |  | Señalética Frente 1 | 10d | 2024-02-10 | 2024-02-19 | M2221BAE00418 | 60d |  |  | Obras Civiles [44 h] | 44 | IWP-2221-BA-700-0021 | CWA-2221-700 | PND | CWA-2221-700 - Infraestructura general | PND | Sin Iniciar | PND | CWP-2221-BA-700 |
|  | 2 | **Planos Varios** |  | 2023-12-21 | 2024-01-30 |  |  |  |  |  |  |  |  |  |  |  |  |  |  |
| M2221CCA00420 |  | Obras Civiles Planos Vario | 20d | 2023-12-21 | 2024-01-10 | M2221CCA00322 | 140d | 0d | Andina 1 turno N3500 | Obras Civiles [3360 h]; CARPETA RODADO [30 h] | 3,360 | IWP-1200-CA-620-0005 | CWA-1200-600 | PND | CWA-1200-600 - Obras de superficie | PND | Sin Iniciar | PND | CWP-1200-CA-620 |
| M2221CCA00420-1 |  | Fundaciones locales Plataforma Nodo 3500 | 20d | 2024-01-11 | 2024-01-30 | M2221CCA00420 | 140d | 0d | Andina 1 turno N3500 | Obras Civiles; HORMIGONES [113 h] |  | IWP-1200-CA-620-0006 | CWA-1200-600 | PND | CWA-1200-600 - Obras de superficie | PND | Sin Iniciar | PND | CWP-1200-CA-620 |
|  | 2 | **PIPING** |  | 2023-04-28 | 2024-03-22 |  |  |  |  |  |  |  |  |  |  |  |  |  |  |
|  | 1 | **Rampa** |  | 2023-04-28 | 2024-03-22 |  |  |  |  |  |  |  |  |  |  |  |  |  |  |
|  | 3 | **Piping Frente 2 Km 400 al 700** |  | 2023-05-24 | 2023-07-07 |  |  |  |  |  |  |  |  |  |  |  |  |  |  |
| M2221ECD00428 |  | EXTINTORES | 30d | 2023-05-24 | 2023-07-07 | M2221PD000427 SS | 187d | 20d |  | Cañeria [191 h] | 191 | IWP-2221-PD-720-0262 | CWA-2221-700 | PND | CWA-2221-700 - Infraestructura general | PND | Sin Iniciar | PND | CWP-2221-PD-720 |
| M2221PAA00421 |  | RED CAÑERIA SISTEMA PROTECCIÓN CONTRA INCENDIO RAMPA | 30d | 2023-05-24 | 2023-07-07 | M2221RBB00200 SS+10d, M2221RBB00201 SS+10d, M2221QC000203 SS+10d | 167d | 0d |  | Cañeria [1572 h]; CAÑERIA [341 h] | 1,572 | IWP-2221-PA-710-0220 | CWA-2221-700 | PND | CWA-2221-700 - Infraestructura general | PND | Sin Iniciar | PND | CWP-2221-PA-710 |
| M2221PD000422 |  | CINTA CALEFACTORA ACCESO NODO 3500 | 30d | 2023-05-24 | 2023-07-07 | M2221PAA00421 SS | 187d | 0d |  | Cañeria [62 h] | 62 | IWP-2221-PA-730-0232 | CWA-2221-700 | PND | CWA-2221-700 - Infraestructura general | PND | Sin Iniciar | PND | CWP-2221-PA-730 |
| M2221PD000425 |  | GABINETE DE MANGUERA | 30d | 2023-05-24 | 2023-07-07 | M2221PE000424 SS | 187d | 0d |  | Cañeria [489 h] | 489 | IWP-2221-PD-720-0268 | CWA-2221-700 | PND | CWA-2221-700 - Infraestructura general | PND | Sin Iniciar | PND | CWP-2221-PD-720 |
| M2221PD000427 |  | SOPORTES | 30d | 2023-05-24 | 2023-07-07 | M2221PE000426 SS | 187d | 0d |  | Cañeria [1474 h] | 1,474 | IWP-2221-PD-700-0253 | CWA-2221-700 | PND | CWA-2221-700 - Infraestructura general | PND | Sin Iniciar | PND | CWP-2221-PD-700 |
| M2221PE000423 |  | VALVULA INGRESO PORTAL NODO | 30d | 2023-05-24 | 2023-07-07 | M2221PD000422 SS | 187d | 0d |  | Cañeria [4 h] | 4 | IWP-2221-PA-740-0238 | CWA-2221-700 | PND | CWA-2221-700 - Infraestructura general | PND | Sin Iniciar | PND | CWP-2221-PA-740 |
| M2221PE000424 |  | VALVULAS ESTACIONES REDUCTORA DE PRESION | 30d | 2023-05-24 | 2023-07-07 | M2221PE000423 SS | 187d | 0d |  | Cañeria [156 h] | 156 | IWP-2221-PA-740-0239 | CWA-2221-700 | PND | CWA-2221-700 - Infraestructura general | PND | Sin Iniciar | PND | CWP-2221-PA-740 |
| M2221PE000426 |  | VALVULAS AGUAS ARRIBA GABINETE DE MANGUERA | 30d | 2023-05-24 | 2023-07-07 | M2221PD000425 SS | 187d | 0d |  | Cañeria [143 h] | 143 | IWP-2221-PA-720-0226 | CWA-2221-700 | PND | CWA-2221-700 - Infraestructura general | PND | Sin Iniciar | PND | CWP-2221-PA-720 |
|  | 1 | **Piping Frente 2 km 1960 al 700** |  | 2023-04-28 | 2023-08-03 |  |  |  |  |  |  |  |  |  |  |  |  |  |  |
| M2221ECD00429 |  | EXTINTORES | 75d | 2023-04-28 | 2023-08-03 | M2221PD000435 SS | 338d | 244d |  | Cañeria [800 h] | 800 | IWP-2221-PD-720-0263 | CWA-2221-700 | PND | CWA-2221-700 - Infraestructura general | PND | Sin Iniciar | PND | CWP-2221-PD-720 |
| M2221PAA00436 |  | RED CAÑERIA SISTEMA PROTECCIÓN CONTRA INCENDIO RAMPA | 75d | 2023-04-28 | 2023-08-03 | M2221PAA00421 FF+20d, M2221ECD00428 FF | 167d | 0d |  | Cañeria [7024 h]; CAÑERIA [856 h] | 7,024 | IWP-2221-PA-710-0221 | CWA-2221-700 | PND | CWA-2221-700 - Infraestructura general | PND | Sin Iniciar | PND | CWP-2221-PA-710 |
| M2221PD000430 |  | CINTA CALEFACTORA ACCESO NODO 3500 | 75d | 2023-04-28 | 2023-08-03 | M2221PAA00436 SS | 338d | 0d |  | Cañeria [262 h] | 262 | IWP-2221-PA-740-0237 | CWA-2221-700 | PND | CWA-2221-700 - Infraestructura general | PND | Sin Iniciar | PND | CWP-2221-PA-740 |
| M2221PD000433 |  | GABINETE DE MANGUERA | 75d | 2023-04-28 | 2023-08-03 | M2221PE000432 SS | 338d | 0d |  | Cañeria [2056 h] | 2,056 | IWP-2221-PD-720-0269 | CWA-2221-700 | PND | CWA-2221-700 - Infraestructura general | PND | Sin Iniciar | PND | CWP-2221-PD-720 |
| M2221PD000435 |  | SOPORTES | 75d | 2023-04-28 | 2023-08-03 | M2221PE000434 SS | 338d | 0d |  | Cañeria [6191 h] | 6,191 | IWP-2221-PD-700-0254 | CWA-2221-700 | PND | CWA-2221-700 - Infraestructura general | PND | Sin Iniciar | PND | CWP-2221-PD-700 |
| M2221PE000431 |  | VALVULA INGRESO PORTAL NODO | 75d | 2023-04-28 | 2023-08-03 | M2221PD000430 SS | 338d | 0d |  | Cañeria [17 h] | 17 | IWP-2221-PA-720-0227 | CWA-2221-700 | PND | CWA-2221-700 - Infraestructura general | PND | Sin Iniciar | PND | CWP-2221-PA-720 |
| M2221PE000432 |  | VALVULAS ESTACIONES REDUCTORA DE PRESION | 75d | 2023-04-28 | 2023-08-03 | M2221PE000431 SS | 338d | 0d |  | Cañeria [146 h] | 146 | IWP-2221-PA-740-0240 | CWA-2221-700 | PND | CWA-2221-700 - Infraestructura general | PND | Sin Iniciar | PND | CWP-2221-PA-740 |
| M2221PE000434 |  | VALVULAS AGUAS ARRIBA GABINETE DE MANGUERA | 75d | 2023-04-28 | 2023-08-03 | M2221PD000433 SS | 338d | 0d |  | Cañeria [224 h] | 224 | IWP-2221-PA-720-0228 | CWA-2221-700 | PND | CWA-2221-700 - Infraestructura general | PND | Sin Iniciar | PND | CWP-2221-PA-720 |

| ID | WBS | Activity | Duration | Start | Finish | Predecessors | Total float | Free float | Calendar | Resources | Cost | IWP-BIM | CWA | DISCIPLINA | CWA Descripción | Criticidad FF | Estado Actividad | Criticidad TF | cwp |
| --- | --- | --- | --- | --- | --- | --- | --- | --- | --- | --- | --- | --- | --- | --- | --- | --- | --- | --- | --- |
|  | 9 | **Piping Frente 3 km 3060 al 2800** |  | 2023-08-04 | 2024-01-20 |  |  |  |  |  |  |  |  |  |  |  |  |  |  |
| M2221ECD00437 |  | EXTINTORES | 20d | 2023-08-04 | 2023-09-02 | M2221PAA00436 | 165d | 137d | Andina 1 turno N3500 | Cañeria [165 h] | 165 | IWP-2221-PD-720-0264 | CWA-2221-700 | PND | CWA-2221-700 - Infraestructura general | PND | Sin Iniciar | PND | CWP-2221-PD-720 |
| M2221PAA00444 |  | RED CAÑERIA SISTEMA PROTECCIÓN CONTRA INCENDIO RAMPA | 20d | 2023-12-31 | 2024-01-20 | M2221RBB00344 SS, M2221RBB00345 SS, M2221PAA00436 | 28d | 0d | Andina 1 turno N3500 | Cañeria [1449 h]; CAÑERIA [240 h] | 1,449 | IWP-2221-PA-710-0222 | CWA-2221-700 | PND | CWA-2221-700 - Infraestructura general | PND | Sin Iniciar | PND | CWP-2221-PA-710 |
| M2221PD000438 |  | CINTA CALEFACTORA ACCESO NODO 3500 | 20d | 2023-12-31 | 2024-01-20 | M2221PAA00444 SS | 28d | 0d | Andina 1 turno N3500 | Cañeria [54 h] | 54 | IWP-2221-PA-730-0233 | CWA-2221-700 | PND | CWA-2221-700 - Infraestructura general | PND | Sin Iniciar | PND | CWP-2221-PA-730 |
| M2221PD000441 |  | GABINETE DE MANGUERA | 20d | 2023-12-31 | 2024-01-20 | M2221PE000440 SS | 28d | 0d | Andina 1 turno N3500 | Cañeria [424 h] | 424 | IWP-2221-PD-720-0270 | CWA-2221-700 | PND | CWA-2221-700 - Infraestructura general | PND | Sin Iniciar | PND | CWP-2221-PD-720 |
| M2221PD000443 |  | SOPORTES | 20d | 2023-12-31 | 2024-01-20 | M2221PE000442 SS | 28d | 0d | Andina 1 turno N3500 | Cañeria [1278 h] | 1,278 | IWP-2221-PD-700-0255 | CWA-2221-700 | PND | CWA-2221-700 - Infraestructura general | PND | Sin Iniciar | PND | CWP-2221-PD-700 |
| M2221PE000439 |  | VALVULA INGRESO PORTAL NODO | 20d | 2023-12-31 | 2024-01-20 | M2221PD000438 SS | 28d | 0d | Andina 1 turno N3500 | Cañeria [4 h] | 4 | IWP-2221-PA-740-0241 | CWA-2221-700 | PND | CWA-2221-700 - Infraestructura general | PND | Sin Iniciar | PND | CWP-2221-PA-740 |
| M2221PE000440 |  | VALVULAS ESTACIONES REDUCTORA DE PRESION | 20d | 2023-12-31 | 2024-01-20 | M2221PE000439 SS | 28d | 0d | Andina 1 turno N3500 | Cañeria [236 h] | 236 | IWP-2221-PA-740-0242 | CWA-2221-700 | PND | CWA-2221-700 - Infraestructura general | PND | Sin Iniciar | PND | CWP-2221-PA-740 |
| M2221PE000442 |  | VALVULAS AGUAS ARRIBA GABINETE DE MANGUERA | 20d | 2023-12-31 | 2024-01-20 | M2221PD000441 SS | 28d | 0d | Andina 1 turno N3500 | Cañeria [224 h] | 224 | IWP-2221-PA-720-0229 | CWA-2221-700 | PND | CWA-2221-700 - Infraestructura general | PND | Sin Iniciar | PND | CWP-2221-PA-720 |
|  | 4 | **Piping Frente 3 km 1960 al 2800** |  | 2024-01-21 | 2024-03-22 |  |  |  |  |  |  |  |  |  |  |  |  |  |  |
| M2221ECD00445 |  | EXTINTORES | 62d | 2024-01-21 | 2024-03-22 | M2221PD000451 SS, M2221PD000443 | 28d | 0d | Andina 1 turno N3500 | Cañeria [534 h] | 534 | IWP-2221-PD-720-0265 | CWA-2221-700 | PND | CWA-2221-700 - Infraestructura general | PND | Sin Iniciar | PND | CWP-2221-PD-720 |
| M2221PAA00452 |  | RED CAÑERIA SISTEMA PROTECCIÓN CONTRA INCENDIO RAMPA | 62d | 2024-01-21 | 2024-03-22 | M2221PAD00469 FS+2d, M2221ECD00437, M2221PAA00444 | 28d | 0d | Andina 1 turno N3500 | Cañeria [4683 h]; CAÑERIA [866 h] | 4,683 | IWP-2221-PA-710-0223 | CWA-2221-700 | PND | CWA-2221-700 - Infraestructura general | PND | Sin Iniciar | PND | CWP-2221-PA-710 |
| M2221PD000446 |  | CINTA CALEFACTORA ACCESO NODO 3500 | 62d | 2024-01-21 | 2024-03-22 | M2221PAA00452 SS | 28d | 0d | Andina 1 turno N3500 | Cañeria [175 h] | 175 | IWP-2221-PA-730-0234 | CWA-2221-700 | PND | CWA-2221-700 - Infraestructura general | PND | Sin Iniciar | PND | CWP-2221-PA-730 |
| M2221PD000449 |  | GABINETE DE MANGUERA | 62d | 2024-01-21 | 2024-03-22 | M2221PE000448 SS | 28d | 0d | Andina 1 turno N3500 | Cañeria [1370 h] | 1,370 | IWP-2221-PD-720-0271 | CWA-2221-700 | PND | CWA-2221-700 - Infraestructura general | PND | Sin Iniciar | PND | CWP-2221-PD-720 |
| M2221PD000451 |  | SOPORTES | 62d | 2024-01-21 | 2024-03-22 | M2221PE000450 SS | 28d | 0d | Andina 1 turno N3500 | Cañeria [4128 h] | 4,128 | IWP-2221-PD-700-0256 | CWA-2221-700 | PND | CWA-2221-700 - Infraestructura general | PND | Sin Iniciar | PND | CWP-2221-PD-700 |
| M2221PE000447 |  | VALVULA INGRESO PORTAL NODO | 62d | 2024-01-21 | 2024-03-22 | M2221PD000446 SS | 28d | 0d | Andina 1 turno N3500 | Cañeria [12 h] | 12 | IWP-2221-PA-740-0243 | CWA-2221-700 | PND | CWA-2221-700 - Infraestructura general | PND | Sin Iniciar | PND | CWP-2221-PA-740 |
| M2221PE000448 |  | VALVULAS ESTACIONES REDUCTORA DE PRESION | 62d | 2024-01-21 | 2024-03-22 | M2221PE000447 SS | 28d | 0d | Andina 1 turno N3500 | Cañeria [224 h] | 224 | IWP-2221-PA-740-0244 | CWA-2221-700 | PND | CWA-2221-700 - Infraestructura general | PND | Sin Iniciar | PND | CWP-2221-PA-740 |
| M2221PE000450 |  | VALVULAS AGUAS ARRIBA GABINETE DE MANGUERA | 62d | 2024-01-21 | 2024-03-22 | M2221PD000449 SS | 28d | 0d | Andina 1 turno N3500 | Cañeria [224 h] | 224 | IWP-2221-PA-720-0230 | CWA-2221-700 | PND | CWA-2221-700 - Infraestructura general | PND | Sin Iniciar | PND | CWP-2221-PA-720 |
|  | 5 | **Piping Frente 1** |  | 2023-09-26 | 2023-11-09 |  |  |  |  |  |  |  |  |  |  |  |  |  |  |
| M2221ECD00460 |  | EXTINTORES | 45d | 2023-09-26 | 2023-11-09 | M2221PE000459 SS | 9d | 0d |  | Cañeria [254 h] | 254 | IWP-2221-PD-720-0266 | CWA-2221-700 | PND | CWA-2221-700 - Infraestructura general | PND | Sin Iniciar | PND | CWP-2221-PD-720 |
| M2221PAA00453 |  | RED CAÑERIA SISTEMA PROTECCIÓN CONTRA INCENDIO RAMPA | 45d | 2023-09-26 | 2023-11-09 | M2221QF000102 | 9d | 0d |  | Cañeria [2230 h]; CAÑERIA [525 h] | 2,230 | IWP-2221-PA-710-0224 | CWA-2221-700 | PND | CWA-2221-700 - Infraestructura general | PND | Sin Iniciar | PND | CWP-2221-PA-710 |
| M2221PD000454 |  | CINTA CALEFACTORA ACCESO NODO 3500 | 45d | 2023-09-26 | 2023-11-09 | M2221PAA00453 SS | 9d | 0d |  | Cañeria [83 h] | 83 | IWP-2221-PA-730-0235 | CWA-2221-700 | PND | CWA-2221-700 - Infraestructura general | PND | Sin Iniciar | PND | CWP-2221-PA-730 |
| M2221PD000457 |  | GABINETE DE MANGUERA | 45d | 2023-09-26 | 2023-11-09 | M2221PE000456 SS | 9d | 0d |  | Cañeria [653 h] | 653 | IWP-2221-PD-720-0272 | CWA-2221-700 | PND | CWA-2221-700 - Infraestructura general | PND | Sin Iniciar | PND | CWP-2221-PD-720 |
| M2221PE000455 |  | VALVULA INGRESO PORTAL NODO | 45d | 2023-09-26 | 2023-11-09 | M2221PD000454 SS | 9d | 0d |  | Cañeria [5 h] | 5 | IWP-2221-PA-740-0245 | CWA-2221-700 | PND | CWA-2221-700 - Infraestructura general | PND | Sin Iniciar | PND | CWP-2221-PA-740 |
| M2221PE000456 |  | VALVULAS ESTACIONES REDUCTORA DE PRESION | 45d | 2023-09-26 | 2023-11-09 | M2221PE000455 SS | 9d | 0d |  | Cañeria [124 h] | 124 | IWP-2221-PA-740-0246 | CWA-2221-700 | PND | CWA-2221-700 - Infraestructura general | PND | Sin Iniciar | PND | CWP-2221-PA-740 |
| M2221PE000458 |  | VALVULAS AGUAS ARRIBA GABINETE DE MANGUERA | 45d | 2023-09-26 | 2023-11-09 | M2221PD000457 SS | 9d | 0d |  | Cañeria [124 h] | 124 | IWP-2221-PA-720-0231 | CWA-2221-700 | PND | CWA-2221-700 - Infraestructura general | PND | Sin Iniciar | PND | CWP-2221-PA-720 |
| M2221PE000459 |  | SOPORTES | 45d | 2023-09-26 | 2023-11-09 | M2221PE000458 SS | 9d | 0d |  | Cañeria [1965 h] | 1,965 | IWP-2221-PD-700-0257 | CWA-2221-700 | PND | CWA-2221-700 - Infraestructura general | PND | Sin Iniciar | PND | CWP-2221-PD-700 |

| ID | WBS | Activity | Duration | Start | Finish | Predecessors | Complete | Remaining | Planned start | Planned finish | Total float | Free float | Calendar | Resources | Cost | Actual cost | IWP-BIM | CWA | DISCIPLINA | CWA Descripción | Criticidad FF | Estado Actividad | Criticidad TF | cwp |
| --- | --- | --- | --- | --- | --- | --- | --- | --- | --- | --- | --- | --- | --- | --- | --- | --- | --- | --- | --- | --- | --- | --- | --- | --- |
|  | 6 | **Piping Sistema Ventilación** |  | 2023-11-10 | 2023-12-09 |  |  |  |  |  |  |  |  |  |  |  |  |  |  |  |  |  |  |  |
| M2221ECD00468 |  | EXTINTORES | 30d | 2023-11-10 | 2023-12-09 | M2221PE000467 SS |  |  |  |  | 9d | 0d |  | Cañeria [180 h] | 180 |  | IWP-2221-PD-720-0267 | CWA-2221-700 | PND | CWA-2221-700 - Infraestructura general | PND | Sin Iniciar | PND | CWP-2221-PD-720 |
| M2221PAA00461 |  | RED CAÑERIA SISTEMA PROTECCIÓN CONTRA INCENDIO RAMPA | 30d | 2023-11-10 | 2023-12-09 | M2221PAA00453, M2221ECD00460 |  |  |  |  | 9d | 0d |  | Cañeria [180 h]; CAÑERIA [380 h] | 180 |  | IWP-2221-PA-710-0225 | CWA-2221-700 | PND | CWA-2221-700 - Infraestructura general | PND | Sin Iniciar | PND | CWP-2221-PA-710 |
| M2221PD000462 |  | CINTA CALEFACTORA ACCESO NODO 3500 | 30d | 2023-11-10 | 2023-12-09 | M2221PAA00461 SS |  |  |  |  | 9d | 0d |  | Cañeria [180 h] | 180 |  | IWP-2221-PA-730-0236 | CWA-2221-700 | PND | CWA-2221-700 - Infraestructura general | PND | Sin Iniciar | PND | CWP-2221-PA-730 |
| M2221PD000465 |  | GABINETE DE MANGUERA | 30d | 2023-11-10 | 2023-12-09 | M2221PE000464 SS |  |  |  |  | 9d | 0d |  | Cañeria [180 h] | 180 |  | IWP-2221-PD-720-0273 | CWA-2221-700 | PND | CWA-2221-700 - Infraestructura general | PND | Sin Iniciar | PND | CWP-2221-PD-720 |
| M2221PE000463 |  | VALVULA INGRESO PORTAL NODO | 30d | 2023-11-10 | 2023-12-09 | M2221PD000462 SS |  |  |  |  | 9d | 0d |  | Cañeria [124 h] | 124 |  | IWP-2221-PA-740-0247 | CWA-2221-700 | PND | CWA-2221-700 - Infraestructura general | PND | Sin Iniciar | PND | CWP-2221-PA-740 |
| M2221PE000464 |  | VALVULAS ESTACIONES REDUCTORA DE PRESION | 30d | 2023-11-10 | 2023-12-09 | M2221PE000463 SS |  |  |  |  | 9d | 0d |  | Cañeria [124 h] | 124 |  | IWP-2221-PA-740-0248 | CWA-2221-700 | PND | CWA-2221-700 - Infraestructura general | PND | Sin Iniciar | PND | CWP-2221-PA-740 |
| M2221PE000466 |  | VALVULAS AGUAS ARRIBA GABINETE DE MANGUERA | 30d | 2023-11-10 | 2023-12-09 | M2221PD000465 SS |  |  |  |  | 9d | 0d |  | Cañeria [181 h] | 181 |  | IWP-2221-PA-740-0249 | CWA-2221-700 | PND | CWA-2221-700 - Infraestructura general | PND | Sin Iniciar | PND | CWP-2221-PA-740 |
| M2221PE000467 |  | SOPORTES | 30d | 2023-11-10 | 2023-12-09 | M2221PE000466 SS |  |  |  |  | 9d | 0d |  | Cañeria [180 h] | 180 |  | IWP-2221-PD-700-0258 | CWA-2221-700 | PND | CWA-2221-700 - Infraestructura general | PND | Sin Iniciar | PND | CWP-2221-PD-700 |
|  | 2 | **Camino Acceso Portal Nodo 3500** |  | 2024-01-08 | 2024-01-14 |  |  |  |  |  |  |  |  |  |  |  |  |  |  |  |  |  |  |  |
| M2221PAD00469 |  | Piping Atravieso de camino incluida válvula y camisa | 7d | 2024-01-08 | 2024-01-14 | M2221ECD00437 SS+7d, M2221PAA00444 SS+7d, H222100011 |  |  |  |  | 32d | 4d | Andina 1 turno N3500 | Cañeria [613 h]; CAÑERIA [107 h] | 613 |  | IWP-1200-PA-620-0011 | CWA-1200-600 | PND | CWA-1200-600 - Obras de superficie | PND | Sin Iniciar | PND | CWP-1200-PA-620 |
|  | 3 | **ELECTRICIDAD** |  | 2024-01-31 | 2024-02-19 |  |  |  |  |  |  |  |  |  |  |  |  |  |  |  |  |  |  |  |
|  | 1 | **General** |  | 2024-01-31 | 2024-02-19 |  |  |  |  |  |  |  |  |  |  |  |  |  |  |  |  |  |  |  |
| M2221MAB00470 |  | Mallas a Tierra, incluidas 4 cámaras de inspección | 20d | 2024-01-31 | 2024-02-19 | M2221CCA00420, M2221CCA00420-1 |  |  |  |  | 139d |  |  | Electricidad [569 h] | 569 |  | IWP-1200-RA-630-0012 | CWA-1200-600 | PND | CWA-1200-600 - Obras de superficie | PND | Sin Iniciar | PND | CWP-1200-RA-630 |
|  | 5 | **SISTEMA DE VENTILACIÓN** |  | 2022-05-19 | 2023-10-16 |  |  |  |  |  |  |  |  |  |  |  |  |  |  |  |  |  |  |  |
|  | 1 | **MINERÍA** |  | 2022-05-19 | 2023-05-19 |  |  |  |  |  |  |  |  |  |  |  |  |  |  |  |  |  |  |  |
|  | 1 | **Desarrollos Horizontales** |  | 2022-07-08 | 2023-04-02 |  |  |  |  |  |  |  |  |  |  |  |  |  |  |  |  |  |  |  |
| M2241MAB00472 |  | Run Around 6.20m x 5.35 m - Fortificación Tipo II PM (Tramo I) (Pk 143 a Pk 52) | 20d | 2022-07-08 A | 2022-09-08 A | M2241MAB00471, M2241MAB00471-2 | 100% |  | 2022-12-25 | 2023-01-15 |  |  | Andina 2 turnos | Mineria [6651 h]; DESARROLLO HORIZONTALES [64 h] | 6,651 | 6,651 | IWP-2241-MA-400-0463 | CWA-2241-400 | Mineria | CWA-2241-400 - Sistema de Ventilacion | PND | Completado | PND | CWP-2241-MA-400 |
| M2241MAB00471 |  | Galería Inyeccion Tramo I 6.20m x 5.35 m - Fortificación Tipo II PM (Tramo I) (Pk 0 a Pk 23) | 8d | 2022-08-08 A | 2023-04-02 | M2241MAB00476, M2241MAB00477 SS+50d, M2241MAB00471-2 | 100% | 1.8d | 2022-12-15 | 2022-12-23 | 450.77d | 0d | Andina 2 turnos | Mineria [2390 h]; DESARROLLO HORIZONTALES [23 h] | 2,390 | 2,151 | IWP-2241-MA-400-0462 | CWA-2241-400 | Mineria | CWA-2241-400 - Sistema de Ventilacion | PND | Sin Iniciar | PND | CWP-2241-MA-400 |
| M2241MAB00473 |  | Run Around 6.20m x 5.35 m - Fortificación Tipo III PMS (Tramo II) (Pk 52 a Pk 63) | 4d | 2022-09-08 A | 2022-12-13 A | M2241MAB00472 | 100% |  | 2023-01-15 | 2023-01-19 |  |  | Andina 2 turnos | Mineria [709 h]; DESARROLLO HORIZONTALES [5 h] | 709 | 709 | IWP-2241-MA-400-0464 | CWA-2241-400 | Mineria | CWA-2241-400 - Sistema de Ventilacion | PND | Completado | PND | CWP-2241-MA-400 |
| M2241MAB00475 |  | Galería Inspección 4.20m x 4.10 m - Fortificación Tipo II PM (Tramo I) (Pk 41 ) | 5d | 2022-09-14 A | 2022-09-26 A | M2241MAB00474 | 100% |  | 2023-01-23 | 2023-01-28 |  |  | Andina 2 turnos | Mineria [1059 h]; DESARROLLO HORIZONTALES [16 h] | 1,059 | 1,059 | IWP-2241-MA-400-0466 | CWA-2241-400 | Mineria | CWA-2241-400 - Sistema de Ventilacion | PND | Completado | PND | CWP-2241-MA-400 |
| M2241MAB00474 |  | Run Around 6.20m x 5.35 m - Fortificación Tipo III PMS (Tramo III) (Pk 63 a Pk 74) | 4d | 2022-09-22 A | 2022-10-05 A | M2241MAB00473 | 100% |  | 2023-01-19 | 2023-01-23 |  |  | Andina 2 turnos | Mineria [709 h]; DESARROLLO HORIZONTALES [5 h] | 709 | 709 | IWP-2241-MA-400-0465 | CWA-2241-400 | Mineria | CWA-2241-400 - Sistema de Ventilacion | PND | Completado | PND | CWP-2241-MA-400 |
| M2241MAB00471-2 |  | Sala Ventilador Tramo II 7,70m x 7,35 m - Fortificación Tipo III PMS (Tramo II) (Pk 23 a Pk 60) | 26d | 2022-10-24 A | 2023-04-01 | M2241MAB481 | 90% | 15d | 2022-12-23 | 2023-01-19 | 5.27d | 0d | Andina 2 turnos | Mineria [8553 h]; DESARROLLO HORIZONTALES [37 h] | 8,553 | 4,322 | IWP-2241-MA-400-0470 | CWA-2241-400 | Mineria | CWA-2241-400 - Sistema de Ventilacion | PND | Sin Iniciar | PND | CWP-2241-MA-400 |
| M2241MAB00476 |  | Tramo III Galería de Inyección (Pk 60 a Pk 75) | 7d | 2022-12-16 A | 2023-01-07 A |  | 100% |  | 2023-01-22 | 2023-01-29 |  |  | Andina 2 turnos | Mineria [1559 h]; DESARROLLO HORIZONTALES [15 h] | 1,559 | 1,559 | IWP-2241-MA-400-0467 | CWA-2241-400 | Mineria | CWA-2241-400 - Sistema de Ventilacion | PND | Completado | PND | CWP-2241-MA-400 |
| M2241MAB00477 |  | Tramo IV Galería de Inyección (Pk 75 a Pk 210 ) | 43d | 2022-12-26 A | 2023-02-23 | M2241MAB00476 SS |  | 17d | 2023-01-03 | 2023-02-15 | 5.27d | 0d | Andina 2 turnos | Mineria [11517 h]; DESARROLLO HORIZONTALES [135 h] | 11,517 | 8,616 | IWP-2241-MA-400-0468 | CWA-2241-400 | Mineria | CWA-2241-400 - Sistema de Ventilacion | PND | Completado | PND | CWP-2241-MA-400 |
| M2241MAB481 |  | Tramo V Galería de Inyección (Pk 210 a Pk 260) | 17d | 2023-02-28 | 2023-03-17 | M2241MAB00477, M2241MAB00480 |  |  |  |  | 5.27d | 0d | Andina 2 turnos | Mineria [5142 h]; DESARROLLO HORIZONTALES [50 h] | 5,142 |  | IWP-2241-MA-400-0469 | CWA-2241-400 | Mineria | CWA-2241-400 - Sistema de Ventilacion | PND | Sin Iniciar | PND | CWP-2241-MA-400 |

| ID | WBS | Activity | Duration | Start | Finish | Predecessors | Complete | Remaining | Planned start | Planned finish | Total float | Free float | Calendar | Resources | Cost | Actual cost | IWP-BIM | CWA | DISCIPLINA | CWA Descripción | Criticidad FF | Estado Actividad | Criticidad TF | cwp |
| --- | --- | --- | --- | --- | --- | --- | --- | --- | --- | --- | --- | --- | --- | --- | --- | --- | --- | --- | --- | --- | --- | --- | --- | --- |
|  | 2 | **Frontones** |  | 2022-05-19 | 2023-04-11 |  |  |  |  |  |  |  |  |  |  |  |  |  |  |  |  |  |  |  |
| M2241MAB00478 |  | Frontón Extracción 4.20*4.10 m, L= 9 m (Pk Acceso a Barrio Civico) | 10d | 2022-05-19 A | 2023-04-04 | M2241MAB00471-2 | 56% | 3d | 2022-12-04 | 2022-12-14 | 64.27d | 0d | Andina 2 turnos | Mineria [617 h]; DESARROLLO HORIZONTALES [9 h] | 617 | 343 | IWP-2241-MD-410-0475 | CWA-2241-400 | Mineria | CWA-2241-400 - Sistema de Ventilacion | PND | Sin Iniciar | PND | CWP-2241-MD-410 |
| M2241MAB00480 |  | Frontón Extracción Emergencia Inferior 4.20*4.10 m, L=9 m (PK 205 hacia Este) | 5d | 2023-02-23 | 2023-02-28 | M2241MAB00477 |  |  |  |  | 5.27d | 0d | Andina 2 turnos | Mineria [617 h]; DESARROLLO HORIZONTALES [9 h] | 617 |  | IWP-2241-MD-420-0477 | CWA-2241-400 | Mineria | CWA-2241-400 - Sistema de Ventilacion | PND | Completado | PND | CWP-2241-MD-420 |
| M2241MAB00479 |  | Frontón Extracción SN16 4,20 * 4,10 m, L= 3m (Acceso a Barrio Civico N17 a SN 16) | 2d | 2023-04-04 | 2023-04-06 | M2241MAB00478, M2221MAB00046 SS+30d |  |  |  |  | 86.27d | 0d | Andina 2 turnos | Mineria [220 h]; DESARROLLO HORIZONTALES [3 h] | 220 |  | IWP-2241-MD-410-0476 | CWA-2241-400 | Mineria | CWA-2241-400 - Sistema de Ventilacion | PND | Sin Iniciar | PND | CWP-2241-MD-410 |
| M2241MAB00481 |  | Frontón Extracción Emergencia Superior 4.20*4.10 m, L=12 m | 5d | 2023-04-06 | 2023-04-11 | M2241MAB00480, M2241MAB00479 |  |  |  |  | 86.27d | 0d | Andina 2 turnos | Mineria [830 h]; DESARROLLO HORIZONTALES [12 h] | 830 |  | IWP-2241-MD-420-0478 | CWA-2241-400 | Mineria | CWA-2241-400 - Sistema de Ventilacion | PND | Sin Iniciar | PND | CWP-2241-MD-420 |
|  | 3 | **Desquinches** |  | 2022-08-10 | 2023-04-09 |  |  |  |  |  |  |  |  |  |  |  |  |  |  |  |  |  |  |  |
| M2241MDB00482 |  | Curvas de Alta Run Around (Pk 65 conexion con Galeria Inyección) | 5d | 2022-08-10 A | 2023-04-06 | M2241MAB00471 SS, M2221MAB00043 |  | 5d | 2022-12-11 | 2022-12-16 | 450.77d | 0d | Andina 2 turnos | Mineria [1046 h] | 1,046 | 757 | IWP-2241-MD-400-0473 | CWA-2241-400 | Mineria | CWA-2241-400 - Sistema de Ventilacion | PND | Sin Iniciar | PND | CWP-2241-MD-400 |
| M2241MDB00483 |  | Puerta contra Incendio (Pk 237) | 3d | 2023-04-06 | 2023-04-09 | M2241MAB00476 SS+80d, M2241MDB00482 |  |  |  |  | 450.77d |  | Andina 2 turnos | Mineria [482 h] | 482 |  | IWP-2241-MD-400-0474 | CWA-2241-400 | Mineria | CWA-2241-400 - Sistema de Ventilacion | PND | Sin Iniciar | PND | CWP-2241-MD-400 |
|  | 4 | **Chimeneas** |  | 2023-04-04 | 2023-05-19 |  |  |  |  |  |  |  |  |  |  |  |  |  |  |  |  |  |  |  |
| M2241MDB00484 |  | Chimenea Extracción Construcción cuadrada 1.6 m, L= 14 m | 21d | 2023-04-04 | 2023-04-25 | M2241MAB00478 |  |  |  |  | 64.27d | 0.27d | Andina 2 turnos | Mineria [1140 h]; DESARROLLO VERTICALES [14 h] | 1,140 |  | IWP-2241-MB-410-0471 | CWA-2241-400 | Mineria | CWA-2241-400 - Sistema de Ventilacion | PND | Sin Iniciar | PND | CWP-2241-MB-410 |
| M2241MDB00485 |  | Ventilador Construcción Montaje electromecánico y puesta en servicio | 45d | 2023-04-04 | 2023-05-19 | M2241MDB00484 SS |  |  |  |  | 63d | 0d |  | Mineria |  |  | IWP-2241-LA-400-0461 | CWA-2241-400 | PND | CWA-2241-400 - Sistema de Ventilacion | PND | Sin Iniciar | PND | CWP-2241-LA-400 |
| M2241MDB00486 |  | Chimenea Extracción Emergencia cuadrada 2.7 m, L= 15 m | 20d | 2023-04-11 | 2023-05-01 | M2241MAB00481 |  |  |  |  | 86.27d | 23.27d | Andina 2 turnos | Mineria [1527 h]; DESARROLLO VERTICALES [15 h] | 1,527 |  | IWP-2241-MB-420-0472 | CWA-2241-400 | Mineria | CWA-2241-400 - Sistema de Ventilacion | PND | Sin Iniciar | PND | CWP-2241-MB-420 |
|  | 2 | **OBRAS CIVILES** |  | 2023-04-07 | 2023-07-27 |  |  |  |  |  |  |  |  |  |  |  |  |  |  |  |  |  |  |  |
|  | 1 | **Galería Inyección / Sala Ventilador** |  | 2023-04-07 | 2023-07-27 |  |  |  |  |  |  |  |  |  |  |  |  |  |  |  |  |  |  |  |
| M2241CAC00487 |  | Fundación Ventilador (incluye motor) | 40d | 2023-05-20 | 2023-07-20 | M2241MDB00486 SS+15d, M2241MDB00485, M2241REA00499 |  |  |  |  | 63d | 0d |  | Obras Civiles [1101 h]; HORMIGONES [17 h] | 1,101 |  | IWP-2241-CA-400-0444 | CWA-2241-400 | PND | CWA-2241-400 - Sistema de Ventilacion | PND | Sin Iniciar | PND | CWP-2241-CA-400 |
| M2241CAC00488 |  | Pavimento Ventilador | 7d | 2023-07-14 | 2023-07-23 | M2241CAC00487 FF+3d |  |  |  |  | 67d | 4d |  | Obras Civiles [2090 h]; CARPETA RODADO [995 h] | 2,090 |  | IWP-2241-CC-400-0451 | CWA-2241-400 | PND | CWA-2241-400 - Sistema de Ventilacion | PND | Sin Iniciar | PND | CWP-2241-CC-400 |
| M2241CAC00489 |  | Viga Monorriel | 7d | 2023-07-21 | 2023-07-27 | M2241CAC00487, M2241MAB00477, M2241MAB481 |  |  |  |  | 63d | 0d |  | Obras Civiles [585 h] | 585 |  | IWP-2241-DA-420-0453 | CWA-2241-400 | PND | CWA-2241-400 - Sistema de Ventilacion | PND | Sin Iniciar | PND | CWP-2241-DA-420 |
|  | 1 | **Obras Civiles Anexas (Puertas, tapados,muros, )** |  | 2023-04-07 | 2023-06-25 |  |  |  |  |  |  |  |  |  |  |  |  |  |  |  |  |  |  |  |
| M2241CAC00491 |  | MURETE SEGURIDAD EN CHIMENEAS | 60d | 2023-04-07 | 2023-06-05 | M2241CAC00492 SS |  |  |  |  | 136d | 52d | Andina Dìas Corridos | Obras Civiles [49 h]; HORMIGONES [1 h] | 49 |  | IWP-2241-CA-420-0446 | CWA-2241-400 | PND | CWA-2241-400 - Sistema de Ventilacion | PND | Sin Iniciar | PND | CWP-2241-CA-420 |
| M2241CAC00492 |  | MUROS DE INSPECCION (TAPADO T03), ACCESO PEATONAL, VENTILADOR Y TAPADO T02 | 60d | 2023-04-07 | 2023-06-05 | M2241DAA00493 SS |  |  |  |  | 136d | 0d | Andina Dìas Corridos | Obras Civiles [1287 h]; HORMIGONES [20 h] | 1,287 |  | IWP-2241-CA-410-0445 | CWA-2241-400 | PND | CWA-2241-400 - Sistema de Ventilacion | PND | Sin Iniciar | PND | CWP-2241-CA-410 |
| M2241DAA00490 |  | CERCO METALICO | 60d | 2023-04-07 | 2023-06-05 | M2221CAC00070 |  |  |  |  | 105d | 0d | Andina Dìas Corridos | Obras Civiles [1222 h] | 1,222 |  | IWP-2241-DA-400-0452 | CWA-2241-400 | PND | CWA-2241-400 - Sistema de Ventilacion | PND | Sin Iniciar | PND | CWP-2241-DA-400 |
| M2241DAA00493 |  | PUERTA VENTILACION 02241-PRT-001, 02251-PRT-001 | 20d | 2023-04-07 | 2023-04-26 | M2241DAA00490 SS |  |  |  |  | 105d | 0d | Andina Dìas Corridos | Obras Civiles [732 h]; HORMIGONES [12 h] | 732 |  | IWP-2241-CA-430-0447 | CWA-2241-400 | PND | CWA-2241-400 - Sistema de Ventilacion | PND | Sin Iniciar | PND | CWP-2241-CA-430 |
| M2241DAA00493-1 |  | PUERTA VENTILACION 02241-PRT-002, 02251-PRT-001 | 20d | 2023-04-27 | 2023-05-16 | M2241DAA00493 |  |  |  |  | 105d | 0d | Andina Dìas Corridos | Obras Civiles [733 h] | 733 |  | IWP-2241-CA-430-0448 | CWA-2241-400 | PND | CWA-2241-400 - Sistema de Ventilacion | PND | Sin Iniciar | PND | CWP-2241-CA-430 |
| M2241DAA00493-2 |  | PUERTA VENTILACION 02241-PRT-003, 02251-PRT-001 | 20d | 2023-05-17 | 2023-06-05 | M2241DAA00493-1 |  |  |  |  | 105d | 0d | Andina Dìas Corridos | Obras Civiles [733 h] | 733 |  | IWP-2241-CA-430-0449 | CWA-2241-400 | PND | CWA-2241-400 - Sistema de Ventilacion | PND | Sin Iniciar | PND | CWP-2241-CA-430 |
| M2241DAA00493-3 |  | PUERTA VENTILACION 02241-PRT-004, 02251-PRT-001 | 20d | 2023-06-06 | 2023-06-25 | M2241DAA00493-2 |  |  |  |  | 105d | 32d | Andina Dìas Corridos | Obras Civiles [732 h] | 732 |  | IWP-2241-CA-430-0450 | CWA-2241-400 | PND | CWA-2241-400 - Sistema de Ventilacion | PND | Sin Iniciar | PND | CWP-2241-CA-430 |

| ID | WBS | Activity | Duration | Start | Finish | Predecessors | Total float | Free float | Calendar | Resources | Cost | IWP-BIM | CWA | DISCIPLINA | CWA Descripción | Criticidad FF | Estado Actividad | Criticidad TF | cwp |
| --- | --- | --- | --- | --- | --- | --- | --- | --- | --- | --- | --- | --- | --- | --- | --- | --- | --- | --- | --- |
|  | 3 | **MECÁNICA** |  | 2023-07-28 | 2023-10-16 |  |  |  |  |  |  |  |  |  |  |  |  |  |  |
|  | 1 | **Galería Inyección / Sala Ventilador** |  | 2023-07-28 | 2023-10-16 |  |  |  |  |  |  |  |  |  |  |  |  |  |  |
| M2241KJD00494 |  | Tecle Mantenimiento Ventilador | 10d | 2023-07-28 | 2023-08-06 | M2241CAC00489, M2241CAC00488, M2241DAA00493-3 | 63d | 0d |  | Mecanica [1155 h] | 1,155 | IWP-2241-KM-400-0454 | CWA-2241-400 | PND | CWA-2241-400 - Sistema de Ventilacion | PND | Sin Iniciar | PND | CWP-2241-KM-400 |
| M2241LAA00495 |  | Ventilador Principal | 61d | 2023-08-10 | 2023-10-16 | M2241KJD00494, M2241CAC00489, M2241REA00499 FS+35d | 63d | 0d |  | Mecanica [4321 h] | 4,321 | IWP-2241-LA-400-0460 | CWA-2241-400 | PND | CWA-2241-400 - Sistema de Ventilacion | PND | Sin Iniciar | PND | CWP-2241-LA-400 |
|  | 1 | **Puertas de ventilación, contra incendio todos sectores** |  | 2023-07-28 | 2023-10-05 |  |  |  |  |  |  |  |  |  |  |  |  |  |  |
| M2241DBF00496 |  | Puerta de Ventilación en Run Around, TAG: 02241-PRT-001 | 20d | 2023-07-28 | 2023-08-24 | M2241KJD00494 SS, M2221ME000083, M2241CAC00491, M2241DAA00490 | 74d | 0d |  | Mecanica [1386 h] | 1,386 | IWP-2241-KM-410-0455 | CWA-2241-400 | PND | CWA-2241-400 - Sistema de Ventilacion | PND | Sin Iniciar | PND | CWP-2241-KM-410 |
| M2241DBF00497 |  | Puerta contra Incendio en Galeria de Inyección, TAG: 02241-PRT-004 | 60d | 2023-07-28 | 2023-10-05 | M2241DBF00496 SS | 74d | 0d |  | Mecanica [1386 h] | 1,386 | IWP-2241-KM-420-0458 | CWA-2241-400 | PND | CWA-2241-400 - Sistema de Ventilacion | PND | Sin Iniciar | PND | CWP-2241-KM-420 |
| M2241DBF00498 |  | Puerta Ventilación en Chimenea Extracción TAG: 02251-PRT-001 | 60d | 2023-07-28 | 2023-10-05 | M2241DBF00497 SS | 74d | 65d |  | Mecanica [1386 h] | 1,386 | IWP-2241-KM-430-0459 | CWA-2241-400 | PND | CWA-2241-400 - Sistema de Ventilacion | PND | Sin Iniciar | PND | CWP-2241-KM-430 |
| M2241DBF498 |  | Puerta de Ventilación en Run Around, TAG: 02241-PRT-002 | 20d | 2023-08-25 | 2023-09-13 | M2241DBF00496 | 74d | 0d |  | Mecanica [1386 h] | 1,386 | IWP-2241-KM-410-0456 | CWA-2241-400 | PND | CWA-2241-400 - Sistema de Ventilacion | PND | Sin Iniciar | PND | CWP-2241-KM-410 |
| M2241DBF500 |  | Puerta de Ventilación en Run Around, TAG: 02241-PRT-003 | 20d | 2023-09-14 | 2023-10-05 | M2241DBF498 | 74d | 65d |  | Mecanica [1386 h] | 1,386 | IWP-2241-KM-410-0457 | CWA-2241-400 | PND | CWA-2241-400 - Sistema de Ventilacion | PND | Sin Iniciar | PND | CWP-2241-KM-410 |
|  | 4 | **ELECTRICIDAD** |  | 2023-04-06 | 2023-09-30 |  |  |  |  |  |  |  |  |  |  |  |  |  |  |
|  | 1 | **Galería Inyección / Sala Ventilador** |  | 2023-04-06 | 2023-09-30 |  |  |  |  |  |  |  |  |  |  |  |  |  |  |
| M2241REA00499 |  | Malla puesta a tierra | 4d | 2023-04-06 | 2023-04-09 | M2241MAB00479 | 131d | 40d | Andina Dìas Corridos | Electricidad [179 h] | 179 | IWP-2241-RE-400-0485 | CWA-2241-400 | PND | CWA-2241-400 - Sistema de Ventilacion | PND | Sin Iniciar | PND | CWP-2241-RE-400 |
|  | 1 | **Montaje Eléctrico Gal Inyección Sala Ventilador** |  | 2023-08-17 | 2023-09-30 |  |  |  |  |  |  |  |  |  |  |  |  |  |  |
| M2241RBB00503 |  | SOPORTE CANALIZACION | 13d | 2023-08-17 | 2023-08-31 | M2241LAA00495 SS+4d | 70d | 0d |  | Electricidad [2011 h] | 2,011 | IWP-2241-RB-400-0482 | CWA-2241-400 | PND | CWA-2241-400 - Sistema de Ventilacion | PND | Sin Iniciar | PND | CWP-2241-RB-400 |
| M2241RBB00500 |  | CANALIZACION | 13d | 2023-09-01 | 2023-09-13 | M2241RBB00503 | 70d | 0d |  | Electricidad [3344 h] | 3,344 | IWP-2241-RB-410-0483 | CWA-2241-400 | PND | CWA-2241-400 - Sistema de Ventilacion | PND | Sin Iniciar | PND | CWP-2241-RB-410 |
| M2241QF000501 |  | EQUIPO | 5d | 2023-09-14 | 2023-09-20 | M2241RBB00503 SS, M2241RBB00500 | 70d | 0d |  | Electricidad [168 h] | 168 | IWP-2241-QF-400-0479 | CWA-2241-400 | PND | CWA-2241-400 - Sistema de Ventilacion | PND | Sin Iniciar | PND | CWP-2241-QF-400 |
| M2241QJ000502 |  | LUMINARIAS SALA VENTILADOR | 5d | 2023-09-26 | 2023-09-30 | M2221QF000102, M2241LAA00495 SS, M2241QF000501 | 75d | 5d |  | Electricidad [126 h] | 126 | IWP-2241-QJ-400-0481 | CWA-2241-400 | PND | CWA-2241-400 - Sistema de Ventilacion | PND | Sin Iniciar | PND | CWP-2241-QJ-400 |
|  | 5 | **INSTRUMENTACIÓN** |  | 2023-09-14 | 2023-10-09 |  |  |  |  |  |  |  |  |  |  |  |  |  |  |
|  | 1 | **Galería Inyección / Sala Ventilador** |  | 2023-09-14 | 2023-10-09 |  |  |  |  |  |  |  |  |  |  |  |  |  |  |
| M2241SE000505 |  | CANALIZACION | 3d | 2023-09-14 | 2023-09-16 | M2241RBB00500 | 72d | 2d |  | Instrumentacion [312 h] | 312 | IWP-2241-RC-400-0484 | CWA-2241-400 | PND | CWA-2241-400 - Sistema de Ventilacion | PND | Sin Iniciar | PND | CWP-2241-RC-400 |
| M2241SE000504 |  | CABLES | 10d | 2023-09-21 | 2023-09-30 | M2241RBB00500, M2241SE000505, M2241QF000501 | 70d | 0d |  | Instrumentacion [4775 h]; CABLES [2847 h] | 4,775 | IWP-2241-SE-400-0489 | CWA-2241-400 | PND | CWA-2241-400 - Sistema de Ventilacion | PND | Sin Iniciar | PND | CWP-2241-SE-400 |
| M2241RDD00507 |  | MUFA FIBRA ÓPTICA | 2d | 2023-10-01 | 2023-10-02 | M2241SE000505 SS, M2241SE000504 | 70d | 0d |  | Instrumentacion [25 h] | 25 | IWP-2241-SE-400-0488 | CWA-2241-400 | PND | CWA-2241-400 - Sistema de Ventilacion | PND | Sin Iniciar | PND | CWP-2241-SE-400 |
| M2241SE000506 |  | Instrumentación Gal. Inyección Sala Ventilador | 3d | 2023-10-03 | 2023-10-05 | M2241RDD00507 | 70d | 0d |  | Instrumentacion |  | IWP-2241-SA-400-0487 | CWA-2241-400 | PND | CWA-2241-400 - Sistema de Ventilacion | PND | Sin Iniciar | PND | CWP-2241-SA-400 |
| M2241SA000508 |  | SISTEMA DETECCION AUTOMATICA DE INCENDIO | 4d | 2023-10-06 | 2023-10-09 | M2241QF000501 SS, M2241LAA00495 SS, M2241QJ000502, M2241SE000504, M2241RDD00507, M2241SE000506 | 70d | 61d |  | Instrumentacion [343 h] | 343 | IWP-2241-SA-400-0486 | CWA-2241-400 | PND | CWA-2241-400 - Sistema de Ventilacion | PND | Sin Iniciar | PND | CWP-2241-SA-400 |

| ID | WBS | Activity | Duration | Start | Finish | Predecessors | Total float | Free float | Resources | Cost |
| --- | --- | --- | --- | --- | --- | --- | --- | --- | --- | --- |
|  | 4 | **Tie Ins** |  | 2023-10-17 | 2024-04-29 |  |  |  |  |  |
|  | 1 | **General** |  | 2023-10-17 | 2024-04-29 |  |  |  |  |  |
|  | 1 | **Instrumentación** |  | 2023-10-17 | 2024-04-29 |  |  |  |  |  |
|  | 1 | **Tie In Sistema Ventilación** |  | 2023-10-17 | 2023-10-26 |  |  |  |  |  |
| M2241TEIN0509 |  | TIE-IN 015: SISTEMA DETECCIÓN DE PRESENCIA (SDP) | 10d | 2023-10-17 | 2023-10-26 | M2241TEIN0516 SS | 63d | 54d | Te in [72 h] | 72 |
| M2241TEIN0510 |  | T-I 02221-E01 En sala eléctrica S/E 16 ½ de ventilación N°1 | 10d | 2023-10-17 | 2023-10-26 | M2241TEIN0517 SS | 63d | 0d | Te in [72 h] | 72 |
| M2241TEIN0511 |  | T-I 02221-E02 En switchgear 31000 SWG-001 en celda 52E7 | 10d | 2023-10-17 | 2023-10-26 | M2241TEIN0510 SS | 63d | 0d | Te in [72 h] | 72 |
| M2241TEIN0512 |  | T-I 02221-E03 En sala eléctrica 17C | 10d | 2023-10-17 | 2023-10-26 | M2241TEIN0511 SS | 63d | 0d | Te in [193 h] | 193 |
| M2241TEIN0513 |  | TIE-IN 011: RED ADMINISTRATIVA GENERAL (RAG) | 10d | 2023-10-17 | 2023-10-26 | M2241TEIN0512 SS | 63d | 0d | Te in [77 h] | 77 |
| M2241TEIN0514 |  | TIE-IN 012: RED MULTISERVICIO | 10d | 2023-10-17 | 2023-10-26 | M2241TEIN0513 SS | 63d | 0d | Te in [72 h] | 72 |
| M2241TEIN0515 |  | TIE-IN 013: RADIOCOMUNICACIONES | 10d | 2023-10-17 | 2023-10-26 | M2241TEIN0514 SS | 63d | 0d | Te in [150 h] | 150 |
| M2241TEIN0516 |  | TIE-IN 014: SISTEMA SCADA ELÉCTRICO | 10d | 2023-10-17 | 2023-10-26 | M2241TEIN0515 SS | 63d | 0d | Te in [116 h] | 116 |
| M2241TEIN0517 |  | Tie In Red Contra Incendio | 10d | 2023-10-17 | 2023-10-26 | M2241LAA00495 | 63d | 0d | Te in [72 h] | 72 |
|  | 2 | **Tie In General** |  | 2024-04-20 | 2024-04-29 |  |  |  |  |  |
| M2221TEIN0518 |  | Tie In Red Contra Incendio | 10d | 2024-04-20 | 2024-04-29 | R2221PRECOM0528 SS, M2241TEIN0509, M2241TEIN0517 | 24d | 0d | Te in [72 h] | 72 |
| M2221TEIN0519 |  | T-I 02221-E01 En sala eléctrica S/E 16 ½ de ventilación N°1 | 10d | 2024-04-20 | 2024-04-29 | M2221TEIN0518 SS, H222100010 | 24d | 0d | Te in [72 h] | 72 |
| M2221TEIN0520 |  | T-I 02221-E02 En switchgear 31000 SWG-001 en celda 52E7 | 10d | 2024-04-20 | 2024-04-29 | M2221TEIN0519 SS | 24d | 0d | Te in [72 h] | 72 |
| M2221TEIN0521 |  | T-I 02221-E03 En sala eléctrica 17C | 10d | 2024-04-20 | 2024-04-29 | M2221TEIN0520 SS | 24d | 0d | Te in [193 h] | 193 |
| M2221TEIN0522 |  | TIE-IN 011: RED ADMINISTRATIVA GENERAL (RAG) | 10d | 2024-04-20 | 2024-04-29 | M2221TEIN0521 SS | 24d | 0d | Te in [77 h] | 77 |
| M2221TEIN0523 |  | TIE-IN 012: RED MULTISERVICIO | 10d | 2024-04-20 | 2024-04-29 | M2221TEIN0522 SS | 24d | 0d | Te in [72 h] | 72 |
| M2221TEIN0524 |  | TIE-IN 013: RADIOCOMUNICACIONES | 10d | 2024-04-20 | 2024-04-29 | M2221TEIN0523 SS | 24d | 0d | Te in [151 h] | 151 |
| M2221TEIN0525 |  | TIE-IN 014: SISTEMA SCADA ELÉCTRICO | 10d | 2024-04-20 | 2024-04-29 | M2221TEIN0524 SS | 24d | 0d | Te in [116 h] | 116 |
| M2221TEIN0526 |  | TIE-IN 015: SISTEMA DETECCIÓN DE PRESENCIA (SDP) | 10d | 2024-04-20 | 2024-04-29 | M2221TEIN0525 SS | 24d |  | Te in [72 h] | 72 |
|  | 5 | **Precomisionamiento y Comisionamiento** |  | 2023-12-10 | 2024-07-30 |  |  |  |  |  |
|  | 1 | **Precomisionamiento** |  | 2023-12-10 | 2024-05-24 |  |  |  |  |  |
| R2221PRECOM0527 |  | Precomisionamiento Ventilador y Sala Eléctrica Ventilador | 30d | 2023-12-10 | 2024-01-09 | M2241TEIN0509 SS, M2241SE000506, M2241QF000501, M2241LAA00495, M2241DBF00496 FS+10d, M2221ME000052 FS+50d, M2221SB000107, M2221SB000110, M2221SD000108, M2221SC000112, M2221QF000105, M2221SB000109, M2221SB000111, M2221SA000106, M2221ECD00468, M2241DBF00498, M2241QJ000502, M2241SA000508, M2241TEIN0517 SS, M2241DBF500 | 9d | 0d | Pre Com & Com [1320 h] | 1,320 |
| R2221PRECOM0528 |  | Precomisionamiento General | 34d | 2024-04-20 | 2024-05-24 | M2221BAE00418, M2221BAE00419, M2221BAE00417 FF, M2221ECD00445, M2221QC000204, M2221QC000209, M2221QF000205, M2221QJ000206, M2221RBB00207, M2221RBB00208, M2221SB000248, M2221SB000251, M2221SB000259, M2221SB000264, M2221SB000267, M2221SB000274, M2221SB000249, M2221SB000252, M2221SB000268, M2221QC000348, M2221QC000349, M2221QC000352, M2221QC000353, M2221QC000354, M2221RBB00355, M2221RBB00356, M2221SA000386, M2221SA000395, M2221SB000405, M2221SB000407, M2221SB000409, M2221SB000416, M2221SB000389, M2221SB000394, M2221SB000404, M2221SA000406, M2221SD000408, M2221SE000415, M2221PAA00452, M2221SB000258, M2221SB000263, M2221SB000273, M2221SA000410, M2221DBF00189-1, H222100008 FF | 0d |  | Pre Com & Com [3960 h] | 3,960 |

| ID | WBS | Activity | Duration | Start | Finish | Predecessors | Total float | Resources | Cost |
| --- | --- | --- | --- | --- | --- | --- | --- | --- | --- |
|  | 2 | **Comisionamiento** |  | 2024-05-25 | 2024-07-30 |  |  |  |  |
| R2221COM0529 |  | Apoyo a Comisionamiento | 45d | 2024-05-25 | 2024-07-30 | M2221MAB00470 FF, M2241TEIN0509, R2221PRECOM0528, R2221PRECOM0527, M2221TEIN0518, M2241TEIN0517, M2221TEIN0526 | 0d | Pre Com & Com [31210 h] | 31,210 |

## Activity codes

| Code | Value | Meaning |
| --- | --- | --- |
| Iwp Frente 2 | IWP-2221-MA-201-001 | (Pk 590,7 a Pk 615,8) |
| Iwp Frente 2 | IWP-2221-MA-201-002 | (Pk 615,8 a Pk 637,3) |
| Iwp Frente 2 | IWP-2221-MA-201-003 | (Pk 637,3 a Pk 651,7) |
| Iwp Frente 2 | IWP-2221-MA-202-001 | (Pk 651,7 a Pk 666,1) |
| Iwp Frente 2 | IWP-2221-MA-202-002 | (Pk 666,1 a Pk 691,2) |
| Iwp Frente 2 | IWP-2221-MA-202-003 | (Pk 691,2 a Pk 716,3) |
| Iwp Frente 2 | IWP-2221-MA-202-004 | (Pk 716,3 a Pk 737,8) |
| Iwp Frente 2 | IWP-2221-MA-202-007 | (Pk 780,9 a Pk 802,4) |
| Iwp Frente 2 | IWP-2221-MA-202-008 | (Pk 802,4 a Pk 823,9) |
| Iwp Frente 2 | IWP-2221-MA-203-001 | (New Code Value) |
| Iwp Frente 2 | IWP-2221-MA-203-002 | (New Code Value) |
| Iwp Frente 2 | IWP-2221-MA-203-003 | (New Code Value) |
| Iwp Frente 2 | IWP-2221-MA-203-004 | (New Code Value) |
| Iwp Frente 2 | IWP-2221-MA-203-005 | (New Code Value) |
| Iwp Frente 2 | IWP-2221-MA-203-006 | (New Code Value) |
| Iwp Frente 2 | IWP-2221-MA-203-007 | (New Code Value) |
| Iwp Frente 2 | IWP-2221-MA-203-008 | (New Code Value) |
| Iwp Frente 2 | IWP-2221-MA-203-009 | (New Code Value) |
| Iwp Frente 2 | IWP-2221-MA-204-001 | (New Code Value) |
| Iwp Frente 2 | IWP-2221-MA-204-002 | (New Code Value) |
| Iwp Frente 2 | IWP-2221-MA-204-003 | (New Code Value) |
| Iwp Frente 2 | IWP-2221-MA-204-004 | (New Code Value) |
| Iwp Frente 2 | IWP-2221-MA-204-005 | (New Code Value) |
| Iwp Frente 2 | IWP-2221-MA-204-006 | (New Code Value) |
| Iwp Frente 2 | IWP-2221-MA-204-007 | (New Code Value) |
| Iwp Frente 2 | IWP-2221-MA-204-008 | (New Code Value) |
| Iwp Frente 2 | IWP-2221-MA-204-009 | (New Code Value) |
| Iwp Frente 2 | IWP-2221-MA-204-010 | (New Code Value) |
| Iwp Frente 2 | IWP-2221-MA-204-011 | (New Code Value) |
| Iwp Frente 2 | IWP-2221-MA-204-012 | (New Code Value) |
| Iwp Frente 2 | IWP-2221-MA-204-013 | (New Code Value) |
| Iwp Frente 2 | IWP-2221-MA-204-014 | (New Code Value) |
| Iwp Frente 2 | IWP-2221-MA-204-015 | (New Code Value) |
| Iwp Frente 2 | IWP-2221-MA-204-016 | (New Code Value) |
| Iwp Frente 2 | IWP-2221-MA-204-017 | (New Code Value) |
| Iwp Frente 2 | IWP-2221-MA-205-001 | (New Code Value) |
| Iwp Frente 2 | IWP-2221-MA-205-002 | (New Code Value) |
| Iwp Frente 2 | IWP-2221-MA-205-003 | (New Code Value) |
| Iwp Frente 2 | IWP-2221-MA-205-004 | (New Code Value) |
| Iwp Frente 2 | IWP-2221-MA-205-005 | (New Code Value) |
| Iwp Frente 2 | IWP-2221-MA-205-006 | (New Code Value) |
| Iwp Frente 2 | IWP-2221-MA-205-007 | (New Code Value) |
| Iwp Frente 2 | IWP-2221-MA-205-008 | (New Code Value) |
| Iwp Frente 2 | IWP-2221-MA-205-009 | (New Code Value) |
| Iwp Frente 2 | IWP-2221-MA-205-010 | (New Code Value) |
| Iwp Frente 2 | IWP-2221-MA-205-011 | (New Code Value) |
| Iwp Frente 2 | IWP-2221-MA-205-012 | (New Code Value) |
| Iwp Frente 2 | IWP-2221-MA-205-013 | (New Code Value) |
| Iwp Frente 2 | IWP-2221-MA-206-001 | (New Code Value) |
| Iwp Frente 2 | IWP-2221-MA-206-002 | (New Code Value) |
| Iwp Frente 2 | IWP-2221-MA-206-003 | (New Code Value) |
| Iwp Frente 2 | IWP-2221-MA-206-004 | (New Code Value) |
| Iwp Frente 2 | IWP-2221-MA-206-005 | (New Code Value) |
| Iwp Frente 2 | IWP-2221-MA-206-006 | (New Code Value) |
| Iwp Frente 2 | IWP-2221-MA-206-007 | (New Code Value) |
| Iwp Frente 2 | IWP-2221-MA-206-008 | (New Code Value) |
| Iwp Frente 2 | IWP-2221-MA-206-009 | (New Code Value) |
| Iwp Frente 2 | IWP-2221-MD-201-001 | (New Code Value) |
| Iwp Frente 2 | IWP-2221-MD-201-002 | (New Code Value) |
| Iwp Frente 2 | IWP-2221-MD-201-003 | (New Code Value) |
| Iwp Frente 2 | IWP-2221-MD-202-001 | (New Code Value) |
| Iwp Frente 2 | IWP-2221-MD-202-002 | (New Code Value) |
| Iwp Frente 2 | IWP-2221-MD-202-003 | (New Code Value) |
| Iwp Frente 2 | IWP-2221-MD-202-004 | (New Code Value) |
| Iwp Frente 2 | IWP-2221-MD-204-001 | (New Code Value) |
| Iwp Frente 2 | IWP-2221-MD-204-002 | (New Code Value) |
| Iwp Frente 2 | IWP-2221-MD-204-003 | (New Code Value) |
| Iwp Frente 2 | IWP-2221-MD-205-001 | (New Code Value) |
| Iwp Frente 2 | IWP-2221-MD-206-001 | (New Code Value) |
| Iwp Frente 2 | IWP-2221-MD-206-002 | (New Code Value) |
| Iwp Frente 3 | IWP-2221-MA-301-001 | (New Code Value) |
| Iwp Frente 3 | IWP-2221-MA-301-002 | (New Code Value) |
| Iwp Frente 3 | IWP-2221-MA-301-003 | (New Code Value) |
| Iwp Frente 3 | IWP-2221-MA-301-004 | (New Code Value) |
| Iwp Frente 3 | IWP-2221-MA-301-005 | (New Code Value) |
| Iwp Frente 3 | IWP-2221-MA-301-006 | (New Code Value) |
| Iwp Frente 3 | IWP-2221-MA-301-007 | (New Code Value) |
| Iwp Frente 3 | IWP-2221-MA-301-008 | (New Code Value) |
| Iwp Frente 3 | IWP-2221-MA-301-009 | (New Code Value) |
| Iwp Frente 3 | IWP-2221-MA-301-010 | (New Code Value) |
| Iwp Frente 3 | IWP-2221-MA-301-011 | (New Code Value) |
| Iwp Frente 3 | IWP-2221-MA-301-012 | (New Code Value) |
| Iwp Frente 3 | IWP-2221-MA-302-001 | (New Code Value) |
| Iwp Frente 3 | IWP-2221-MA-302-002 | (New Code Value) |
| Iwp Frente 3 | IWP-2221-MA-302-003 | (New Code Value) |
| Iwp Frente 3 | IWP-2221-MA-302-004 | (New Code Value) |
| Iwp Frente 3 | IWP-2221-MA-302-005 | (New Code Value) |
| Iwp Frente 3 | IWP-2221-MA-302-006 | (New Code Value) |
| Iwp Frente 3 | IWP-2221-MA-302-007 | (New Code Value) |
| Iwp Frente 3 | IWP-2221-MA-302-008 | (New Code Value) |
| Iwp Frente 3 | IWP-2221-MA-302-009 | (New Code Value) |
| Iwp Frente 3 | IWP-2221-MA-302-010 | (New Code Value) |
| Iwp Frente 3 | IWP-2221-MA-302-011 | (New Code Value) |
| Iwp Frente 3 | IWP-2221-MA-302-012 | (New Code Value) |
| Iwp Frente 3 | IWP-2221-MA-302-013 | (New Code Value) |
| Iwp Frente 3 | IWP-2221-MA-302-014 | (New Code Value) |
| Iwp Frente 3 | IWP-2221-MA-302-015 | (New Code Value) |
| Iwp Frente 3 | IWP-2221-MA-303-001 | (New Code Value) |
| Iwp Frente 3 | IWP-2221-MA-303-002 | (New Code Value) |
| Iwp Frente 3 | IWP-2221-MA-303-003 | (New Code Value) |
| Iwp Frente 3 | IWP-2221-MA-303-004 | (New Code Value) |
| Iwp Frente 3 | IWP-2221-MA-303-005 | (New Code Value) |
| Iwp Frente 3 | IWP-2221-MA-303-006 | (New Code Value) |
| Iwp Frente 3 | IWP-2221-MA-303-007 | (New Code Value) |
| Iwp Frente 3 | IWP-2221-MA-303-008 | (New Code Value) |
| Iwp Frente 3 | IWP-2221-MA-303-009 | (New Code Value) |
| Iwp Frente 3 | IWP-2221-MA-303-010 | (New Code Value) |
| Iwp Frente 3 | IWP-2221-MA-303-011 | (New Code Value) |
| Iwp Frente 3 | IWP-2221-MA-303-012 | (New Code Value) |
| Iwp Frente 3 | IWP-2221-MA-303-013 | (New Code Value) |
| Iwp Frente 3 | IWP-2221-MA-303-014 | (New Code Value) |
| Iwp Frente 3 | IWP-2221-MA-303-015 | (New Code Value) |
| Iwp Frente 3 | IWP-2221-MA-303-016 | (New Code Value) |
| Iwp Frente 3 | IWP-2221-MA-303-017 | (New Code Value) |
| Iwp Frente 3 | IWP-2221-MA-304-001 | (New Code Value) |
| Iwp Frente 3 | IWP-2221-MA-304-002 | (New Code Value) |
| Iwp Frente 3 | IWP-2221-MA-304-003 | (New Code Value) |
| Iwp Frente 3 | IWP-2221-MA-304-004 | (New Code Value) |
| Iwp Frente 3 | IWP-2221-MD-301-001 | (New Code Value) |
| Iwp Frente 3 | IWP-2221-MD-301-002 | (New Code Value) |
| Iwp Frente 3 | IWP-2221-MD-301-003 | (New Code Value) |
| Iwp Frente 3 | IWP-2221-MD-301-004 | (New Code Value) |
| Iwp Frente 3 | IWP-2221-MD-302-001 | (New Code Value) |
| Iwp Frente 3 | IWP-2221-MD-302-002 | (New Code Value) |
| Iwp Frente 3 | IWP-2221-MD-302-003 | (New Code Value) |
| Iwp Frente 3 | IWP-2221-MD-302-004 | (New Code Value) |
| Iwp Frente 3 | IWP-2221-MD-304-001 | (New Code Value) |
| Iwp Frente 3 | IWP-2221-MD-304-002 | (New Code Value) |
| Iwp Frente 3 | IWP-2221-MD-304-003 | (New Code Value) |
| Iwp Frente 3 | IWP-2221-MD-304-004 | (New Code Value) |
| Iwp Frente 3 | IWP-2221-MD-304-005 | (New Code Value) |
| cwp | CWP-1200-AB-600 | MOVIMIENTO TIERRA ESTRUCTURAL BASE MURO TEM NODO 3500 |
| cwp | CWP-1200-AB-615 | RELLENO COMUN SOBRE TUNEL FALSO |
| cwp | CWP-1200-BA-610 | MOVIMIENTO TIERRA ESTRUCTURAL INTERIOR MURO TEM NODO 3500 - IMPERMEABILIZACION PORTAL |
| cwp | CWP-1200-CA-620 | ATRAVIESO DE SERVICIOS EN CAMINO DE ACCESO PORTAL NODO 3500 (HORMIGON) |
| cwp | CWP-1200-MB-640 | SANEAMIENTO Y FORTIFICACIÓN LADERA OESTE |
| cwp | CWP-1200-PA-620 | ATRAVIESO DE SERVICIOS EN CAMINO DE ACCESO PORTAL NODO 3500 (PIPING) |
| cwp | CWP-1200-RA-630 | MALLA TIERRA PETROLERA |
| cwp | CWP-1200-SE-650 | TENDIDO FIBRA OPTICA PORTAL - SALA ELECTRICA CHANCADOR PRIMARIO |
| cwp | CWP-2221-BA-100 | MONTAJE SISTEMA FBC (FITCH BARREL CUSHION) EN ENSANCHE DE EMERGENCIA N°1 |
| cwp | CWP-2221-BA-110 | SANEAMIENDO ESTOCADA EXISTENTE (FUTURA SALA ELÉCTRICA 02221-SEL-001 |
| cwp | CWP-2221-BA-130 | SANEAMIENTO PORTONES (2) CONTRA INCENDIO EXISTENTES EN NIVEL 17 |
| cwp | CWP-2221-BA-220 | MONTAJE SISTEMA FBC (FITCH BARREL CUSHION) EN ENSANCHE DE EMERGENCIA N°2 |
| cwp | CWP-2221-BA-700 | SEÑALETICA RAMPA CONECTIVIDAD |
| cwp | CWP-2221-CA-100 | HORMIGONES PUERTA VENTILACION 02221-PRT-003@005 |
| cwp | CWP-2221-CA-110 | HORMIGONES SALA ELÉCTRICA 02221-SEL-001 |
| cwp | CWP-2221-CA-120 | OBRAS CIVILES CANALETAS Y DESARENADOR |
| cwp | CWP-2221-CA-200 | OBRAS CIVILES CANALETA - CRUCE RAMPA CONECTIVIDAD |
| cwp | CWP-2221-CA-210 | OBRAS CIVILES TAPADO T02, FACILIDAD CONSTRUCTIVA |
| cwp | CWP-2221-CA-220 | OBRAS CIVILES PUERTA VENTILACION 02221-PRT-001@002 |
| cwp | CWP-2221-CC-100 | CARPETA DE RODADO RAMPA (FRENTE 1) |
| cwp | CWP-2221-CC-200 | CARPETA DE RODADO RAMPA (FRENTE 2) |
| cwp | CWP-2221-CC-300 | CARPETA DE RODADO RAMPA (FRENTE 3) |
| cwp | CWP-2221-DA-100 | TAPADO ESTRUCTURAL PORTONES 02221-PRT-003/004/005 |
| cwp | CWP-2221-DA-110 | MONTAJE DE ESTRUCTURAS SALA ELÉCTRICA 02221-SEL-001 |
| cwp | CWP-2221-DA-210 | CERCO METÁLICO FRONTÓN ELÉCTRICO |
| cwp | CWP-2221-DA-220 | TAPADO ESTRUCTURAL PUERTA VENTILACION 02221-PRT-001@002 |
| cwp | CWP-2221-DA-300 | MARCOS DE FORTIFICACION ACCESO PORTAL NODO 3500 |
| cwp | CWP-2221-DA-310 | CERCO METÁLICO FRONTÓN ELÉCTRICO |
| cwp | CWP-2221-DB-200 | PARRILLA DE PISO CANALETA - CRUCE RAMPA CONECTIVIDAD |
| cwp | CWP-2221-EC-110 | EQUIPAMIENTO CLIMATIZACION SALA ELÉCTRICA 02221-SEL-001 |
| cwp | CWP-2221-EC-200 | REFUGIO DE EMERGENCIA SEMIMOVIL: 02221-RFG-001@002 |
| cwp | CWP-2221-EC-210 | REFUGIO DE EMERGENCIA SEMIMOVIL: 02221-RFG-003@004 |
| cwp | CWP-2221-EC-300 | REFUGIO DE EMERGENCIA SEMIMOVIL: 02221-RFG-005@006 |
| cwp | CWP-2221-KM-100 | PUERTA DE VENTILACIÓN RAMPA 02221-PRT-003@005 |
| cwp | CWP-2221-KM-110 | PUERTAS Y PORTONES SALA ELÉCTRICA 02221-SEL-001 |
| cwp | CWP-2221-KM-200 | PUERTA DE VENTILACIÓN, TAG: 02221-PRT-001@002 |
| cwp | CWP-2221-M-201 | EXCAVACIÓN Y FORTIFICACIÓN RAMPA DE CONECTIVIDAD (FRENTE 2) |
| cwp | CWP-2221-M-202 | EXCAVACIÓN Y FORTIFICACIÓN RAMPA DE CONECTIVIDAD (FRENTE 2) |
| cwp | CWP-2221-M-203 | EXCAVACIÓN Y FORTIFICACIÓN RAMPA DE CONECTIVIDAD (FRENTE 2) |
| cwp | CWP-2221-M-204 | EXCAVACIÓN Y FORTIFICACIÓN RAMPA DE CONECTIVIDAD (FRENTE 2) |
| cwp | CWP-2221-M-205 | EXCAVACIÓN Y FORTIFICACIÓN RAMPA DE CONECTIVIDAD (FRENTE 2) |
| cwp | CWP-2221-M-206 | EXCAVACIÓN Y FORTIFICACIÓN RAMPA DE CONECTIVIDAD (FRENTE 2) |
| cwp | CWP-2221-M-301 | EXCAVACIÓN Y FORTIFICACIÓN RAMPA DE CONECTIVIDAD (FRENTE 3) |
| cwp | CWP-2221-M-302 | EXCAVACIÓN Y FORTIFICACIÓN RAMPA DE CONECTIVIDAD (FRENTE 3) |
| cwp | CWP-2221-M-303 | EXCAVACIÓN Y FORTIFICACIÓN RAMPA DE CONECTIVIDAD (FRENTE 3) |
| cwp | CWP-2221-M-304 | EXCAVACIÓN Y FORTIFICACIÓN RAMPA DE CONECTIVIDAD (FRENTE 3) |
| cwp | CWP-2221-MA-100 | EXCAVACIÓN Y FORTIFICACIÓN RAMPA DE CONECTIVIDAD (FRENTE 1) |
| cwp | CWP-2221-MA-200 | EXCAVACIÓN Y FORTIFICACIÓN FACILIDAD CONSTRUCTIVA |
| cwp | CWP-2221-MB-200 | TIRO PARA CABLE ELECTRICO A HAULAGE III (FRENTE 2) |
| cwp | CWP-2221-MD-100 | DESQUINCHES DESARENADOR / ENSANCHE EMERGENCIA Nº1 |
| cwp | CWP-2221-MD-110 | ENSANCHE RETORNO EXISTENTE NIVEL Nº17 |
| cwp | CWP-2221-MD-200 | DESQUINCHES MINEROS FRENTE 2 (FRONTONES / ENSANCHES /CRUCE / REFUGIOS) |
| cwp | CWP-2221-MG-300 | TRANSPORTE DE MARINA DESDE PORTAL (FRENTE 3) |
| cwp | CWP-2221-PA-100 | CAÑERÍA Y VALVULA DESARENADOR |
| cwp | CWP-2221-PA-700 | TOPES DE ALERTA PROXIMIDAD ESTACION REDUCTORA DE PRESION |
| cwp | CWP-2221-PA-710 | CAÑERIAS SISTEMA PROTECCIÓN CONTRA INCENDIO RAMPA |
| cwp | CWP-2221-PA-720 | VALVULAS AGUAS ARRIBA GABINETE DE MANGUERA |
| cwp | CWP-2221-PA-730 | CINTA CALEFACTORA ACCESO NODO 3500 |
| cwp | CWP-2221-PA-740 | VALVULAS ESTACIONES REDUCTORA DE PRESION |
| cwp | CWP-2221-PD-100 | SOPORTES DE EQUIPOS MENORES (INSTRUMENTACION) |
| cwp | CWP-2221-PD-200 | SOPORTES ESTACIÓN REDUCTORA DE PRESIÓN N°03@05 |
| cwp | CWP-2221-PD-700 | SOPORTES RED CAÑERIA SISTEMA PROTECCIÓN CONTRA INCENDIO RAMPA |
| cwp | CWP-2221-PD-710 | SOPORTE GABINETE DE MANGUERA Y EXTINTORES |
| cwp | CWP-2221-PD-720 | GABINETE DE MANGUERAS Y EXTINTORES |
| cwp | CWP-2221-QC-200 | SUBESTACIÓN UNITARIA (FRONTÓN ELÉCTRICO N°1) |
| cwp | CWP-2221-QC-210 | SUBESTACIÓN UNITARIA (FRONTÓN ELÉCTRICO N°2) |
| cwp | CWP-2221-QC-300 | SUBESTACIÓN UNITARIA (FRONTÓN ELÉCTRICO N°3) |
| cwp | CWP-2221-QC-310 | SUBESTACIÓN UNITARIA (FRONTÓN ELÉCTRICO N°4) |
| cwp | CWP-2221-QE-110 | VARIADOR DE FRECUENCIA SALA ELÉCTRICA 02221-SEL-001 |
| cwp | CWP-2221-QF-110 | EQUIPOS ELÉCTRICOS SALA ELÉCTRICA 02221-SEL-001 |
| cwp | CWP-2221-QF-200 | EQUIPOS ELÉCTRICOS (FRONTÓN ELÉCTRICO N°1 / CRUCE VEHICULAR N°1) |
| cwp | CWP-2221-QF-210 | EQUIPOS ELÉCTRICOS (FRONTÓN ELÉCTRICO N°2) |
| cwp | CWP-2221-QF-300 | EQUIPOS ELÉCTRICOS (FRONTÓN ELÉCTRICO N°3 / REFUGIO N°3) |
| cwp | CWP-2221-QF-310 | EQUIPOS ELÉCTRICOS (FRONTÓN ELÉCTRIO N°4 / ENSANCHE CAMBIO CADENA) |
| cwp | CWP-2221-QF-700 | SAFETY SWITCH, REFUGIOS 02221-RFG-001@006-SS |
| cwp | CWP-2221-QJ-200 | MONTAJE DE LUMINARIAS LED (FRENTE 2) |
| cwp | CWP-2221-QJ-300 | MONTAJE DE LUMINARIAS LED (FRENTE 3) |
| cwp | CWP-2221-RB-100 | SOPORTE CANALIZACION (FRENTE 1) |
| cwp | CWP-2221-RB-200 | SOPORTE CANALIZACION (FRENTE 2) |
| cwp | CWP-2221-RB-210 | CANALIZACION ESCALERILLA (FRENTE 2) |
| cwp | CWP-2221-RB-300 | SOPORTE CANALIZACION (FRENTE 3) |
| cwp | CWP-2221-RC-100 | CANALIZACION CONDUIT (FRENTE 1) |
| cwp | CWP-2221-RC-200 | CANALIZACION CONDUIT (FRENTE 2) |
| cwp | CWP-2221-RC-300 | CANALIZACION CONDUIT (FRENTE 3) |
| cwp | CWP-2221-RD-100 | CABLES ELÉCTRICOS (FRENTE 1) |
| cwp | CWP-2221-RE-100 | MALLA PUESTA A TIERRA (FRENTE 1) |
| cwp | CWP-2221-SA-100 | INSTRUMENTOS ACCESO DESDE NIVEL 17 |
| cwp | CWP-2221-SA-110 | INSTRUMENTOS SALA ELÉCTRICA 02221-SEL-001 |
| cwp | CWP-2221-SA-200 | INSTRUMENTOS (CRUCE VEHICULAR N°1 / FRONTÓN ELÉCTRICO N°1) |
| cwp | CWP-2221-SA-210 | INSTRUMENTOS FRONTON REFUGIO N°1 |
| cwp | CWP-2221-SA-220 | INSTRUMENTOS FRONTÓN ELÉCTRICO N°2 |
| cwp | CWP-2221-SA-230 | INSTRUMENTOS (CRUCE VEHICULAR N°2 / FRONTON REFUGIO N°2) |
| cwp | CWP-2221-SA-240 | INSTRUMENTOS ESTACIÓN REDUCTORA DE PRESIÓN N°03@05 |
| cwp | CWP-2221-SA-300 | INSTRUMENTOS (FRONTON REFUGIO N°3 / FRONTÓN ELÉCTRIO N°3) |
| cwp | CWP-2221-SA-310 | INSTRUMENTOS (FRONTÓN ELÉCTRIO N°4 / ENSANCHE CAMBIO CADENA) |
| cwp | CWP-2221-SA-320 | INSTRUMENTOS PORTAL NODO 3500 |
| cwp | CWP-2221-SA-330 | INSTRUMENTOS ESTACIÓN REDUCTORA DE PRESIÓN N°01@02 |
| cwp | CWP-2221-SA-340 | INSTRUMENTOS CRUCE VEHICULAR N°3 |
| cwp | CWP-2221-SA-720 | INSTRUMENTOS GABINETE DE MANGUERAS |
| cwp | CWP-2221-SC-100 | SISTEMA RADIOCOMUNICACIÓN HAULAGE II |
| cwp | CWP-2221-SE-100 | CABLES FIBRA ÓPTICA (FRENTE 1) |
| cwp | CWP-2221-SE-200 | CABLES FIBRA ÓPTICA (FRENTE 2) |
| cwp | CWP-2221-SE-300 | CABLES FIBRA ÓPTICA (FRENTE 3) |
| cwp | CWP-2241-CA-400 | FUNDACIONES VENTILADOR |
| cwp | CWP-2241-CA-410 | OBRAS CIVILES MURO DE INSPECCION (TAPADO T03-T02), VENTILADOR |
| cwp | CWP-2241-CA-420 | OBRAS CIVILES MURETE CHIMENEAS |
| cwp | CWP-2241-CA-430 | OBRAS CIVILES PUERTA VENTILACION 02241-PRT-001@004, 02251-PRT-001 |
| cwp | CWP-2241-CC-400 | CARPETA DE RODADO (SISTEMA DE VENTILACION) |
| cwp | CWP-2241-DA-400 | CERCO METÁLICO (SISTEMA DE VENTILACION) |
| cwp | CWP-2241-DA-420 | VIGA MONORRIEL |
| cwp | CWP-2241-KM-400 | TECLE MANTENCIÓN VENTILADOR TAG: 02241-TCL-001 |
| cwp | CWP-2241-KM-410 | PUERTA DE VENTILACIÓN EN RUN AROUND, TAG: 02241-PRT-001@003 |
| cwp | CWP-2241-KM-420 | PUERTA CONTRA INCENDIO EN GALERIA DE INYECCIÓN, TAG: 02241-PRT-004 |
| cwp | CWP-2241-KM-430 | PUERTA VENTILACIÓN EN CHIMENEA EXTRACCIÓN TAG: 02251-PRT-001 |
| cwp | CWP-2241-LA-400 | VENTILADOR PRINCIPAL HORIZONTAL TAG: 02241-VEN-001 |
| cwp | CWP-2241-MA-400 | EXCAVACIÓN Y FORTIFICACIÓN (SISTEMA DE VENTILACION) |
| cwp | CWP-2241-MB-410 | EXCAVACIÓN CHIMENEA EXTRACCIÓN |
| cwp | CWP-2241-MB-420 | EXCAVACIÓN CHIMENEA EXTRACCIÓN EMERGENCIA |
| cwp | CWP-2241-MD-400 | DESQUINCHE PUERTA CONTRA INCENDIO - CURVA DE ALTA RUN AROUND |
| cwp | CWP-2241-MD-410 | EXCAVACIÓN Y FORTIFICACIÓN FRONTONES EXTRACCION N17 Y N16 |
| cwp | CWP-2241-MD-420 | EXCAVACIÓN Y FORTIFICACIÓN FRONTONES EMERGENCIA SUPERIOR E INFERIOR |
| cwp | CWP-2241-QF-400 | EQUIPAMIENTO ELECTRICO (SISTEMA DE VENTILACION) |
| cwp | CWP-2241-QJ-400 | MONTAJE DE LUMINARIAS LED (SISTEMA DE VENTILACION) |
| cwp | CWP-2241-RB-400 | SOPORTE CANALIZACION (SISTEMA DE VENTILACION) |
| cwp | CWP-2241-RB-410 | CANALIZACION ESCALERILLA (SISTEMA DE VENTILACION) |
| cwp | CWP-2241-RC-400 | CANALIZACION CONDUIT (SISTEMA DE VENTILACION) |
| cwp | CWP-2241-RE-400 | MALLA PUESTA A TIERRA (SISTEMA DE VENTILACION) |
| cwp | CWP-2241-SA-400 | INSTRUMENTOS (SISTEMA DE VENTILACION) |
| cwp | CWP-2241-SE-400 | CABLES FIBRA ÓPTICA (SISTEMA DE VENTILACION) |
